"Location","Activity ID","Activity Name","Start Date","Finish Date","Duration"
"MYD","PRO-024031","MYD2-Lead MCP-11","2025-08-14","2026-01-05","776"
"MYD","PRO-019352","MYD1-Deliver-Zilla RMU/USSs-","2025-08-14","2025-10-09","312"
"SSS","PRO-029358","Deliver-Critical EY02 RMU/USSs","2025-08-14","2025-08-15","8"
"Conveyance","PCN-1230","Offsite Pre-Fabrication Labor (S10)-Zilla Conveyance","2025-08-14","2025-08-20","32"
"Conveyance","PCN-1245","Offsite Pre-Fabrication Labor (S14)-Conveyance","2025-08-14","2025-08-25","56"
"GPS","PCN-1235","Offsite Pre-Fabrication Labor (S17)-SSS/GPS/USS","2025-08-14","2025-08-25","56"
"Conveyance","PCN-1240","Offsite Pre-Fabrication Labor (S18)-USS Secondary Conveyance","2025-08-14","2025-09-02","96"
"MYD","PRO-019353","MYD1-Deliver-Critical LV TX/USSs-** OFE Tracker 8/11/2025**","2025-08-14","2025-08-15","8"
"EYD","PRO-029360","EYD2-Deliver-Critical LV SWGR/USSs","2025-08-14","2025-08-15","8"
"EYD","CON-3265","EYD1-GEN SOG Bulletin 16 (1-4)","2025-08-14","2025-08-14","120"
"EYD","CON-3720","EYD1-GEN SOG Bulletin 16 (5-9)","2025-08-14","2025-08-20","32"
"MYD","CON-7800","MYD2-FRP USS Pads Group 22","2025-08-14","2025-09-02","96"
"DCH","CON-2915","EYD2-DCH2-Ext.Vertical Joint Caulking-North","2025-08-14","2025-08-14","40"
"DCH","CON-8235","DCH2-Install/Terminate Security Devices/IDFs,Pull Cable/Terminate Panel","2025-08-14","2025-09-19","200"
"MYD","PCN-1210","MYD-Fire Pump House (FPH)","2025-08-14","2025-11-07","480"
"EYD","CON-6155","EYD1-MV Trench Seq.10.6 USS","2025-08-14","2025-08-14","64"
"MYD","CON-7190","MYD1-MV Trench Seq.4.5-USS","2025-08-14","2025-09-08","128"
"EYD","CX-10062","EYD1-BDC/DCP/DCOP Energization","2025-08-14","2025-08-18","16"
"MYD","CON-113765","MYD2-FRP S25 Foundations","2025-08-14","2025-08-21","56"
"MYD","CON-114065","MYD2-PCW UG Piping-MCP-07","2025-08-14","2025-08-20","32"
"MYD","CON-114495","MYD2-PCW UG Piping-MCP-11","2025-08-14","2025-08-19","24"
"DCH","348538781","DCH1-East Wall-S27 Modules","2025-08-14","2025-08-21","40"
"DCH","404448538","DCH2-West Wall-Paint Wall","2025-08-14","2025-08-20","32"
"DCH","938481068","DCH2-Overhead Fire Suppression-Area L","2025-08-14","2025-08-22","48"
"MYD","PRO-306027","MYD2-Lead MCP-09","2025-08-14","2025-12-23","720"
"MYD","PRO-306032","MYD2-Lead MCP-07","2025-08-14","2025-12-16","680"
"MYD","PCN-0095","???-MYD-Domestic Booster Water Pump House (Redundant of PCN-0090)","2025-08-14","2025-10-10","320"
"EYD","PCN-0105","EYD-Storm Shelter","2025-08-14","2025-10-10","320"
"MYD","PCN-0110","MYD-Storm Shelter","2025-08-14","2025-09-26","240"
"MYD","PCN-0115","MYD-Exterior Bathroom Bldg","2025-08-14","2025-10-10","320"
"MYD","PCN-0120","MYD-Chemical Treatment Building (CTB)","2025-08-14","2025-10-10","320"
"MYD","PCN-0125","MYD-Make Up Pumphouse (MUP)","2025-08-14","2025-10-10","320"
"EYD","CN-F-Z01.EYD.S14.LB.0022","Place-Anchor & Ground EY05-Load Bank in Zone 1 EYD","2025-08-14","2025-08-15","8"
"EYD","CN-F-Z01.EYD.S14.XFMR-E.023","Place,Anchor & Ground EY05-XFMR-E in Zone 1 EYD","2025-08-14","2025-08-15","8"
"EYD","CN-F-Z01.EYD.S14.XFMR-F.024","Place,Anchor & Ground EY05-XFMR-F in Zone 1 EYD","2025-08-14","2025-08-15","8"
"EYD","CN-F-Z01.EYD.S14.MDA-E.025","Ground EY05-SWGR-RMU-MDA-E in Zone 1 EYD","2025-08-14","2025-08-15","8"
"EYD","CN-F-Z01.EYD.S14.MDA-E.026","Ground EY05-XFMR-USS-MDA-E in Zone 1 EYD","2025-08-14","2025-08-15","8"
"EYD","CN-F-Z01.EYD.S14.MDA-E.027","Ground EY05-SWGR-USS-MDA-E in Zone 1 EYD","2025-08-14","2025-08-15","8"
"EYD","CN-F-Z01.EYD.S14.MDA-F.028","Ground EY05-SWGR-RMU-MDA-F in Zone 1 EYD","2025-08-14","2025-08-15","8"
"EYD","CN-F-Z01.EYD.S14.MDA-F.029","Ground EY05-XFMR-USS-MDA-F in Zone 1 EYD","2025-08-14","2025-08-15","8"
"EYD","CN-F-Z01.EYD.S14.MDA-F.030","Ground EY05-SWGR-USS-MDA-F in Zone 1 EYD","2025-08-14","2025-08-15","8"
"EYD","CN-F-Z01.EYD.S14.USS-1.031","Ground EY05-SWGR-RMU-1 in Zone 1 EYD","2025-08-14","2025-08-15","8"
"EYD","CN-F-Z01.EYD.S14.USS-1.032","Ground EY05-XFMR-USS-1 in Zone 1 EYD","2025-08-14","2025-08-15","8"
"EYD","CN-F-Z01.EYD.S14.USS-1.033","Ground EY05-SWGR-USS-1 in Zone 1 EYD","2025-08-14","2025-08-15","8"
"EYD","CN-F-Z01.EYD.S14.USS-2.034","Ground EY05-SWGR-RMU-2 in Zone 1 EYD","2025-08-14","2025-08-15","8"
"EYD","CN-F-Z01.EYD.S14.USS-2.035","Ground EY05-XFMR-USS-2 in Zone 1 EYD","2025-08-14","2025-08-15","8"
"EYD","CN-F-Z01.EYD.S14.USS-2.036","Ground EY05-SWGR-USS-2 in Zone 1 EYD","2025-08-14","2025-08-15","8"
"EYD","CN-F-Z01.EYD.S14.USS-3.037","Ground EY05-SWGR-RMU-3 in Zone 1 EYD","2025-08-14","2025-08-15","8"
"EYD","CN-F-Z01.EYD.S14.USS-3.038","Ground EY05-XFMR-USS-3 in Zone 1 EYD","2025-08-14","2025-08-15","8"
"EYD","CN-F-Z01.EYD.S14.USS-3.039","Ground EY05-SWGR-USS-3 in Zone 1 EYD","2025-08-14","2025-08-15","8"
"EYD","CN-F-Z01.EYD.S14.USS-4.040","Ground EY05-SWGR-RMU-4 in Zone 1 EYD","2025-08-14","2025-08-15","8"
"EYD","CN-F-Z01.EYD.S14.USS-4.041","Ground EY05-XFMR-USS-4 in Zone 1 EYD","2025-08-14","2025-08-15","8"
"EYD","CN-F-Z01.EYD.S14.USS-4.042","Ground EY05-SWGR-USS-4 in Zone 1 EYD","2025-08-14","2025-08-15","8"
"EYD","CN-F-Z01.EYD.S14.USS-5.043","Ground EY05-SWGR-RMU-5 in Zone 1 EYD","2025-08-14","2025-08-15","8"
"EYD","CN-F-Z01.EYD.S14.USS-5.044","Ground EY05-XFMR-USS-5 in Zone 1 EYD","2025-08-14","2025-08-15","8"
"EYD","CN-F-Z01.EYD.S14.USS-5.045","Ground EY05-SWGR-USS-5 in Zone 1 EYD","2025-08-14","2025-08-15","8"
"EYD","CN-F-Z01.EYD.S14.USS-6.046","Ground EY05-SWGR-RMU-6 in Zone 1 EYD","2025-08-14","2025-08-15","8"
"EYD","CN-F-Z01.EYD.S14.USS-6.047","Ground EY05-XFMR-USS-6 in Zone 1 EYD","2025-08-14","2025-08-15","8"
"EYD","CN-F-Z01.EYD.S14.USS-6.048","Ground EY05-SWGR-USS-6 in Zone 1 EYD","2025-08-14","2025-08-15","8"
"EYD","CN-F-Z01.EYD.S14.USS-7.049","Ground EY05-SWGR-RMU-7 in Zone 1 EYD","2025-08-14","2025-08-15","8"
"EYD","CN-F-Z01.EYD.S14.USS-7.050","Ground EY05-XFMR-USS-7 in Zone 1 EYD","2025-08-14","2025-08-15","8"
"EYD","CN-F-Z01.EYD.S14.USS-7.051","Ground EY05-SWGR-USS-7 in Zone 1 EYD","2025-08-14","2025-08-15","8"
"EYD","CN-F-Z01.EYD.S14.USS-8.052","Ground EY05-SWGR-RMU-8 in Zone 1 EYD","2025-08-14","2025-08-15","8"
"EYD","CN-F-Z01.EYD.S14.USS-8.053","Ground EY05-XFMR-USS-8 in Zone 1 EYD","2025-08-14","2025-08-15","8"
"EYD","CN-F-Z01.EYD.S14.USS-8.054","Ground EY05-SWGR-USS-8 in Zone 1 EYD","2025-08-14","2025-08-15","8"
"EYD","CN-F-Z01.EYD.S14.USS-9.055","Ground EY05-SWGR-RMU-9 in Zone 1 EYD","2025-08-14","2025-08-15","8"
"EYD","CN-F-Z01.EYD.S14.USS-9.056","Ground EY05-XFMR-USS-9 in Zone 1 EYD","2025-08-14","2025-08-15","8"
"EYD","CN-F-Z01.EYD.S14.USS-9.057","Ground EY05-SWGR-USS-9 in Zone 1 EYD","2025-08-14","2025-08-15","8"
"EYD","CN-F-Z01.EYD.S14.USS-10.058","Ground EY05-SWGR-RMU-10 in Zone 1 EYD","2025-08-14","2025-08-15","8"
"EYD","CN-F-Z01.EYD.S14.USS-10.059","Ground EY05-XFMR-USS-10 in Zone 1 EYD","2025-08-14","2025-08-15","8"
"EYD","CN-F-Z01.EYD.S14.USS-10.060","Ground EY05-SWGR-USS-10 in Zone 1 EYD","2025-08-14","2025-08-15","8"
"EYD","CN-F-Z01.EYD.S14.USS-11.061","Ground EY05-SWGR-RMU-11 in Zone 1 EYD","2025-08-14","2025-08-15","8"
"EYD","CN-F-Z01.EYD.S14.USS-11.062","Ground EY05-XFMR-USS-11 in Zone 1 EYD","2025-08-14","2025-08-15","8"
"EYD","CN-F-Z01.EYD.S14.USS-11.063","Ground EY05-SWGR-USS-11 in Zone 1 EYD","2025-08-14","2025-08-15","8"
"EYD","CN-F-Z01.EYD.S14.USS-12.065","Ground EY05-XFMR-USS-12 in Zone 1 EYD","2025-08-14","2025-08-15","8"
"EYD","CN-F-Z01.EYD.S14.USS-12.066","Ground EY05-SWGR-USS-12 in Zone 1 EYD","2025-08-14","2025-08-15","8"
"EYD","CN-F-Z01.EYD.S14.USS-13.067","Ground EY05-SWGR-RMU-13 in Zone 1 EYD","2025-08-14","2025-08-15","8"
"EYD","CN-F-Z01.EYD.S14.USS-13.068","Ground EY05-XFMR-USS-13 in Zone 1 EYD","2025-08-14","2025-08-15","8"
"EYD","CN-F-Z01.EYD.S14.USS-13.069","Ground EY05-SWGR-USS-13 in Zone 1 EYD","2025-08-14","2025-08-15","8"
"EYD","CN-F-Z01.EYD.S14.USS-14.070","Ground EY05-SWGR-RMU-14 in Zone 1 EYD","2025-08-14","2025-08-15","8"
"EYD","CN-F-Z01.EYD.S14.USS-14.071","Ground EY05-XFMR-USS-14 in Zone 1 EYD","2025-08-14","2025-08-15","8"
"EYD","CN-F-Z01.EYD.S14.USS-14.072","Ground EY05-SWGR-USS-14 in Zone 1 EYD","2025-08-14","2025-08-15","8"
"EYD","CN-F-Z01.EYD.S14.USS-15.073","Ground EY05-SWGR-RMU-15 in Zone 1 EYD","2025-08-14","2025-08-15","8"
"EYD","CN-F-Z01.EYD.S14.USS-15.074","Ground EY05-XFMR-USS-15 in Zone 1 EYD","2025-08-14","2025-08-15","8"
"EYD","CN-F-Z01.EYD.S14.USS-15.075","Ground EY05-SWGR-USS-15 in Zone 1 EYD","2025-08-14","2025-08-15","8"
"EYD","CN-F-Z01.EYD.S14.USS-16.076","Ground EY05-SWGR-RMU-16 in Zone 1 EYD","2025-08-14","2025-08-15","8"
"EYD","CN-F-Z01.EYD.S14.USS-16.077","Ground EY05-XFMR-USS-16 in Zone 1 EYD","2025-08-14","2025-08-15","8"
"EYD","CN-F-Z01.EYD.S14.USS-16.078","Ground EY05-SWGR-USS-16 in Zone 1 EYD","2025-08-14","2025-08-15","8"
"EYD","CN-F-Z01.EYD.S14.USS-17.079","Ground EY05-SWGR-RMU-17 in Zone 1 EYD","2025-08-14","2025-08-15","8"
"EYD","CN-F-Z01.EYD.S14.USS-17.080","Ground EY05-XFMR-USS-17 in Zone 1 EYD","2025-08-14","2025-08-15","8"
"EYD","CN-F-Z01.EYD.S14.USS-17.081","Ground EY05-SWGR-USS-17 in Zone 1 EYD","2025-08-14","2025-08-15","8"
"EYD","CN-F-Z01.EYD.S14.USS-18.082","Ground EY05-SWGR-RMU-18 in Zone 1 EYD","2025-08-14","2025-08-15","8"
"EYD","CN-F-Z01.EYD.S14.USS-18.083","Ground EY05-XFMR-USS-18 in Zone 1 EYD","2025-08-14","2025-08-15","8"
"EYD","CN-F-Z01.EYD.S14.USS-18.084","Ground EY05-SWGR-USS-18 in Zone 1 EYD","2025-08-14","2025-08-15","8"
"EYD","CN-F-Z01.EYD.S14.USS-19.085","Ground EY05-SWGR-RMU-19 in Zone 1 EYD","2025-08-14","2025-08-15","8"
"EYD","CN-F-Z01.EYD.S14.USS-19.086","Ground EY05-XFMR-USS-19 in Zone 1 EYD","2025-08-14","2025-08-15","8"
"EYD","CN-F-Z01.EYD.S14.USS-19.087","Ground EY05-SWGR-USS-19 in Zone 1 EYD","2025-08-14","2025-08-15","8"
"EYD","CN-F-Z01.EYD.S14.USS-20.088","Ground EY05-SWGR-RMU-20 in Zone 1 EYD","2025-08-14","2025-08-15","8"
"EYD","CN-F-Z01.EYD.S14.USS-20.089","Ground EY05-XFMR-USS-20 in Zone 1 EYD","2025-08-14","2025-08-15","8"
"EYD","CN-F-Z01.EYD.S14.USS-20.090","Ground EY05-SWGR-USS-20 in Zone 1 EYD","2025-08-14","2025-08-15","8"
"EYD","CN-F-Z01.EYD.S14.USS-21.091","Ground EY05-SWGR-RMU-21 in Zone 1 EYD","2025-08-14","2025-08-15","8"
"EYD","CN-F-Z01.EYD.S14.USS-21.092","Ground EY05-XFMR-USS-21 in Zone 1 EYD","2025-08-14","2025-08-15","8"
"EYD","CN-F-Z01.EYD.S14.USS-21.093","Ground EY05-SWGR-USS-21 in Zone 1 EYD","2025-08-14","2025-08-15","8"
"EYD","CN-F-Z01.EYD.S14.USS-22.094","Ground EY05-SWGR-RMU-22 in Zone 1 EYD","2025-08-14","2025-08-15","8"
"EYD","CN-F-Z01.EYD.S14.USS-22.095","Ground EY05-XFMR-USS-22 in Zone 1 EYD","2025-08-14","2025-08-15","8"
"EYD","CN-F-Z01.EYD.S14.USS-22.096","Ground EY05-SWGR-USS-22 in Zone 1 EYD","2025-08-14","2025-08-15","8"
"EYD","CN-F-Z01.EYD.S14.USS-23.097","Ground EY05-SWGR-RMU-23 in Zone 1 EYD","2025-08-14","2025-08-15","8"
"EYD","CN-F-Z01.EYD.S14.USS-23.098","Ground EY05-XFMR-USS-23 in Zone 1 EYD","2025-08-14","2025-08-15","8"
"EYD","CN-F-Z01.EYD.S14.USS-23.099","Ground EY05-SWGR-USS-23 in Zone 1 EYD","2025-08-14","2025-08-15","8"
"EYD","CN-F-Z01.EYD.S14.USS-24.100","Ground EY05-SWGR-RMU-24 in Zone 1 EYD","2025-08-14","2025-08-15","8"
"EYD","CN-F-Z01.EYD.S14.USS-24.101","Ground EY05-XFMR-USS-24 in Zone 1 EYD","2025-08-14","2025-08-15","8"
"EYD","CN-F-Z01.EYD.S14.USS-24.102","Ground EY05-SWGR-USS-24 in Zone 1 EYD","2025-08-14","2025-08-15","8"
"EYD","CN-F-Z01.EYD.S14.USS-25.103","Ground EY05-SWGR-RMU-25 in Zone 1 EYD","2025-08-14","2025-08-15","8"
"EYD","CN-F-Z01.EYD.S14.USS-25.104","Ground EY05-XFMR-USS-25 in Zone 1 EYD","2025-08-14","2025-08-15","8"
"EYD","CN-F-Z01.EYD.S14.USS-25.105","Ground EY05-SWGR-USS-25 in Zone 1 EYD","2025-08-14","2025-08-15","8"
"EYD","CN-F-Z01.EYD.S14.USS-26.106","Ground EY05-SWGR-RMU-26 in Zone 1 EYD","2025-08-14","2025-08-15","8"
"EYD","CN-F-Z01.EYD.S14.USS-26.107","Ground EY05-XFMR-USS-26 in Zone 1 EYD","2025-08-14","2025-08-15","8"
"EYD","CN-F-Z01.EYD.S14.USS-26.108","Ground EY05-SWGR-USS-26 in Zone 1 EYD","2025-08-14","2025-08-15","8"
"EYD","CN-F-Z01.EYD.S14.MDA-E.113","Complete Pathway to EY05-SWGR-RMU-MDA-E in Zone 1 EYD","2025-08-14","2025-08-15","8"
"EYD","CN-F-Z01.EYD.S14.MDA-E.114","Complete Pathway to EY05-XFMR-USS-MDA-E in Zone 1 EYD","2025-08-14","2025-08-15","8"
"EYD","CN-F-Z01.EYD.S14.MDA-E.115","Complete Pathway to EY05-SWGR-USS-MDA-E in Zone 1 EYD","2025-08-14","2025-08-15","8"
"EYD","CN-F-Z01.EYD.S14.MDA-F.117","Complete Pathway to EY05-XFMR-USS-MDA-F in Zone 1 EYD","2025-08-14","2025-08-15","8"
"EYD","CN-F-Z01.EYD.S14.USS-1.119","Complete Pathway to EY05-SWGR-RMU-1 in Zone 1 EYD","2025-08-14","2025-08-15","8"
"EYD","CN-F-Z01.EYD.S14.USS-1.120","Complete Pathway to EY05-XFMR-USS-1 in Zone 1 EYD","2025-08-14","2025-08-15","8"
"EYD","CN-F-Z01.EYD.S14.USS-2.122","Complete Pathway to EY05-SWGR-RMU-2 in Zone 1 EYD","2025-08-14","2025-08-15","8"
"EYD","CN-F-Z01.EYD.S14.USS-2.123","Complete Pathway to EY05-XFMR-USS-2 in Zone 1 EYD","2025-08-14","2025-08-15","8"
"EYD","CN-F-Z01.EYD.S14.USS-3.125","Complete Pathway to EY05-SWGR-RMU-3 in Zone 1 EYD","2025-08-14","2025-08-15","8"
"EYD","CN-F-Z01.EYD.S14.USS-3.126","Complete Pathway to EY05-XFMR-USS-3 in Zone 1 EYD","2025-08-14","2025-08-15","8"
"EYD","CN-F-Z01.EYD.S14.USS-4.128","Complete Pathway to EY05-SWGR-RMU-4 in Zone 1 EYD","2025-08-14","2025-08-15","8"
"EYD","CN-F-Z01.EYD.S14.USS-4.129","Complete Pathway to EY05-XFMR-USS-4 in Zone 1 EYD","2025-08-14","2025-08-15","8"
"EYD","CN-F-Z01.EYD.S14.USS-5.131","Complete Pathway to EY05-SWGR-RMU-5 in Zone 1 EYD","2025-08-14","2025-08-15","8"
"EYD","CN-F-Z01.EYD.S14.USS-6.134","Complete Pathway to EY05-SWGR-RMU-6 in Zone 1 EYD","2025-08-14","2025-08-15","8"
"EYD","CN-F-Z01.EYD.S14.USS-7.137","Complete Pathway to EY05-SWGR-RMU-7 in Zone 1 EYD","2025-08-14","2025-08-15","8"
"EYD","CN-F-Z01.EYD.S14.USS-7.138","Complete Pathway to EY05-XFMR-USS-7 in Zone 1 EYD","2025-08-14","2025-08-15","8"
"EYD","CN-F-Z01.EYD.S14.USS-8.140","Complete Pathway to EY05-SWGR-RMU-8 in Zone 1 EYD","2025-08-14","2025-08-15","8"
"EYD","CN-F-Z01.EYD.S14.USS-8.141","Complete Pathway to EY05-XFMR-USS-8 in Zone 1 EYD","2025-08-14","2025-08-15","8"
"EYD","CN-F-Z01.EYD.S14.USS-10.146","Complete Pathway to EY05-SWGR-RMU-10 in Zone 1 EYD","2025-08-14","2025-08-15","8"
"EYD","CN-F-Z01.EYD.S14.USS-11.149","Complete Pathway to EY05-SWGR-RMU-11 in Zone 1 EYD","2025-08-14","2025-08-15","8"
"EYD","CN-F-Z01.EYD.S14.USS-12.152","Complete Pathway to EY05-SWGR-RMU-12 in Zone 1 EYD","2025-08-14","2025-08-15","8"
"EYD","CN-F-Z01.EYD.S14.USS-13.155","Complete Pathway to EY05-SWGR-RMU-13 in Zone 1 EYD","2025-08-14","2025-08-15","8"
"EYD","CN-F-Z01.EYD.S14.USS-13.156","Complete Pathway to EY05-XFMR-USS-13 in Zone 1 EYD","2025-08-14","2025-08-15","8"
"EYD","CN-F-Z01.EYD.S14.USS-14.158","Complete Pathway to EY05-SWGR-RMU-14 in Zone 1 EYD","2025-08-14","2025-08-15","8"
"EYD","CN-F-Z01.EYD.S14.USS-15.161","Complete Pathway to EY05-SWGR-RMU-15 in Zone 1 EYD","2025-08-14","2025-08-15","8"
"EYD","CN-F-Z01.EYD.S14.USS-16.164","Complete Pathway to EY05-SWGR-RMU-16 in Zone 1 EYD","2025-08-14","2025-08-15","8"
"EYD","CN-F-Z01.EYD.S14.USS-17.167","Complete Pathway to EY05-SWGR-RMU-17 in Zone 1 EYD","2025-08-14","2025-08-15","8"
"EYD","CN-F-Z01.EYD.S14.USS-18.170","Complete Pathway to EY05-SWGR-RMU-18 in Zone 1 EYD","2025-08-14","2025-08-15","8"
"EYD","CN-F-Z01.EYD.S14.USS-19.173","Complete Pathway to EY05-SWGR-RMU-19 in Zone 1 EYD","2025-08-14","2025-08-15","8"
"EYD","CN-F-Z01.EYD.S14.USS-19.174","Complete Pathway to EY05-XFMR-USS-19 in Zone 1 EYD","2025-08-14","2025-08-15","8"
"EYD","CN-F-Z01.EYD.S14.USS-20.176","Complete Pathway to EY05-SWGR-RMU-20 in Zone 1 EYD","2025-08-14","2025-08-15","8"
"EYD","CN-F-Z01.EYD.S14.USS-20.177","Complete Pathway to EY05-XFMR-USS-20 in Zone 1 EYD","2025-08-14","2025-08-15","8"
"EYD","CN-F-Z01.EYD.S14.USS-21.179","Complete Pathway to EY05-SWGR-RMU-21 in Zone 1 EYD","2025-08-14","2025-08-15","8"
"EYD","CN-F-Z01.EYD.S14.USS-22.182","Complete Pathway to EY05-SWGR-RMU-22 in Zone 1 EYD","2025-08-14","2025-08-15","8"
"EYD","CN-F-Z01.EYD.S14.USS-23.185","Complete Pathway to EY05-SWGR-RMU-23 in Zone 1 EYD","2025-08-14","2025-08-15","8"
"EYD","CN-F-Z01.EYD.S14.USS-24.188","Complete Pathway to EY05-SWGR-RMU-24 in Zone 1 EYD","2025-08-14","2025-08-15","8"
"EYD","CN-F-Z01.EYD.S14.USS-25.191","Complete Pathway to EY05-SWGR-RMU-25 in Zone 1 EYD","2025-08-14","2025-08-15","8"
"EYD","CN-F-Z01.EYD.S14.USS-26.194","Complete Pathway to EY05-SWGR-RMU-26 in Zone 1 EYD","2025-08-14","2025-08-15","8"
"EYD","CN-F-Z01.EYD.S14.USS-26.195","Complete Pathway to EY05-XFMR-USS-26 in Zone 1 EYD","2025-08-14","2025-08-15","8"
"DCH","CN-F-Z01.DCH.S29.1-500.0002","Install Feeder Hangers in Area 1-500-Zone 1 DCH","2025-08-14","2025-08-21","40"
"DCH","CN-F-Z01.DCH.S29.1-500.0006","Overhead Rough-in Branch Raceway in Area 1-500-Zone 1 DCH","2025-08-14","2025-09-25","320"
"DCH","CN-F-Z01.DCH.S29.1-500.0007","Overhead Rough-in Systems Raceway in Area 1-500-Zone 1 DCH","2025-08-14","2025-09-25","320"
"DCH","CN-F-Z01.DCH.S29.1-500.0011","In-Wall Rough-In Electrical in 1-500-Zone 1 DCH","2025-08-14","2025-09-05","120"
"DCH","CN-F-Z02.DCH.S39.1-550.0009","Overhead Rough-In VESDA Loop S-18 in Room 1-550-Zone 2 DCH","2025-08-14","2025-08-15","8"
"DCH","CN-F-Z01.DCH.S39.1-500.0069","Install Fire Alarm Wall Drops in 1-500-Zone 1 DCH","2025-08-14","2025-08-28","80"
"EYD","CN-F-Z02.EYD.S14.XFMR-E.875","Place-Anchor & Ground EY06-XFMR-E in Zone 2 EYD","2025-08-14","2025-08-18","16"
"EYD","CN-F-Z02.EYD.S14.XFMR-F.876","Place,Anchor & Ground EY06-XFMR-F in Zone 2 EYD","2025-08-14","2025-08-18","16"
"EYD","CN-F-Z02.EYD.S14.USS-2.882","Ground EY06-SWGR-USS-2 in Zone 2 EYD","2025-08-14","2025-08-18","16"
"EYD","CN-F-Z02.EYD.S14.USS-3.885","Ground EY06-SWGR-USS-3 in Zone 2 EYD","2025-08-14","2025-08-18","16"
"EYD","CN-F-Z02.EYD.S14.USS-4.888","Ground EY06-SWGR-USS-4 in Zone 2 EYD","2025-08-14","2025-08-18","16"
"EYD","CN-F-Z02.EYD.S14.USS-5.891","Ground EY06-SWGR-USS-5 in Zone 2 EYD","2025-08-14","2025-08-18","16"
"EYD","CN-F-Z02.EYD.S14.USS-6.894","Ground EY06-SWGR-USS-6 in Zone 2 EYD","2025-08-14","2025-08-18","16"
"EYD","CN-F-Z02.EYD.S14.USS-7.897","Ground EY06-SWGR-USS-7 in Zone 2 EYD","2025-08-14","2025-08-18","16"
"EYD","CN-F-Z02.EYD.S14.USS-8.900","Ground EY06-SWGR-USS-8 in Zone 2 EYD","2025-08-14","2025-08-18","16"
"EYD","CN-F-Z02.EYD.S14.USS-9.903","Ground EY06-SWGR-USS-9 in Zone 2 EYD","2025-08-14","2025-08-18","16"
"EYD","CN-F-Z02.EYD.S14.USS-10.906","Ground EY06-SWGR-USS-10 in Zone 2 EYD","2025-08-14","2025-08-18","16"
"EYD","CN-F-Z02.EYD.S14.USS-11.909","Ground EY06-SWGR-USS-11 in Zone 2 EYD","2025-08-14","2025-08-18","16"
"EYD","CN-F-Z02.EYD.S14.USS-12.912","Ground EY06-SWGR-USS-12 in Zone 2 EYD","2025-08-14","2025-08-18","16"
"EYD","CN-F-Z02.EYD.S14.USS-13.915","Ground EY06-SWGR-USS-13 in Zone 2 EYD","2025-08-14","2025-08-18","16"
"EYD","CN-F-Z02.EYD.S14.USS-14.918","Ground EY06-SWGR-USS-14 in Zone 2 EYD","2025-08-14","2025-08-18","16"
"EYD","CN-F-Z02.EYD.S14.USS-15.921","Ground EY06-SWGR-USS-15 in Zone 2 EYD","2025-08-14","2025-08-18","16"
"EYD","CN-F-Z02.EYD.S14.USS-16.924","Ground EY06-SWGR-USS-16 in Zone 2 EYD","2025-08-14","2025-08-18","16"
"EYD","CN-F-Z02.EYD.S14.USS-17.927","Ground EY06-SWGR-USS-17 in Zone 2 EYD","2025-08-14","2025-08-18","16"
"EYD","CN-F-Z02.EYD.S14.USS-18.930","Ground EY06-SWGR-USS-18 in Zone 2 EYD","2025-08-14","2025-08-18","16"
"EYD","CN-F-Z02.EYD.S14.USS-19.933","Ground EY06-SWGR-USS-19 in Zone 2 EYD","2025-08-14","2025-08-18","16"
"EYD","CN-F-Z02.EYD.S14.USS-20.936","Ground EY06-SWGR-USS-20 in Zone 2 EYD","2025-08-14","2025-08-18","16"
"EYD","CN-F-Z02.EYD.S14.USS-21.939","Ground EY06-SWGR-USS-21 in Zone 2 EYD","2025-08-14","2025-08-18","16"
"EYD","CN-F-Z02.EYD.S14.USS-22.942","Ground EY06-SWGR-USS-22 in Zone 2 EYD","2025-08-14","2025-08-18","16"
"EYD","CN-F-Z02.EYD.S14.USS-23.945","Ground EY06-SWGR-USS-23 in Zone 2 EYD","2025-08-14","2025-08-18","16"
"EYD","CN-F-Z02.EYD.S14.USS-24.948","Ground EY06-SWGR-USS-24 in Zone 2 EYD","2025-08-14","2025-08-18","16"
"EYD","CN-F-Z02.EYD.S14.USS-25.951","Ground EY06-SWGR-USS-25 in Zone 2 EYD","2025-08-14","2025-08-18","16"
"EYD","CN-F-Z02.EYD.S14.USS-26.954","Ground EY06-SWGR-USS-26 in Zone 2 EYD","2025-08-14","2025-08-18","16"
"USS YARD","CN-F-Z01.EYD.S18.HA01.06.0001","Install Cable Tray from Zone 1 USS 1-4 to Rows 1-6","2025-08-14","2025-08-19","24"
"USS YARD","CN-F-Z01.EYD.S18.HA07.12.0001","Install Cable Tray from Zone 1 USS 5-8 to Rows 7-12","2025-08-14","2025-08-19","24"
"EYD","CN-F-Z01.EYD.S29.EYD.0002","Place Grounding Ring in Area Zone 1 EYD RMU USS (1 to 26-Includes MDA's)","2025-08-14","2025-08-21","40"
"DCH","CN-F-Z01.DCH.S29.DCH.0001","Place Grounding Ring in Area Zone 1 DCH","2025-08-14","2025-08-21","40"
"EYD","CN-F-Z01.EYD.S36.TEQP.010","Place-Anchor-Fit-Out & Ground IDF 1.27 in Zone 1 EYD","2025-08-14","2025-08-18","16"
"EYD","CN-F-Z02.EYD.S36.TEQP.008","Place,Anchor,Fit-Out & Ground IDF 1.9 in Zone 2 EYD","2025-08-14","2025-08-18","16"
"SSS","CN-F-Z01.EYD.S17.EYD.016","Install Above Ground Cable Tray from Z1 SSS-F to USS Feed","2025-08-14","2025-08-14","40"
"DCH","CN-F-Z01.DCH.S27.MOD.006","Interconnect Zone 1 DCH Northwest Corner Conveyance Modules","2025-08-14","2025-08-14","40"
"DCH","CN-F-Z01.DCH.S27.MOD.008","Interconnect Zone 1 DCH Southwest Corner Conveyance Modules","2025-08-14","2025-08-21","40"
"DCH","CN-F-Z01.DCH.S27.MOD.014","Install Zone 1 DCH East Perimeter Raceway Modules","2025-08-14","2025-08-21","40"
"DCH","CN-F-Z01.DCH.S27.DRP.018","Install Zone 1 DCH East Perimeter Conduit Drops","2025-08-14","2025-08-21","40"
"DCH","CN-F-Z01.DCH.S27.DRP.019","Install Zone 1 DCH South Perimeter Conduit Drops","2025-08-14","2025-08-21","40"
"DCH","CN-F-Z01.DCH.S27.DRP.020","Install Zone 1 DCH West Perimeter Conduit Drops","2025-08-14","2025-08-21","40"
"USS YARD","CN-F-Z01.EYD.S18.HA01.06.1","Install Cable Tray from Zone 1 USS MDA E-F to BDC E-F","2025-08-14","2025-08-21","40"
"EYD","CN-F-Z02.EYD.SSS-E","EYD Zone 2 SSS-E Install Trestle Steel","2025-08-14","2025-08-21","40"
"EYD","CN-F-Z02.EYD.SSS-F","EYD Zone 2 SSS-F Install Trestle Steel","2025-08-14","2025-08-21","40"
"EYD","CN-F-Z02.EYD.GPS","EYD Zone 2 GPS Install Trestle Steel","2025-08-14","2025-08-21","40"
"Fire Pump House","148321246","Hydro / Flush Underground Supply/Discharge-FIRE PUMPHOUSE-UG & STRUCT","2025-08-14","2025-08-18","16"
"Fire Pump House","148370482","FPH Underground Drain-FIRE PUMPHOUSE-UG & STRUCT","2025-08-14","2025-08-19","24"
"MCP","497394528","FRP SOG-PAVING,Z2 MCP / Trench SOG","2025-08-14","2025-08-26","64"
"MCP","067315362","FRP SOG-PAVING,Z1 MCP / Trench SOG","2025-08-14","2025-08-26","64"
"MYD","912324966","SSSE to RMU PDC1 CN-F-Z01.MYD.S10.SSS-E.1727-Medium Voltage Trench Trough-MV Trench Trough P59-62","2025-08-14","2025-08-19","24"
"MYD","553358716","SSSF to RMU USS6 CN-F-Z01.MYD.S10.USS-6.1773-Medium Voltage Trench Trough-MV Trench Trough P55-58","2025-08-14","2025-08-19","24"
"DCH","173573262","DCH1-Overhead Fire Suppression-Pneumatic Test","2025-08-14","2025-08-18","16"
"USS YARD","762389234","MV Pull 1733-USS-02-USS 2-RMU","2025-08-14","2025-08-19","24"
"DCH","998296473","DCH2-North Wall-Plumbing Wall Runs & Vents","2025-08-14","2025-08-28","80"
"MYD","CON-8715-36","MYD1-S25 SOG","2025-08-14","2025-08-26","64"
"Loading Dock","A1530","Install Dock Levelers-Tier 4-FSA South (Loading Dock)","2025-08-14","2025-08-19","24"
"Loading Dock","A1560","Install Destrat Fans-Tier 4-FSA South (Loading Dock)","2025-08-14","2025-08-20","32"
"Loading Dock","A1570","Drop Hangers & Install Pre-Fab Lights -Tier 4-FSA South (Loading Dock)","2025-08-14","2025-08-28","80"
"EYD","CON-BB-4875","EYD1- E house to GPS E SIDE RMU/XFMR/LV Pull, Term & Torque blue notes","2025-08-14","2025-09-02","96"
"EYD","CON-BB-4955","EYD1-S18 USS 480 Tap Box Pulls","2025-08-14","2025-09-12","160"
"EYD","PRO-020672","Deliver EYD2 Critical Gens 14-17 on site","2025-08-17","2025-08-29","80"
"EYD","CON-7550","EYD1-MV Cable Pull & Terms GEN 1-8 (A & B) to GPS1","2025-08-17","2025-09-22","200"
"EYD","CON-6230","EYD2-Set GENs 18-34","2025-08-17","2025-08-26","280"
"MYD","CON-8625","MYD1-LV Cable Pull-Term USS A-G to MCPs","2025-08-17","2025-09-08","120"
"EYD","CN-F-Z01.EYD.S14.LB.110","Complete Pathway to EY05-Load Bank in Zone 1 EYD","2025-08-17","2025-08-22","40"
"EYD","CN-F-Z01.EYD.S14.MDA-F.116","Complete Pathway to EY05-SWGR-RMU-MDA-F in Zone 1 EYD","2025-08-17","2025-08-18","8"
"EYD","CN-F-Z01.EYD.S14.USS-9.143","Complete Pathway to EY05-SWGR-RMU-9 in Zone 1 EYD","2025-08-17","2025-08-18","8"
"USS YARD","CN-F-Z01.EYD.S14.MDA-E.202","Pull & Test MV Feeder from EY05-SWGR-RMU-MDA-E to EY05-XFMR-USS-MDA-E","2025-08-17","2025-08-18","4"
"USS YARD","CN-F-Z01.EYD.S14.USS-3.215","Pull,Term,Test & Torque Feeder from EY05-XFMR-USS-3 to EY05-SWGR-USS-3","2025-08-17","2025-08-18","8"
"USS YARD","CN-F-Z01.EYD.S14.USS-13.245","Pull,Term,Test & Torque Feeder from EY05-XFMR-USS-13 to EY05-SWGR-USS-13","2025-08-17","2025-08-18","8"
"USS YARD","CN-F-Z01.EYD.S14.USS-1.446","Term & Torque MV Feeder from EY05-SWGR-RMU-1 to EY05-XFMR-USS-1 at EY05-XFMR-USS-1","2025-08-17","2025-09-08","120"
"USS YARD","CN-F-Z01.EYD.S14.USS-1.525","Term & Torque MV Feeder from EY05-SWGR-RMU-1 to EY05-XFMR-USS-1 at EY05-SWGR-RMU-1","2025-08-17","2025-09-08","120"
"DCH","CN-F-Z02.DCH.S39.1-550.0010","Overhead Rough-In VESDA Loop S-19 in Room 1-550-Zone 2 DCH","2025-08-17","2025-08-18","8"
"EYD","CN-F-Z02.EYD.S36.TEQP.007","Place,Anchor,Fit-Out & Ground IDF 1.29 in Zone 2 EYD","2025-08-17","2025-08-19","16"
"EYD","CN-F-Z02.EYD.S36.TEQP.009","Place,Anchor,Fit-Out & Ground IDF 1.30 in Zone 2 EYD","2025-08-17","2025-08-19","16"
"EYD","CON-86495","Install Cable Tray - EYD1 - S10","2025-08-17","2025-08-19","16"
"DCH","495442433","DCH2-Overhead VESDA Piping-Area N","2025-08-18","2025-08-21","24"
"USS YARD","CN-F-Z01.EYD.S14.MDA-F.205","Pull & Test MV Feeder from EY05-SWGR-RMU-MDA-F to EY05-XFMR-USS-MDA-F","2025-08-18","2025-08-19","8"
"USS YARD","CN-F-Z01.EYD.S14.USS-2.211","Pull & Test MV Feeder from EY05-SWGR-RMU-2 to EY05-XFMR-USS-2","2025-08-18","2025-08-25","40"
"USS YARD","CN-F-Z01.EYD.S14.USS-3.214","Pull & Test MV Feeder from EY05-SWGR-RMU-3 to EY05-XFMR-USS-3","2025-08-18","2025-08-25","40"
"USS YARD","CN-F-Z01.EYD.S14.USS-4.217","Pull & Test MV Feeder from EY05-SWGR-RMU-4 to EY05-XFMR-USS-4","2025-08-18","2025-08-25","40"
"USS YARD","CN-F-Z01.EYD.S14.USS-4.218","Pull,Term,Test & Torque Feeder from EY05-XFMR-USS-4 to EY05-SWGR-USS-4","2025-08-18","2025-08-19","8"
"USS YARD","CN-F-Z01.EYD.S14.USS-5.220","Pull & Test MV Feeder from EY05-SWGR-RMU-5 to EY05-XFMR-USS-5","2025-08-18","2025-08-25","40"
"USS YARD","CN-F-Z01.EYD.S14.USS-6.223","Pull & Test MV Feeder from EY05-SWGR-RMU-6 to EY05-XFMR-USS-6","2025-08-18","2025-08-25","40"
"USS YARD","CN-F-Z01.EYD.S14.USS-7.226","Pull & Test MV Feeder from EY05-SWGR-RMU-7 to EY05-XFMR-USS-7","2025-08-18","2025-08-25","40"
"USS YARD","CN-F-Z01.EYD.S14.USS-8.229","Pull & Test MV Feeder from EY05-SWGR-RMU-8 to EY05-XFMR-USS-8","2025-08-18","2025-08-25","40"
"USS YARD","CN-F-Z01.EYD.S14.USS-9.232","Pull & Test MV Feeder from EY05-SWGR-RMU-9 to EY05-XFMR-USS-9","2025-08-18","2025-08-25","40"
"USS YARD","CN-F-Z01.EYD.S14.USS-10.235","Pull & Test MV Feeder from EY05-SWGR-RMU-10 to EY05-XFMR-USS-10","2025-08-18","2025-08-25","40"
"USS YARD","CN-F-Z01.EYD.S14.USS-11.238","Pull & Test MV Feeder from EY05-SWGR-RMU-11 to EY05-XFMR-USS-11","2025-08-18","2025-08-25","40"
"USS YARD","CN-F-Z01.EYD.S14.USS-12.241","Pull & Test MV Feeder from EY05-SWGR-RMU-12 to EY05-XFMR-USS-12","2025-08-18","2025-08-25","40"
"USS YARD","CN-F-Z01.EYD.S14.USS-13.244","Pull & Test MV Feeder from EY05-SWGR-RMU-13 to EY05-XFMR-USS-13","2025-08-18","2025-08-25","40"
"USS YARD","CN-F-Z01.EYD.S14.USS-14.247","Pull & Test MV Feeder from EY05-SWGR-RMU-14 to EY05-XFMR-USS-14","2025-08-18","2025-08-25","40"
"USS YARD","CN-F-Z01.EYD.S14.USS-14.248","Pull,Term,Test & Torque Feeder from EY05-XFMR-USS-14 to EY05-SWGR-USS-14","2025-08-18","2025-08-19","8"
"USS YARD","CN-F-Z01.EYD.S14.USS-15.250","Pull & Test MV Feeder from EY05-SWGR-RMU-15 to EY05-XFMR-USS-15","2025-08-18","2025-08-25","40"
"USS YARD","CN-F-Z01.EYD.S14.USS-16.253","Pull & Test MV Feeder from EY05-SWGR-RMU-16 to EY05-XFMR-USS-16","2025-08-18","2025-08-25","40"
"USS YARD","CN-F-Z01.EYD.S14.USS-17.256","Pull & Test MV Feeder from EY05-SWGR-RMU-17 to EY05-XFMR-USS-17","2025-08-18","2025-08-25","40"
"USS YARD","CN-F-Z01.EYD.S14.USS-18.259","Pull & Test MV Feeder from EY05-SWGR-RMU-18 to EY05-XFMR-USS-18","2025-08-18","2025-08-25","40"
"USS YARD","CN-F-Z01.EYD.S14.USS-19.262","Pull & Test MV Feeder from EY05-SWGR-RMU-19 to EY05-XFMR-USS-19","2025-08-18","2025-08-25","40"
"USS YARD","CN-F-Z01.EYD.S14.USS-20.265","Pull & Test MV Feeder from EY05-SWGR-RMU-20 to EY05-XFMR-USS-20","2025-08-18","2025-08-25","40"
"USS YARD","CN-F-Z01.EYD.S14.USS-21.268","Pull & Test MV Feeder from EY05-SWGR-RMU-21 to EY05-XFMR-USS-21","2025-08-18","2025-08-25","40"
"USS YARD","CN-F-Z01.EYD.S14.USS-22.271","Pull & Test MV Feeder from EY05-SWGR-RMU-22 to EY05-XFMR-USS-22","2025-08-18","2025-08-25","40"
"USS YARD","CN-F-Z01.EYD.S14.USS-23.274","Pull & Test MV Feeder from EY05-SWGR-RMU-23 to EY05-XFMR-USS-23","2025-08-18","2025-08-25","40"
"USS YARD","CN-F-Z01.EYD.S14.USS-24.277","Pull & Test MV Feeder from EY05-SWGR-RMU-24 to EY05-XFMR-USS-24","2025-08-18","2025-08-25","40"
"USS YARD","CN-F-Z01.EYD.S14.USS-26.283","Pull & Test MV Feeder from EY05-SWGR-RMU-26 to EY05-XFMR-USS-26","2025-08-18","2025-08-22","32"
"USS YARD","CN-F-Z01.EYD.S14.MDA-E.442","Term & Torque MV Feeder from EY05-SWGR-RMU-MDA-E to EY05-XFMR-USS-MDA-E at EY05-XFMR-USS-MDA-E","2025-08-18","2025-08-19","8"
"USS YARD","CN-F-Z01.EYD.S14.MDA-E.521","Term & Torque MV Feeder from EY05-SWGR-RMU-MDA-E to EY05-XFMR-USS-MDA-E at EY05-SWGR-RMU-MDA-E","2025-08-18","2025-08-19","8"
"DCH","CN-F-Z02.DCH.S39.1-550.0011","Overhead Rough-In VESDA Loop S-20 in Room 1-550-Zone 2 DCH","2025-08-18","2025-08-19","8"
"EYD","CN-F-Z02.EYD.S14.XFMR-E.960","Complete Pathway to EY06-XFMR-E in Zone 2 EYD","2025-08-18","2025-08-20","16"
"EYD","CN-F-Z02.EYD.S14.XFMR-F.961","Complete Pathway to EY06-XFMR-F in Zone 2 EYD","2025-08-18","2025-08-20","16"
"DCH","281580993","DCH1-Overhead Fire Suppression-Hydrostatic Test","2025-08-18","2025-08-20","16"
"EYD","CON-6105-BB","EYD2-Set Equipment USS 27 to 52 (original)","2025-08-19","2025-08-29","160"
"EYD","CON-7315-BB","EYD2-USS 27 to 52 Fitout","2025-08-19","2025-09-17","160"
"MYD","CON-114325","MYD2-PCW UG Piping-MCP-09","2025-08-19","2025-08-26","40"
"USS YARD","CN-F-Z01.EYD.S14.USS-7.227","Pull,Term,Test & Torque Feeder from EY05-XFMR-USS-7 to EY05-SWGR-USS-7","2025-08-19","2025-08-20","8"
"USS YARD","CN-F-Z01.EYD.S14.USS-19.263","Pull,Term,Test & Torque Feeder from EY05-XFMR-USS-19 to EY05-SWGR-USS-19","2025-08-19","2025-08-20","8"
"USS YARD","CN-F-Z01.EYD.S14.MDA-F.444","Term & Torque MV Feeder from EY05-SWGR-RMU-MDA-F to EY05-XFMR-USS-MDA-F at EY05-XFMR-USS-MDA-F","2025-08-19","2025-08-20","8"
"USS YARD","CN-F-Z01.EYD.S14.MDA-F.523","Term & Torque MV Feeder from EY05-SWGR-RMU-MDA-F to EY05-XFMR-USS-MDA-F at EY05-SWGR-RMU-MDA-F","2025-08-19","2025-08-20","8"
"USS YARD","CX-F-Z01.EYD.S14.L2.647","L2 QC Electrical Install-EY05-XFMR-USS-MDA-E","2025-08-19","2025-08-21","16"
"DCH","CN-F-Z02.DCH.S39.1-550.0012","Overhead Rough-In VESDA Loop S-21 in Room 1-550-Zone 2 DCH","2025-08-19","2025-08-20","8"
"EYD","CN-F-Z02.EYD.S14.USS-2.879","Ground EY06-SWGR-USS-1 in Zone 2 EYD","2025-08-19","2025-08-21","16"
"EYD","CN-F-Z02.EYD.S14.USS-2.964","Complete Pathway to EY06-SWGR-USS-27in Zone 2 EYD","2025-08-19","2025-08-20","8"
"EYD","CN-F-Z02.EYD.S14.USS-4.973","Complete Pathway to EY06-SWGR-USS-30in Zone 2 EYD","2025-08-19","2025-08-20","8"
"EYD","CN-F-Z02.EYD.S14.USS-5.976","Complete Pathway to EY06-SWGR-USS-31in Zone 2 EYD","2025-08-19","2025-08-20","8"
"EYD","CN-F-Z02.EYD.S14.USS-7.982","Complete Pathway to EY06-SWGR-USS-33in Zone 2 EYD","2025-08-19","2025-08-20","8"
"EYD","CN-F-Z02.EYD.S14.USS-8.985","Complete Pathway to EY06-SWGR-USS-34in Zone 2 EYD","2025-08-19","2025-08-20","8"
"EYD","CN-F-Z02.EYD.S14.USS-9.988","Complete Pathway to EY06-SWGR-USS-35in Zone 2 EYD","2025-08-19","2025-08-20","8"
"EYD","CN-F-Z02.EYD.S14.USS-10.991","Complete Pathway to EY06-SWGR-USS-36in Zone 2 EYD","2025-08-19","2025-08-20","8"
"EYD","CN-F-Z02.EYD.S14.USS-11.994","Complete Pathway to EY06-SWGR-USS-37in Zone 2 EYD","2025-08-19","2025-08-20","8"
"EYD","CN-F-Z02.EYD.S14.USS-12.997","Complete Pathway to EY06-SWGR-USS-38in Zone 2 EYD","2025-08-19","2025-08-20","8"
"EYD","CN-F-Z02.EYD.S14.USS-13.1000","Complete Pathway to EY06-SWGR-USS-39in Zone 2 EYD","2025-08-19","2025-08-20","8"
"EYD","CN-F-Z02.EYD.S14.USS-14.1003","Complete Pathway to EY06-SWGR-USS-40in Zone 2 EYD","2025-08-19","2025-08-20","8"
"EYD","CN-F-Z02.EYD.S14.USS-15.1006","Complete Pathway to EY06-SWGR-USS-41in Zone 2 EYD","2025-08-19","2025-08-20","8"
"EYD","CN-F-Z02.EYD.S14.USS-16.1009","Complete Pathway to EY06-SWGR-USS-42in Zone 2 EYD","2025-08-19","2025-08-20","8"
"EYD","CN-F-Z02.EYD.S14.USS-17.1012","Complete Pathway to EY06-SWGR-USS-43in Zone 2 EYD","2025-08-19","2025-08-20","8"
"EYD","CN-F-Z02.EYD.S14.USS-18.1015","Complete Pathway to EY06-SWGR-USS-44in Zone 2 EYD","2025-08-19","2025-08-20","8"
"EYD","CN-F-Z02.EYD.S14.USS-19.1018","Complete Pathway to EY06-SWGR-USS-45in Zone 2 EYD","2025-08-19","2025-08-20","8"
"EYD","CN-F-Z02.EYD.S14.USS-20.1021","Complete Pathway to EY06-SWGR-USS-46in Zone 2 EYD","2025-08-19","2025-08-20","8"
"EYD","CN-F-Z02.EYD.S14.USS-21.1024","Complete Pathway to EY06-SWGR-USS-47in Zone 2 EYD","2025-08-19","2025-08-20","8"
"EYD","CN-F-Z02.EYD.S14.USS-22.1027","Complete Pathway to EY06-SWGR-USS-48in Zone 2 EYD","2025-08-19","2025-08-20","8"
"EYD","CN-F-Z02.EYD.S14.USS-23.1030","Complete Pathway to EY06-SWGR-USS-49in Zone 2 EYD","2025-08-19","2025-08-20","8"
"EYD","CN-F-Z02.EYD.S14.USS-24.1033","Complete Pathway to EY06-SWGR-USS-50in Zone 2 EYD","2025-08-19","2025-08-20","8"
"EYD","CN-F-Z02.EYD.S14.USS-25.1036","Complete Pathway to EY06-SWGR-USS-51in Zone 2 EYD","2025-08-19","2025-08-20","8"
"EYD","CN-F-Z02.EYD.S14.USS-26.1039","Complete Pathway to EY06-SWGR-USS-52in Zone 2 EYD","2025-08-19","2025-08-20","8"
"USS YARD","CN-F-Z01.EYD.S18.HA13.18.0001","Install Cable Tray from Zone 1 USS 9-12 to Rows 13-18","2025-08-19","2025-08-22","24"
"EYD","CN-F-Z01.EYD.S36.TEQP.003","Place,Anchor,Fit-Out & Ground SFE-EYD-03","2025-08-19","2025-08-21","16"
"EYD","CN-F-Z01.EYD.S36.TEQP.005","Place,Anchor,Fit-Out & Ground SFE-EYD-07","2025-08-19","2025-08-21","16"
"EYD","CN-F-Z01.EYD.S36.TEQP.006","Place,Anchor,Fit-Out & Ground SFE-EYD-08","2025-08-19","2025-08-21","16"
"EYD","CN-F-Z02.EYD.S36.TEQP.003","Place,Anchor,Fit-Out & Ground SFE-EYD-09","2025-08-19","2025-08-21","16"
"EYD","CN-F-Z01.EYD.S36.LVCR.009","Pull,Term,& Test Security CAT-6 for SFE-EYD-03","2025-08-19","2025-09-03","80"
"EYD","CN-F-Z01.EYD.S36.LVCR.011","Pull,Term,& Test Security CAT-6 for SFE-EYD-07","2025-08-19","2025-09-03","80"
"EYD","CN-F-Z01.EYD.S36.LVCR.012","Pull,Term,& Test Security CAT-6 for SFE-EYD-08","2025-08-19","2025-09-03","80"
"EYD","CN-F-Z02.EYD.S36.LVCR.009","Pull,Term,& Test Security CAT-6 for SFE-EYD-09","2025-08-19","2025-09-03","80"
"Fire Pump House","148336982","Wet Set FPH Ring-FIRE PUMPHOUSE-UG & STRUCT","2025-08-19","2025-08-21","16"
"MYD","553375119","SSSE to USS7 CN-F-Z02.MYD.S10.USS-7.1879-Medium Voltage Trench Trough-MV Trench Trough P55-58","2025-08-19","2025-08-22","24"
"MYD","912386138","SSSF to USS11 CN-F-Z02.MYD.S10.USS-11.1906-Medium Voltage Trench Trough-MV Trench Trough P59-62","2025-08-19","2025-08-22","24"
"Loading Dock","A1550","Install Loading Dock Rails-Tier 4-FSA South (Loading Dock)","2025-08-19","2025-08-21","16"
"EYD","CON-8135","EYD1-MV Cable Pull & Terms Perun to SSS1","2025-08-20","2025-09-11","120"
"DCH","383471023","DCH2-East Wall-Paint Wall","2025-08-20","2025-08-26","32"
"USS YARD","CN-F-Z01.EYD.S14.USS-8.230","Pull,Term,Test & Torque Feeder from EY05-XFMR-USS-8 to EY05-SWGR-USS-8","2025-08-20","2025-08-21","8"
"USS YARD","CN-F-Z01.EYD.S14.USS-20.266","Pull,Term,Test & Torque Feeder from EY05-XFMR-USS-20 to EY05-SWGR-USS-20","2025-08-20","2025-08-21","8"
"USS YARD","CX-F-Z01.EYD.S14.L2.650","L2 QC Electrical Install-EY05-XFMR-USS-MDA-F","2025-08-20","2025-08-22","16"
"DCH","CN-F-Z02.DCH.S39.1-550.0013","Overhead Rough-In VESDA Loop N-12 in Room 1-550-Zone 2 DCH","2025-08-20","2025-08-21","8"
"DCH","CN-F-Z02.DCH.S27.DRP.037","Install Zone 2 DCH North Perimeter Conduit Drops","2025-08-20","2025-08-27","40"
"DCH","CN-F-Z02.DCH.S27.DRP.039","Install Zone 2 DCH South Perimeter Conduit Drops","2025-08-20","2025-08-27","40"
"DCH","CN-F-Z02.DCH.S27.DRP.040","Install Zone 2 DCH West Perimeter Conduit Drops","2025-08-20","2025-08-27","40"
"DCH","959548821","DCH1-Overhead Fire Suppression-Trip Test","2025-08-20","2025-08-22","16"
"MYD","CON-114285","MYD2-Set Horz Steel/Risers/Horz Piping","2025-08-21","2025-09-12","120"
"DCH","404472248","DCH2-West Wall-S27 Modules","2025-08-21","2025-08-28","40"
"DCH","245463058","DCH2-North Wall-VESDA Wall Drops","2025-08-21","2025-08-26","24"
"Loading Dock","678254981","Cut Subgrade-A,P24 SOUTH WEST LOADING DOCK","2025-08-21","2025-08-26","24"
"DCH","CN-F-Z02.DCH.S29.1-550.0003","Install Branch Hangers in Area 1-550-Zone 2 DCH","2025-08-21","2025-08-28","40"
"DCH","CN-F-Z02.DCH.S29.1-550.0004","Install Systems Hangers in Area 1-550-Zone 2 DCH","2025-08-21","2025-08-28","40"
"DCH","CN-F-Z01.DCH.S29.1-500.0008","QC Inspect Feeder Raceway in Area 1-500-Zone 1 DCH","2025-08-21","2025-08-22","8"
"DCH","CN-F-Z02.DCH.S29.1-550.0008","QC Inspect Feeder Raceway in Area 1-550-Zone 2 DCH","2025-08-21","2025-08-22","8"
"DCH","CN-F-Z02.DCH.S39.1-550.0014","Overhead Rough-In VESDA Loop N-13 in Room 1-550-Zone 2 DCH","2025-08-21","2025-08-22","8"
"USS YARD","CN-F-Z02.EYD.S17.EYD.0014","Install Cable Tray at Z2 CT-LV-FIBER-USS","2025-08-21","2025-08-28","40"
"EYD","CN-F-Z01.EYD.S29.EYD.0003","Place Grounding Ring in Area Zone 1 EYD E Houses","2025-08-21","2025-08-28","40"
"EYD","CN-F-Z01.EYD.S29.EYD.0006","Tie Grounding Ring to Foundations in Area Zone 1 EYD RMU USS (1 to 26-Includes MDA's)","2025-08-21","2025-08-28","40"
"DCH","CN-F-Z02.DCH.S29.DCH.0001","Place Grounding Ring in Area Zone 2 DCH","2025-08-21","2025-08-28","40"
"DCH","CN-F-Z01.DCH.S29.DCH.0002","Tie Grounding Ring to Foundations in Area Zone 1 DCH","2025-08-21","2025-08-28","40"
"DCH","CN-F-Z01.DCH.S27.MOD.002","Interconnect Zone 1 DCH East Perimeter Conveyance Modules","2025-08-21","2025-08-28","40"
"SSS","CN-F-Z02.EYD.S14.EYD.7","Install Above Ground Cable Tray from Z2 SSS-F to USS Feed","2025-08-21","2025-08-28","40"
"Loading Dock","401352423","Cut Subgrade-PAVING,P24 SOUTH WEST LOADING DOCK","2025-08-21","2025-08-26","24"
"DCH","A1470","PMS-DCH1-Fiber Ring-Pull Fiber","2025-08-21","2025-09-05","80"
"Loading Dock","A1540","Install Overhead Doors-Tier 4-FSA South (Loading Dock)","2025-08-21","2025-08-29","48"
"USS YARD","CN-F-Z01.EYD.S14.USS-26.496","Term & Torque MV Feeder from EY05-SWGR-RMU-26 to EY05-XFMR-USS-26 at EY05-XFMR-USS-26","2025-08-22","2025-09-15","120"
"USS YARD","CN-F-Z01.EYD.S14.USS-26.575","Term & Torque MV Feeder from EY05-SWGR-RMU-26 to EY05-XFMR-USS-26 at EY05-SWGR-RMU-26","2025-08-22","2025-09-15","120"
"Conveyance","PCN-1220","Offsite Pre-Fabrication Labor (S18)-USS Secondary Conveyance","2025-08-24","2025-09-15","120"
"DCH","108436160","DCH2-Overhead Fire Suppression-Area M","2025-08-24","2025-09-02","48"
"DCH","CN-F-Z02.DCH.S39.1-550.0015","Overhead Rough-In VESDA Loop N-14 in Room 1-550-Zone 2 DCH","2025-08-24","2025-08-25","8"
"USS YARD","CN-F-Z01.EYD.S18.HA19.24.0001","Install Cable Tray from Zone 1 USS 13-16 to Rows 19-24","2025-08-24","2025-08-27","24"
"EYD","CN-F-Z01.EYD.S36.TEQP.001","Place,Anchor,Fit-Out & Ground SFE-EYD-01","2025-08-24","2025-08-26","16"
"EYD","CN-F-Z01.EYD.S36.TEQP.002","Place,Anchor,Fit-Out & Ground SFE-EYD-02","2025-08-24","2025-08-26","16"
"EYD","CN-F-Z02.EYD.S36.TEQP.001","Place,Anchor,Fit-Out & Ground SFE-EYD-04","2025-08-24","2025-08-26","16"
"EYD","CN-F-Z02.EYD.S36.TEQP.002","Place,Anchor,Fit-Out & Ground SFE-EYD-05","2025-08-24","2025-08-26","16"
"EYD","CN-F-Z01.EYD.S36.TEQP.004","Place,Anchor,Fit-Out & Ground SFE-EYD-06","2025-08-24","2025-08-26","16"
"EYD","CN-F-Z02.EYD.S36.TEQP.004","Place,Anchor,Fit-Out & Ground SFE-EYD-10","2025-08-24","2025-08-26","16"
"EYD","CN-F-Z01.EYD.S36.TEQP.007","Place,Anchor,Fit-Out & Ground SFE-EYD-11","2025-08-24","2025-08-26","16"
"EYD","CN-F-Z01.EYD.S36.TEQP.008","Place,Anchor,Fit-Out & Ground SFE-EYD-12","2025-08-24","2025-08-26","16"
"EYD","CN-F-Z01.EYD.S36.TEQP.009","Place,Anchor,Fit-Out & Ground SFE-EYD-13","2025-08-24","2025-08-26","16"
"EYD","CN-F-Z02.EYD.S36.TEQP.005","Place,Anchor,Fit-Out & Ground SFE-EYD-14","2025-08-24","2025-08-26","16"
"EYD","CN-F-Z02.EYD.S36.TEQP.006","Place,Anchor,Fit-Out & Ground SFE-EYD-15","2025-08-24","2025-08-26","16"
"EYD","CN-F-Z01.EYD.S36.LVCR.007","Pull,Term,& Test Security CAT-6 for SFE-EYD-01","2025-08-24","2025-09-08","80"
"EYD","CN-F-Z01.EYD.S36.LVCR.008","Pull,Term,& Test Security CAT-6 for SFE-EYD-02","2025-08-24","2025-09-08","80"
"EYD","CN-F-Z02.EYD.S36.LVCR.007","Pull,Term,& Test Security CAT-6 for SFE-EYD-04","2025-08-24","2025-09-08","80"
"EYD","CN-F-Z02.EYD.S36.LVCR.008","Pull,Term,& Test Security CAT-6 for SFE-EYD-05","2025-08-24","2025-09-08","80"
"EYD","CN-F-Z01.EYD.S36.LVCR.010","Pull,Term,& Test Security CAT-6 for SFE-EYD-06","2025-08-24","2025-09-08","80"
"EYD","CN-F-Z02.EYD.S36.LVCR.010","Pull,Term,& Test Security CAT-6 for SFE-EYD-10","2025-08-24","2025-09-08","80"
"EYD","CN-F-Z01.EYD.S36.LVCR.013","Pull,Term,& Test Security CAT-6 for SFE-EYD-11","2025-08-24","2025-09-08","80"
"EYD","CN-F-Z01.EYD.S36.LVCR.014","Pull,Term,& Test Security CAT-6 for SFE-EYD-12","2025-08-24","2025-09-08","80"
"EYD","CN-F-Z01.EYD.S36.LVCR.015","Pull,Term,& Test Security CAT-6 for SFE-EYD-13","2025-08-24","2025-09-08","80"
"EYD","CN-F-Z02.EYD.S36.LVCR.011","Pull,Term,& Test Security CAT-6 for SFE-EYD-14","2025-08-24","2025-09-08","80"
"EYD","CN-F-Z02.EYD.S36.LVCR.012","Pull,Term,& Test Security CAT-6 for SFE-EYD-15","2025-08-24","2025-09-08","80"
"MCP","790377501","Set MCP-MCP CTR 01,BUILDOUT","2025-08-24","2025-08-26","16"
"DCH","638555840","DCH1-Overhead Fire Suppression-*SPACE FOR ADDITIONAL TEST*","2025-08-24","2025-08-26","16"
"EYD","493219121","Place 6"""" Rock/Form-A,P17 EYD FUEL STATION","2025-08-25","2025-08-29","32"
"USS YARD","CN-F-Z01.EYD.S14.USS-3.448","Term & Torque MV Feeder from EY05-SWGR-RMU-2 to EY05-XFMR-USS-2 at EY05-XFMR-USS-2","2025-08-25","2025-09-16","120"
"USS YARD","CN-F-Z01.EYD.S14.USS-3.450","Term & Torque MV Feeder from EY05-SWGR-RMU-3 to EY05-XFMR-USS-3 at EY05-XFMR-USS-3","2025-08-25","2025-09-16","120"
"USS YARD","CN-F-Z01.EYD.S14.USS-4.452","Term & Torque MV Feeder from EY05-SWGR-RMU-4 to EY05-XFMR-USS-4 at EY05-XFMR-USS-4","2025-08-25","2025-09-16","120"
"USS YARD","CN-F-Z01.EYD.S14.USS-5.454","Term & Torque MV Feeder from EY05-SWGR-RMU-5 to EY05-XFMR-USS-5 at EY05-XFMR-USS-5","2025-08-25","2025-09-16","120"
"USS YARD","CN-F-Z01.EYD.S14.USS-6.456","Term & Torque MV Feeder from EY05-SWGR-RMU-6 to EY05-XFMR-USS-6 at EY05-XFMR-USS-6","2025-08-25","2025-09-16","120"
"USS YARD","CN-F-Z01.EYD.S14.USS-7.458","Term & Torque MV Feeder from EY05-SWGR-RMU-7 to EY05-XFMR-USS-7 at EY05-XFMR-USS-7","2025-08-25","2025-09-16","120"
"USS YARD","CN-F-Z01.EYD.S14.USS-8.460","Term & Torque MV Feeder from EY05-SWGR-RMU-8 to EY05-XFMR-USS-8 at EY05-XFMR-USS-8","2025-08-25","2025-09-16","120"
"USS YARD","CN-F-Z01.EYD.S14.USS-9.462","Term & Torque MV Feeder from EY05-SWGR-RMU-9 to EY05-XFMR-USS-9 at EY05-XFMR-USS-9","2025-08-25","2025-09-16","120"
"USS YARD","CN-F-Z01.EYD.S14.USS-10.464","Term & Torque MV Feeder from EY05-SWGR-RMU-10 to EY05-XFMR-USS-10 at EY05-XFMR-USS-10","2025-08-25","2025-09-16","120"
"USS YARD","CN-F-Z01.EYD.S14.USS-11.466","Term & Torque MV Feeder from EY05-SWGR-RMU-11 to EY05-XFMR-USS-11 at EY05-XFMR-USS-11","2025-08-25","2025-09-16","120"
"USS YARD","CN-F-Z01.EYD.S14.USS-12.468","Term & Torque MV Feeder from EY05-SWGR-RMU-12 to EY05-XFMR-USS-12 at EY05-XFMR-USS-12","2025-08-25","2025-09-16","120"
"USS YARD","CN-F-Z01.EYD.S14.USS-13.470","Term & Torque MV Feeder from EY05-SWGR-RMU-13 to EY05-XFMR-USS-13 at EY05-XFMR-USS-13","2025-08-25","2025-09-16","120"
"USS YARD","CN-F-Z01.EYD.S14.USS-14.472","Term & Torque MV Feeder from EY05-SWGR-RMU-14 to EY05-XFMR-USS-14 at EY05-XFMR-USS-14","2025-08-25","2025-09-16","120"
"USS YARD","CN-F-Z01.EYD.S14.USS-15.474","Term & Torque MV Feeder from EY05-SWGR-RMU-15 to EY05-XFMR-USS-15 at EY05-XFMR-USS-15","2025-08-25","2025-09-16","120"
"USS YARD","CN-F-Z01.EYD.S14.USS-16.476","Term & Torque MV Feeder from EY05-SWGR-RMU-16 to EY05-XFMR-USS-16 at EY05-XFMR-USS-16","2025-08-25","2025-09-16","120"
"USS YARD","CN-F-Z01.EYD.S14.USS-17.478","Term & Torque MV Feeder from EY05-SWGR-RMU-17 to EY05-XFMR-USS-17 at EY05-XFMR-USS-17","2025-08-25","2025-09-16","120"
"USS YARD","CN-F-Z01.EYD.S14.USS-18.480","Term & Torque MV Feeder from EY05-SWGR-RMU-18 to EY05-XFMR-USS-18 at EY05-XFMR-USS-18","2025-08-25","2025-09-16","120"
"USS YARD","CN-F-Z01.EYD.S14.USS-19.482","Term & Torque MV Feeder from EY05-SWGR-RMU-19 to EY05-XFMR-USS-19 at EY05-XFMR-USS-19","2025-08-25","2025-09-16","120"
"USS YARD","CN-F-Z01.EYD.S14.USS-20.484","Term & Torque MV Feeder from EY05-SWGR-RMU-20 to EY05-XFMR-USS-20 at EY05-XFMR-USS-20","2025-08-25","2025-09-16","120"
"USS YARD","CN-F-Z01.EYD.S14.USS-21.486","Term & Torque MV Feeder from EY05-SWGR-RMU-21 to EY05-XFMR-USS-21 at EY05-XFMR-USS-21","2025-08-25","2025-09-16","120"
"USS YARD","CN-F-Z01.EYD.S14.USS-22.488","Term & Torque MV Feeder from EY05-SWGR-RMU-22 to EY05-XFMR-USS-22 at EY05-XFMR-USS-22","2025-08-25","2025-09-16","120"
"USS YARD","CN-F-Z01.EYD.S14.USS-23.490","Term & Torque MV Feeder from EY05-SWGR-RMU-23 to EY05-XFMR-USS-23 at EY05-XFMR-USS-23","2025-08-25","2025-09-16","120"
"USS YARD","CN-F-Z01.EYD.S14.USS-24.492","Term & Torque MV Feeder from EY05-SWGR-RMU-24 to EY05-XFMR-USS-24 at EY05-XFMR-USS-24","2025-08-25","2025-09-16","120"
"USS YARD","CN-F-Z01.EYD.S14.USS-2.527","Term & Torque MV Feeder from EY05-SWGR-RMU-2 to EY05-XFMR-USS-2 at EY05-SWGR-RMU-2","2025-08-25","2025-09-16","120"
"USS YARD","CN-F-Z01.EYD.S14.USS-3.529","Term & Torque MV Feeder from EY05-SWGR-RMU-3 to EY05-XFMR-USS-3 at EY05-SWGR-RMU-3","2025-08-25","2025-09-16","120"
"USS YARD","CN-F-Z01.EYD.S14.USS-4.531","Term & Torque MV Feeder from EY05-SWGR-RMU-4 to EY05-XFMR-USS-4 at EY05-SWGR-RMU-4","2025-08-25","2025-09-16","120"
"USS YARD","CN-F-Z01.EYD.S14.USS-5.533","Term & Torque MV Feeder from EY05-SWGR-RMU-5 to EY05-XFMR-USS-5 at EY05-SWGR-RMU-5","2025-08-25","2025-09-16","120"
"USS YARD","CN-F-Z01.EYD.S14.USS-6.535","Term & Torque MV Feeder from EY05-SWGR-RMU-6 to EY05-XFMR-USS-6 at EY05-SWGR-RMU-6","2025-08-25","2025-09-16","120"
"USS YARD","CN-F-Z01.EYD.S14.USS-7.537","Term & Torque MV Feeder from EY05-SWGR-RMU-7 to EY05-XFMR-USS-7 at EY05-SWGR-RMU-7","2025-08-25","2025-09-16","120"
"USS YARD","CN-F-Z01.EYD.S14.USS-8.539","Term & Torque MV Feeder from EY05-SWGR-RMU-8 to EY05-XFMR-USS-8 at EY05-SWGR-RMU-8","2025-08-25","2025-09-16","120"
"USS YARD","CN-F-Z01.EYD.S14.USS-9.541","Term & Torque MV Feeder from EY05-SWGR-RMU-9 to EY05-XFMR-USS-9 at EY05-SWGR-RMU-9","2025-08-25","2025-09-16","120"
"USS YARD","CN-F-Z01.EYD.S14.USS-10.543","Term & Torque MV Feeder from EY05-SWGR-RMU-10 to EY05-XFMR-USS-10 at EY05-SWGR-RMU-10","2025-08-25","2025-09-16","120"
"USS YARD","CN-F-Z01.EYD.S14.USS-11.545","Term & Torque MV Feeder from EY05-SWGR-RMU-11 to EY05-XFMR-USS-11 at EY05-SWGR-RMU-11","2025-08-25","2025-09-16","120"
"USS YARD","CN-F-Z01.EYD.S14.USS-12.547","Term & Torque MV Feeder from EY05-SWGR-RMU-12 to EY05-XFMR-USS-12 at EY05-SWGR-RMU-12","2025-08-25","2025-09-16","120"
"USS YARD","CN-F-Z01.EYD.S14.USS-13.549","Term & Torque MV Feeder from EY05-SWGR-RMU-13 to EY05-XFMR-USS-13 at EY05-SWGR-RMU-13","2025-08-25","2025-09-16","120"
"USS YARD","CN-F-Z01.EYD.S14.USS-14.551","Term & Torque MV Feeder from EY05-SWGR-RMU-14 to EY05-XFMR-USS-14 at EY05-SWGR-RMU-14","2025-08-25","2025-09-16","120"
"USS YARD","CN-F-Z01.EYD.S14.USS-15.553","Term & Torque MV Feeder from EY05-SWGR-RMU-15 to EY05-XFMR-USS-15 at EY05-SWGR-RMU-15","2025-08-25","2025-09-16","120"
"USS YARD","CN-F-Z01.EYD.S14.USS-16.555","Term & Torque MV Feeder from EY05-SWGR-RMU-16 to EY05-XFMR-USS-16 at EY05-SWGR-RMU-16","2025-08-25","2025-09-16","120"
"USS YARD","CN-F-Z01.EYD.S14.USS-17.557","Term & Torque MV Feeder from EY05-SWGR-RMU-17 to EY05-XFMR-USS-17 at EY05-SWGR-RMU-17","2025-08-25","2025-09-16","120"
"USS YARD","CN-F-Z01.EYD.S14.USS-18.559","Term & Torque MV Feeder from EY05-SWGR-RMU-18 to EY05-XFMR-USS-18 at EY05-SWGR-RMU-18","2025-08-25","2025-09-16","120"
"USS YARD","CN-F-Z01.EYD.S14.USS-19.561","Term & Torque MV Feeder from EY05-SWGR-RMU-19 to EY05-XFMR-USS-19 at EY05-SWGR-RMU-19","2025-08-25","2025-09-16","120"
"USS YARD","CN-F-Z01.EYD.S14.USS-20.563","Term & Torque MV Feeder from EY05-SWGR-RMU-20 to EY05-XFMR-USS-20 at EY05-SWGR-RMU-20","2025-08-25","2025-09-16","120"
"USS YARD","CN-F-Z01.EYD.S14.USS-21.565","Term & Torque MV Feeder from EY05-SWGR-RMU-21 to EY05-XFMR-USS-21 at EY05-SWGR-RMU-21","2025-08-25","2025-09-16","120"
"USS YARD","CN-F-Z01.EYD.S14.USS-22.567","Term & Torque MV Feeder from EY05-SWGR-RMU-22 to EY05-XFMR-USS-22 at EY05-SWGR-RMU-22","2025-08-25","2025-09-16","120"
"USS YARD","CN-F-Z01.EYD.S14.USS-23.569","Term & Torque MV Feeder from EY05-SWGR-RMU-23 to EY05-XFMR-USS-23 at EY05-SWGR-RMU-23","2025-08-25","2025-09-16","120"
"USS YARD","CN-F-Z01.EYD.S14.USS-24.571","Term & Torque MV Feeder from EY05-SWGR-RMU-24 to EY05-XFMR-USS-24 at EY05-SWGR-RMU-24","2025-08-25","2025-09-16","120"
"DCH","CN-F-Z02.DCH.S39.1-550.0016","Overhead Rough-In VESDA Loop N-15 in Room 1-550-Zone 2 DCH","2025-08-25","2025-08-26","8"
"MCP","790342761","PCS+PCB Unload-MCP CTR 01,BUILDOUT","2025-08-25","2025-08-26","8"
"EYD","CON-6785","EYD2-GEN SOG Bulletin 10-13 (A & B)","2025-08-26","2025-09-03","40"
"Loading Dock","678277110","Place 6"""" Rock/Form-A,P24 SOUTH WEST LOADING DOCK","2025-08-26","2025-08-29","24"
"DCH","CN-F-Z01.DCH.S18.TB.1988","Complete Pathway to TAPBOX-01TOP in Zone 1 DCH","2025-08-26","2025-08-27","8"
"DCH","CN-F-Z02.DCH.S29.1-550.0011","In-Wall Rough-In Electrical in 1-550-Zone 2 DCH","2025-08-26","2025-09-24","160"
"DCH","CN-F-Z02.DCH.S39.1-550.0017","Overhead Rough-In VESDA Loop N-16 in Room 1-550-Zone 2 DCH","2025-08-26","2025-08-27","8"
"DCH","CN-F-Z02.DCH.S39.1-550.0063","Install Fire Alarm Wall Drops in 1-550-Zone 2 DCH","2025-08-26","2025-09-10","80"
"DCH","CN-F-Z01.DCH.S18.TB.002","Complete Pathway to TAPBOX-01BOT in Zone 1 DCH","2025-08-26","2025-09-03","40"
"DCH","CN-F-Z01.DCH.S18.TB.006","Complete Pathway to TAPBOX-02BOT in Zone 1 DCH","2025-08-26","2025-09-03","40"
"DCH","CN-F-Z01.DCH.S18.TB.010","Complete Pathway to TAPBOX-02TOP in Zone 1 DCH","2025-08-26","2025-09-03","40"
"DCH","CN-F-Z02.DCH.S27.DRP.038","Install Zone 2 DCH East Perimeter Conduit Drops","2025-08-26","2025-09-03","40"
"MCP","790392972","Cormaci Outside Trim-MCP CTR 01,BUILDOUT","2025-08-26","2025-08-29","24"
"MCP","790339521","MCP Plumbing/Mechanical Interconnects-MCP CTR 01,BUILDOUT","2025-08-26","2025-09-17","120"
"MCP","790313674","PCS Piping Connects MUWT & Chem Lines-MCP CTR 01,BUILDOUT","2025-08-26","2025-09-04","48"
"MCP","790367537","Domestic Water Tie In-MCP CTR 01,BUILDOUT","2025-08-26","2025-08-28","16"
"MCP","790369147","PCS Chemical Piping-MCP CTR 01,BUILDOUT","2025-08-26","2025-08-29","24"
"MCP","790399797","Roofing Seal-MCP CTR 01,BUILDOUT","2025-08-26","2025-08-27","8"
"MCP","790329785","Set PCS+PCB-MCP CTR 01,BUILDOUT","2025-08-26","2025-08-28","16"
"Loading Dock","401337865","Place 6"""" Rock-PAVING,P24 SOUTH WEST LOADING DOCK","2025-08-26","2025-08-29","24"
"DCH","512512547","DCH1-Overhead Fire Suppression-*2nd SPACE FOR ADDITIONAL TEST*","2025-08-26","2025-08-28","16"
"DCH","404433676","DCH2-West Wall-DH Pace Frames & Temp Doors","2025-08-26","2025-08-28","16"
"DCH","CN-F-Z01.DCH.S18.TB.1987","Complete Pathway to TAPBOX-04TOP in Zone 1 DCH","2025-08-27","2025-08-28","8"
"DCH","CN-F-Z01.DCH.S18.TB.1989","Complete Pathway to TAPBOX-03BOT in Zone 1 DCH","2025-08-27","2025-08-28","8"
"DCH","CN-F-Z02.DCH.S39.1-550.0018","Overhead Rough-In VESDA Loop N-17 in Room 1-550-Zone 2 DCH","2025-08-27","2025-08-28","8"
"USS YARD","CN-F-Z01.EYD.S18.HA25.30.0001","Install Cable Tray from Zone 1 USS 17-20 to Rows 25-30","2025-08-27","2025-09-02","24"
"SSS","CN-F-Z01.EYD.S17.EYD.0001","Install Cable Tray at Z1 CT-MV-SSSA-USS1,USS2","2025-08-27","2025-09-05","80"
"GPS","CN-F-Z01.EYD.S17.EYD.0002","Install Cable Tray at Z1 CT-MV-GPS-SSSA","2025-08-27","2025-09-05","80"
"GPS","CN-F-Z01.EYD.S17.EYD.0003","Install Cable Tray at Z1 CT-MV-GEN-GPS3","2025-08-27","2025-09-05","80"
"GPS","CN-F-Z01.EYD.S17.EYD.0005","Install Cable Tray at Z1 CT-MV-GEN-GPS1,GPS2","2025-08-27","2025-09-05","80"
"GPS","CN-F-Z01.EYD.S17.EYD.0006","Install Cable Tray at Z1 CT-MV-GPS-SSSB","2025-08-27","2025-09-05","80"
"GPS","CN-F-Z01.EYD.S17.EYD.0007","Install Cable Tray at Z1 CT-LV-SSSARIO-GPSC","2025-08-27","2025-09-05","80"
"GPS","CN-F-Z01.EYD.S17.EYD.0008","Install Cable Tray at Z1 CT-LV-GPSB-CTRL","2025-08-27","2025-09-05","80"
"GPS","CN-F-Z01.EYD.S17.EYD.0009","Install Cable Tray at Z1 CT-LV-GPSA-CTRL","2025-08-27","2025-09-05","80"
"GPS","CN-F-Z01.EYD.S17.EYD.0010","Install Cable Tray at Z1 CT-LV-SSSBRIO-GPSC","2025-08-27","2025-09-05","80"
"USS YARD","CN-F-Z01.EYD.S17.EYD.0014","Install Cable Tray at Z1 CT-LV-FIBER-USS","2025-08-27","2025-08-28","120"
"DCH","CN-F-Z01.DCH.S18.TB.014","Complete Pathway to TAPBOX-03TOP in Zone 1 DCH","2025-08-27","2025-09-04","40"
"DCH","CN-F-Z01.DCH.S18.TB.018","Complete Pathway to TAPBOX-04BOT in Zone 1 DCH","2025-08-27","2025-09-04","40"
"DCH","CN-F-Z02.DCH.S27.MOD.033","Install Zone 2 DCH North Perimeter Raceway Modules","2025-08-27","2025-09-04","40"
"Loading Dock","802200686","Cut Subgrade-A,P25 & P26 SOUTH EAST LOADING DOCK","2025-08-28","2025-09-02","16"
"DCH","CN-F-Z02.DCH.S29.1-550.0006","Overhead Rough-in Branch Raceway in Area 1-550-Zone 2 DCH","2025-08-28","2025-10-10","240"
"DCH","CN-F-Z02.DCH.S29.1-550.0007","Overhead Rough-in Systems Raceway in Area 1-550-Zone 2 DCH","2025-08-28","2025-09-19","120"
"DCH","CN-F-Z02.DCH.S39.1-550.0019","Overhead Rough-In VESDA Loop N-18 in Room 1-550-Zone 2 DCH","2025-08-28","2025-08-29","8"
"DCH","CN-F-Z02.DCH.S39.HA-20.0002","Install VESDA Panel for Inside Hot Aisle Loop SVH HA N-20 in Room 1-550-Zone 2 DCH","2025-08-28","2025-09-02","16"
"DCH","CN-F-Z02.DCH.S39.HA-21.0002","Install VESDA Panel for Inside Hot Aisle Loop SVH HA N-21 in Room 1-550-Zone 2 DCH","2025-08-28","2025-09-02","16"
"DCH","CN-F-Z02.DCH.S39.HA-22.0002","Install VESDA Panel for Inside Hot Aisle Loop SVH HA N-22 in Room 1-550-Zone 2 DCH","2025-08-28","2025-09-02","16"
"GPS","CN-F-Z02.EYD.S17.EYD.0006","Install Cable Tray at Z2 CT-MV-GPS-SSSB","2025-08-28","2025-09-05","40"
"EYD","CN-F-Z01.EYD.S29.EYD.0004","Place Grounding Ring in Area Zone 1 EYD Gens (1 to 17)","2025-08-28","2025-09-05","40"
"EYD","CN-F-Z01.EYD.S29.EYD.0007","Tie Grounding Ring to Foundations in Area Zone 1 EYD E Houses","2025-08-28","2025-09-05","40"
"DCH","CN-F-Z02.DCH.S29.DCH.0002","Tie Grounding Ring to Foundations in Area Zone 2 DCH","2025-08-28","2025-09-05","40"
"DCH","CN-F-Z01.DCH.S27.MOD.007","Interconnect Zone 1 DCH Southeast Corner Conveyance Modules","2025-08-28","2025-09-05","40"
"MCP","790349291","PCS Install-MCP CTR 01,BUILDOUT","2025-08-28","2025-09-02","16"
"MCP","790363453","CTS Assembly-MCP CTR 01,BUILDOUT","2025-08-28","2025-09-09","56"
"Loading Dock","639374627","Cut Subgrade-PAVING,P25+P26 SOUTH EAST LOADING DOCK","2025-08-28","2025-09-02","16"
"DCH","245497987","DCH2-North Wall-DH Pace Frames/Temp Doors","2025-08-28","2025-09-02","16"
"DCH","998296483","DCH2-South Wall-Plumbing Wall Runs & Vents","2025-08-28","2025-09-12","80"
"DCH","245493275","DCH2-North Wall-S27 Modules","2025-09-01","2025-09-08","40"
"EYD","493263077","Adjust Manholes & Curb Inlets-A,P17 EYD FUEL STATION","2025-09-01","2025-09-02","8"
"Loading Dock","678204369","Adjust Manholes & Curb Inlets-A,P24 SOUTH WEST LOADING DOCK","2025-09-01","2025-09-02","8"
"DCH","CN-F-Z02.DCH.S39.1-550.0020","Overhead Rough-In VESDA Loop N-19 in Room 1-550-Zone 2 DCH","2025-09-01","2025-09-02","8"
"MYD","CN-F-Z02.MYD.S29.MYD.0001","Place Grounding Ring in Area Zone 2 MYD DC Grounding Loop","2025-09-01","2025-09-08","40"
"EYD","CN-F-Z01.EYD.S36.ISPF.005","Pull,Term & Test Fiber from SE to SFE-EYD-07","2025-09-01","2025-09-04","24"
"EYD","CN-F-Z01.EYD.S36.ISPF.006","Pull,Term & Test Fiber from SE to SFE-EYD-08","2025-09-01","2025-09-04","24"
"EYD","CN-F-Z02.EYD.S36.ISPF.003","Pull,Term & Test Fiber from SE to SFE-EYD-09 PIDS","2025-09-01","2025-09-04","24"
"EYD","CN-F-Z01.EYD.S36.ISPF.008","Pull,Term & Test Fiber from SE to SFE-EYD-12 PIDS","2025-09-01","2025-09-04","24"
"EYD","CN-F-Z01.EYD.S36.ISPF.009","Pull,Term & Test Fiber from SE to SFE-EYD-13 PIDS","2025-09-01","2025-09-04","24"
"EYD","CN-F-Z02.EYD.S36.ISPF.005","Pull,Term & Test Fiber from SE to SFE-EYD-14 PIDS","2025-09-01","2025-09-04","24"
"USS YARD","CN-F-Z01.DCH.S18.TB.003","Pull,Term,Test & Torque Feeder from EY05-SWGR-USS-1 to TAPBOX-01BOT","2025-09-01","2025-09-03","16"
"USS YARD","CN-F-Z01.DCH.S18.TB.011","Pull,Term,Test & Torque Feeder from EY05-SWGR-USS-1 to TAPBOX-02TOP","2025-09-01","2025-09-03","16"
"Fire Pump House","719309895","Build FPH Tank-FIRE PUMPHOUSE,BUILDOUT","2025-09-01","2025-09-15","80"
"DWTR","121347633","Backfill DWTR Pipe-BPS+Tanks,BUILDOUT","2025-09-01","2025-09-05","32"
"Loading Dock","401386791","ADJUST MANHOLES+CURB INLETS-PAVING,P24 SOUTH WEST LOADING DOCK","2025-09-01","2025-09-02","8"
"DCH","A1330","PMS-DCH1-Shiraz Bus Plugs-Pull Wire @ SPD1","2025-09-01","2025-09-08","40"
"MYD","CON-6330","MYD1-Set MCP-01","2025-09-02","2025-09-05","24"
"DCH","495484309","DCH2-Overhead Fire Suppression-Area N","2025-09-02","2025-09-10","48"
"EYD","493226579","Concrete saw cut-A,P17 EYD FUEL STATION","2025-09-02","2025-09-03","8"
"Loading Dock","678267526","Concrete saw cut-A,P24 SOUTH WEST LOADING DOCK","2025-09-02","2025-09-03","8"
"Loading Dock","802250514","Place 6"""" Rock/Form-A,P25 & P26 SOUTH EAST LOADING DOCK","2025-09-02","2025-09-04","16"
"DCH","CN-F-Z01.DCH.S18.TB.1986","Complete Pathway to TAPBOX-05TOP in Zone 1 DCH","2025-09-02","2025-09-03","8"
"DCH","CN-F-Z01.DCH.S18.TB.1990","Complete Pathway to TAPBOX-05BOT in Zone 1 DCH","2025-09-02","2025-09-03","8"
"DCH","CN-F-Z01.DCH.S18.TB.1991","Complete Pathway to TAPBOX-06BOT in Zone 1 DCH","2025-09-02","2025-09-03","8"
"DCH","CN-F-Z02.DCH.S39.1-550.0021","Overhead Rough-In VESDA Loop N-20 in Room 1-550-Zone 2 DCH","2025-09-02","2025-09-03","8"
"DCH","CN-F-Z01.DCH.S39.MDA-1.0002","Install VESDA Panel for Inside Hot Aisle Loop MDA HA N-1 in Room 1-500-Zone 1 DCH","2025-09-02","2025-09-04","16"
"DCH","CN-F-Z01.DCH.S39.MDA-2.0002","Install VESDA Panel for Inside Hot Aisle Loop MDA HA N-2 in Room 1-500-Zone 1 DCH","2025-09-02","2025-09-04","16"
"DCH","CN-F-Z02.DCH.S39.HA-20.0001","Install VESDA Panel for Inside Hot Aisle Loop SVH HA S-20 in Room 1-550-Zone 2 DCH","2025-09-02","2025-09-04","16"
"DCH","CN-F-Z02.DCH.S39.HA-21.0001","Install VESDA Panel for Inside Hot Aisle Loop SVH HA S-21 in Room 1-550-Zone 2 DCH","2025-09-02","2025-09-04","16"
"DCH","CN-F-Z02.DCH.S39.HA-22.0001","Install VESDA Panel for Inside Hot Aisle Loop SVH HA S-22 in Room 1-550-Zone 2 DCH","2025-09-02","2025-09-04","16"
"USS YARD","CN-F-Z01.EYD.S18.HA31.36.0001","Install Cable Tray from Zone 1 USS 21-24 to Rows 31-36","2025-09-02","2025-09-05","24"
"USS YARD","CN-F-Z01.DCH.S18.TB.015","Pull,Term,Test & Torque Feeder from EY05-SWGR-USS-1 to TAPBOX-03TOP","2025-09-02","2025-09-04","16"
"DCH","CN-F-Z01.DCH.S18.TB.022","Complete Pathway to TAPBOX-06TOP in Zone 1 DCH","2025-09-02","2025-09-09","40"
"Loading Dock","639383131","Place 6"""" Rock-PAVING,P25+P26 SOUTH EAST LOADING DOCK","2025-09-02","2025-09-04","16"
"Loading Dock","401371185","CONCRETE SAW CUT-PAVING,P24 SOUTH WEST LOADING DOCK","2025-09-02","2025-09-03","8"
"DCH","808434152","DCH2-South Wall-DH Pace Frames/Temp Doors","2025-09-02","2025-09-04","16"
"EYD","CON-7470","EYD2-GEN SOG Bulletin 14-18 (A & B)","2025-09-03","2025-09-24","120"
"DCH","CX-10124","DCH1-Flushing Activity-Hall/MYD First Half","2025-09-03","2025-09-24","120"
"MYD","CON-8715-24","MYD2-Trench Drain SOG","2025-09-03","2025-09-17","80"
"EYD","493286432","Apply join sealant-A,P17 EYD FUEL STATION","2025-09-03","2025-09-05","16"
"Loading Dock","678263198","Apply join sealant-A,P24 SOUTH WEST LOADING DOCK","2025-09-03","2025-09-05","16"
"DCH","CN-F-Z01.DCH.S18.TB.1994","Complete Pathway to TAPBOX-07TOP in Zone 1 DCH","2025-09-03","2025-09-04","8"
"DCH","CN-F-Z02.DCH.S39.1-550.0022","Overhead Rough-In VESDA Loop N-21 in Room 1-550-Zone 2 DCH","2025-09-03","2025-09-04","8"
"DCH","CN-F-Z01.DCH.S18.TB.026","Complete Pathway to TAPBOX-07BOT in Zone 1 DCH","2025-09-03","2025-09-10","40"
"DCH","CN-F-Z01.DCH.S18.TB.030","Complete Pathway to TAPBOX-08BOT in Zone 1 DCH","2025-09-03","2025-09-10","40"
"DCH","CN-F-Z01.DCH.S18.TB.034","Complete Pathway to TAPBOX-08TOP in Zone 1 DCH","2025-09-03","2025-09-10","40"
"Loading Dock","401338439","6"""" Preforated Drain-PAVING,P24 SOUTH WEST LOADING DOCK","2025-09-03","2025-09-05","16"
"MCP","242325460","FRP SOG-PAVING,West MCP SOG","2025-09-03","2025-09-15","64"
"Loading Dock","802294439","Adjust Manholes & Curb Inlets-A,P25 & P26 SOUTH EAST LOADING DOCK","2025-09-04","2025-09-05","8"
"USS YARD","CN-F-Z01.DCH.S18.TB.2024","Pull,Term,Test & Torque Feeder from EY05-SWGR-USS-2 to TAPBOX-05TOP","2025-09-04","2025-09-08","16"
"USS YARD","CN-F-Z01.DCH.S18.TB.2025","Pull,Term,Test & Torque Feeder from EY05-SWGR-USS-2 to TAPBOX-04TOP","2025-09-04","2025-09-08","16"
"USS YARD","CN-F-Z01.DCH.S18.TB.2026","Pull,Term,Test & Torque Feeder from EY05-SWGR-USS-2 to TAPBOX-01TOP","2025-09-04","2025-09-08","16"
"USS YARD","CX-F-Z01.EYD.S14.L2.654","L2 QC Electrical Install-EY05-SWGR-USS-1","2025-09-04","2025-09-08","16"
"DCH","CN-F-Z02.DCH.S39.1-550.0023","Install Wall Drops for VESDA Loop S-12 in Room 1-550-Zone 2 DCH","2025-09-04","2025-09-05","8"
"DCH","CN-F-Z02.DCH.S39.1-550.0024","Install Wall Drops for VESDA Loop S-13 in Room 1-550-Zone 2 DCH","2025-09-04","2025-09-05","8"
"DCH","CN-F-Z02.DCH.S39.1-550.0025","Install Wall Drops for VESDA Loop S-14 in Room 1-550-Zone 2 DCH","2025-09-04","2025-09-05","8"
"DCH","CN-F-Z02.DCH.S39.1-550.0026","Install Wall Drops for VESDA Loop S-15 in Room 1-550-Zone 2 DCH","2025-09-04","2025-09-05","8"
"DCH","CN-F-Z02.DCH.S39.1-550.0027","Install Wall Drops for VESDA Loop S-16 in Room 1-550-Zone 2 DCH","2025-09-04","2025-09-05","8"
"DCH","CN-F-Z02.DCH.S39.1-550.0028","Install Wall Drops for VESDA Loop S-17 in Room 1-550-Zone 2 DCH","2025-09-04","2025-09-05","8"
"DCH","CN-F-Z02.DCH.S39.1-550.0029","Install Wall Drops for VESDA Loop S-18 in Room 1-550-Zone 2 DCH","2025-09-04","2025-09-05","8"
"DCH","CN-F-Z02.DCH.S39.1-550.0030","Install Wall Drops for VESDA Loop S-19 in Room 1-550-Zone 2 DCH","2025-09-04","2025-09-05","8"
"DCH","CN-F-Z02.DCH.S39.1-550.0031","Install Wall Drops for VESDA Loop S-20 in Room 1-550-Zone 2 DCH","2025-09-04","2025-09-05","8"
"DCH","CN-F-Z02.DCH.S39.1-550.0032","Install Wall Drops for VESDA Loop S-21 in Room 1-550-Zone 2 DCH","2025-09-04","2025-09-05","8"
"DCH","CN-F-Z02.DCH.S39.1-550.0033","Install Wall Drops for VESDA Loop N-12 in Room 1-550-Zone 2 DCH","2025-09-04","2025-09-05","8"
"DCH","CN-F-Z02.DCH.S39.1-550.0034","Install Wall Drops for VESDA Loop N-13 in Room 1-550-Zone 2 DCH","2025-09-04","2025-09-05","8"
"DCH","CN-F-Z02.DCH.S39.1-550.0035","Install Wall Drops for VESDA Loop N-14 in Room 1-550-Zone 2 DCH","2025-09-04","2025-09-05","8"
"DCH","CN-F-Z02.DCH.S39.1-550.0036","Install Wall Drops for VESDA Loop N-15 in Room 1-550-Zone 2 DCH","2025-09-04","2025-09-05","8"
"DCH","CN-F-Z02.DCH.S39.1-550.0037","Install Wall Drops for VESDA Loop N-16 in Room 1-550-Zone 2 DCH","2025-09-04","2025-09-05","8"
"DCH","CN-F-Z02.DCH.S39.1-550.0038","Install Wall Drops for VESDA Loop N-17 in Room 1-550-Zone 2 DCH","2025-09-04","2025-09-05","8"
"DCH","CN-F-Z02.DCH.S39.1-550.0039","Install Wall Drops for VESDA Loop N-18 in Room 1-550-Zone 2 DCH","2025-09-04","2025-09-05","8"
"DCH","CN-F-Z02.DCH.S39.1-550.0040","Install Wall Drops for VESDA Loop N-19 in Room 1-550-Zone 2 DCH","2025-09-04","2025-09-05","8"
"DCH","CN-F-Z02.DCH.S39.1-550.0041","Install Wall Drops for VESDA Loop N-20 in Room 1-550-Zone 2 DCH","2025-09-04","2025-09-05","8"
"DCH","CN-F-Z02.DCH.S39.1-550.0042","Install Wall Drops for VESDA Loop N-21 in Room 1-550-Zone 2 DCH","2025-09-04","2025-09-05","8"
"DCH","CN-F-Z01.DCH.S39.MDA-1.0001","Install VESDA Panel for Inside Hot Aisle Loop MDA HA S-1 in Room 1-500-Zone 1 DCH","2025-09-04","2025-09-08","16"
"DCH","CN-F-Z01.DCH.S39.MDA-2.0001","Install VESDA Panel for Inside Hot Aisle Loop MDA HA S-2 in Room 1-500-Zone 1 DCH","2025-09-04","2025-09-08","16"
"DCH","CN-F-Z02.DCH.S36.DCH.0001","Place,Anchor,Fit-Out & Ground CCA-4 in Zone 2 DCH","2025-09-04","2025-09-05","8"
"EYD","CN-F-Z01.EYD.S36.ISPF.002","Pull-Term & Test Fiber from SE to SFE-EYD-02","2025-09-04","2025-09-09","24"
"EYD","CN-F-Z01.EYD.S36.ISPF.003","Pull,Term & Test Fiber from SE to SFE-EYD-03","2025-09-04","2025-09-09","24"
"EYD","CN-F-Z02.EYD.S36.ISPF.001","Pull,Term & Test Fiber from SE to SFE-EYD-04 PIDS","2025-09-04","2025-09-09","24"
"EYD","CN-F-Z02.EYD.S36.ISPF.002","Pull,Term & Test Fiber from SE to SFE-EYD-05 PIDS","2025-09-04","2025-09-09","24"
"EYD","CN-F-Z01.EYD.S36.ISPF.004","Pull,Term & Test Fiber from SE to SFE-EYD-06","2025-09-04","2025-09-09","24"
"EYD","CN-F-Z02.EYD.S36.ISPF.004","Pull,Term & Test Fiber from SE to SFE-EYD-10 PIDS","2025-09-04","2025-09-09","24"
"EYD","CN-F-Z01.EYD.S36.ISPF.007","Pull,Term & Test Fiber from SE to SFE-EYD-11","2025-09-04","2025-09-09","24"
"EYD","CN-F-Z02.EYD.S36.ISPF.006","Pull,Term & Test Fiber from SE to SFE-EYD-15 PIDS","2025-09-04","2025-09-09","24"
"EYD","CN-F-Z01.EYD.S36.L2.005","L2 QC Telecom Install-SFE-EYD-07","2025-09-04","2025-09-08","16"
"EYD","CN-F-Z01.EYD.S36.L2.006","L2 QC Telecom Install-SFE-EYD-08","2025-09-04","2025-09-08","16"
"EYD","CN-F-Z02.EYD.S36.L2.003","L2 QC Telecom Install-SFE-EYD-09","2025-09-04","2025-09-08","16"
"DCH","CN-F-Z02.DCH.S27.MOD.021","Interconnect Zone 2 DCH North Perimeter Conveyance Modules","2025-09-04","2025-09-11","40"
"DCH","CN-F-Z02.DCH.S27.MOD.036","Install Zone 2 DCH West Perimeter Raceway Modules","2025-09-04","2025-09-11","40"
"Loading Dock","639320463","ADJUST MANHOLES+CURB INLETS-PAVING,P25+P26 SOUTH EAST LOADING DOCK","2025-09-04","2025-09-05","8"
"DCH","383467087","DCH2-East Wall-DH Pace Frames/Temp Doors","2025-09-04","2025-09-08","16"
"MYD","CON-4595","MYD2-S25 Ship Loose & Columns","2025-09-07","2025-09-15","48"
"DCH","CON-8715-26","MYD2-East DCH SOG","2025-09-07","2025-09-10","24"
"Loading Dock","802265537","Concrete saw cut-A,P25 & P26 SOUTH EAST LOADING DOCK","2025-09-07","2025-09-08","8"
"GPS","CN-F-Z01.EYD.S14.LB.198","Pull & Test MV Feeder from EY05-SWGR-GPS to EY05-Load Bank","2025-09-07","2025-09-19","80"
"SSS","CN-F-Z01.EYD.S14.XFMR-E.199","Pull & Test MV Feeder from EY05-SWGR-SSS-E to EY05-XFMR-E","2025-09-07","2025-09-12","40"
"SSS","CN-F-Z01.EYD.S14.USS-2.210","Pull & Test MV Feeder from EY05-SWGR-SSS-F to EY05-SWGR-RMU-2","2025-09-07","2025-09-16","56"
"SSS","CN-F-Z01.EYD.S14.USS-5.219","Pull & Test MV Feeder from EY05-SWGR-SSS-F to EY05-SWGR-RMU-5","2025-09-07","2025-09-16","56"
"SSS","CN-F-Z01.EYD.S14.USS-8.228","Pull & Test MV Feeder from EY05-SWGR-SSS-F to EY05-SWGR-RMU-8","2025-09-07","2025-09-16","56"
"SSS","CN-F-Z01.EYD.S14.USS-11.237","Pull & Test MV Feeder from EY05-SWGR-SSS-F to EY05-SWGR-RMU-11","2025-09-07","2025-09-16","56"
"SSS","CN-F-Z01.EYD.S14.USS-14.246","Pull & Test MV Feeder from EY05-SWGR-SSS-F to EY05-SWGR-RMU-14","2025-09-07","2025-09-16","56"
"SSS","CN-F-Z01.EYD.S14.USS-17.255","Pull & Test MV Feeder from EY05-SWGR-SSS-F to EY05-SWGR-RMU-17","2025-09-07","2025-09-16","56"
"SSS","CN-F-Z01.EYD.S14.USS-20.264","Pull & Test MV Feeder from EY05-SWGR-SSS-F to EY05-SWGR-RMU-20","2025-09-07","2025-09-16","56"
"SSS","CN-F-Z01.EYD.S14.USS-23.273","Pull & Test MV Feeder from EY05-SWGR-SSS-F to EY05-SWGR-RMU-23","2025-09-07","2025-09-16","56"
"SSS","CN-F-Z01.EYD.S14.USS-26.282","Pull & Test MV Feeder from EY05-SWGR-SSS-F to EY05-SWGR-RMU-26","2025-09-07","2025-09-16","56"
"GPS","CN-F-Z01.EYD.S14.SSS-E.297","Pull & Test MV Feeder from EY05-SWGR-SSS-E to EY05-SWGR-GPS","2025-09-07","2025-09-19","80"
"DCH","CN-F-Z01.DCH.S29.1-500.0012","QC Inspect Electrical In-Wall in 1-500-Zone 1 DCH","2025-09-07","2025-09-08","8"
"DCH","CN-F-Z02.DCH.S39.1-550.0043","Install VESDA Panel for Overhead Deck Loop S-12 in Room 1-550-Zone 2 DCH","2025-09-07","2025-09-08","8"
"DCH","CN-F-Z02.DCH.S39.1-550.0044","Install VESDA Panel for Overhead Deck Loop S-13 in Room 1-550-Zone 2 DCH","2025-09-07","2025-09-08","8"
"DCH","CN-F-Z02.DCH.S39.1-550.0045","Install VESDA Panel for Overhead Deck Loop S-14 in Room 1-550-Zone 2 DCH","2025-09-07","2025-09-08","8"
"DCH","CN-F-Z02.DCH.S39.1-550.0046","Install VESDA Panel for Overhead Deck Loop S-15 in Room 1-550-Zone 2 DCH","2025-09-07","2025-09-08","8"
"DCH","CN-F-Z02.DCH.S39.1-550.0047","Install VESDA Panel for Overhead Deck Loop S-16 in Room 1-550-Zone 2 DCH","2025-09-07","2025-09-08","8"
"DCH","CN-F-Z02.DCH.S39.1-550.0048","Install VESDA Panel for Overhead Deck Loop S-17 in Room 1-550-Zone 2 DCH","2025-09-07","2025-09-08","8"
"DCH","CN-F-Z02.DCH.S39.1-550.0049","Install VESDA Panel for Overhead Deck Loop S-18 in Room 1-550-Zone 2 DCH","2025-09-07","2025-09-08","8"
"DCH","CN-F-Z02.DCH.S39.1-550.0050","Install VESDA Panel for Overhead Deck Loop S-19 in Room 1-550-Zone 2 DCH","2025-09-07","2025-09-08","8"
"DCH","CN-F-Z02.DCH.S39.1-550.0051","Install VESDA Panel for Overhead Deck Loop S-20 in Room 1-550-Zone 2 DCH","2025-09-07","2025-09-08","8"
"DCH","CN-F-Z02.DCH.S39.1-550.0052","Install VESDA Panel for Overhead Deck Loop S-21 in Room 1-550-Zone 2 DCH","2025-09-07","2025-09-08","8"
"DCH","CN-F-Z02.DCH.S39.1-550.0053","Install VESDA Panel for Overhead Deck Loop N-12 in Room 1-550-Zone 2 DCH","2025-09-07","2025-09-08","8"
"DCH","CN-F-Z02.DCH.S39.1-550.0054","Install VESDA Panel for Overhead Deck Loop N-13 in Room 1-550-Zone 2 DCH","2025-09-07","2025-09-08","8"
"DCH","CN-F-Z02.DCH.S39.1-550.0055","Install VESDA Panel for Overhead Deck Loop N-14 in Room 1-550-Zone 2 DCH","2025-09-07","2025-09-08","8"
"DCH","CN-F-Z02.DCH.S39.1-550.0056","Install VESDA Panel for Overhead Deck Loop N-15 in Room 1-550-Zone 2 DCH","2025-09-07","2025-09-08","8"
"DCH","CN-F-Z02.DCH.S39.1-550.0057","Install VESDA Panel for Overhead Deck Loop N-16 in Room 1-550-Zone 2 DCH","2025-09-07","2025-09-08","8"
"DCH","CN-F-Z02.DCH.S39.1-550.0058","Install VESDA Panel for Overhead Deck Loop N-17 in Room 1-550-Zone 2 DCH","2025-09-07","2025-09-08","8"
"DCH","CN-F-Z02.DCH.S39.1-550.0059","Install VESDA Panel for Overhead Deck Loop N-18 in Room 1-550-Zone 2 DCH","2025-09-07","2025-09-08","8"
"DCH","CN-F-Z02.DCH.S39.1-550.0060","Install VESDA Panel for Overhead Deck Loop N-19 in Room 1-550-Zone 2 DCH","2025-09-07","2025-09-08","8"
"DCH","CN-F-Z02.DCH.S39.1-550.0061","Install VESDA Panel for Overhead Deck Loop N-20 in Room 1-550-Zone 2 DCH","2025-09-07","2025-09-08","8"
"DCH","CN-F-Z02.DCH.S39.1-550.0062","Install VESDA Panel for Overhead Deck Loop N-21 in Room 1-550-Zone 2 DCH","2025-09-07","2025-09-08","8"
"MYD","CN-F-Z01.MYD.S24.MCP1.1755","MYD1-Pull,Term,Test & Torque Feeder from MCP-01-BDC to MCP-01-Basin HT Panel A","2025-09-07","2025-09-10","24"
"USS YARD","CN-F-Z01.EYD.S18.HA37.38.0001","Install Cable Tray from Zone 1 USS 25-26 to Rows 37-38","2025-09-07","2025-09-10","24"
"GPS","CN-F-Z02.EYD.S17.EYD.0010","Install Cable Tray at Z2 CT-LV-SSSBRIO-GPSC","2025-09-07","2025-09-12","40"
"EYD","CN-F-Z01.EYD.S29.EYD.0001","Place Grounding in Area Zone 1 EYD Perun","2025-09-07","2025-09-12","40"
"EYD","CN-F-Z01.EYD.S29.EYD.0008","Tie Grounding Ring to Foundations in Area Zone 1 EYD Gens (1 to 17)","2025-09-07","2025-09-12","40"
"DCH","CN-F-Z01.DCH.S27.MOD.005","Interconnect Zone 1 DCH Northeast Corner Conveyance Modules","2025-09-07","2025-09-12","40"
"GPS","CN-F-Z01.EYD.S14.CW.3358","Pull,Term,Test & Torque Feeder from EY05-SWGR-GPS (Control) to EY05-SWGR-SSS-F (Control)","2025-09-07","2025-09-12","40"
"Loading Dock","401390186","APPLY JOINT SEALENT-PAVING,P24 SOUTH WEST LOADING DOCK","2025-09-07","2025-09-09","16"
"Loading Dock","639331918","CONCRETE SAW CUT-PAVING,P25+P26 SOUTH EAST LOADING DOCK","2025-09-07","2025-09-08","8"
"DCH","A1480","PMS-DCH1-Fiber Ring-Splice Fiber","2025-09-07","2025-09-12","40"
"EYD","CON-BB-4555","EYD1-RMU to SSS-E MV Pulls","2025-09-07","2025-09-17","64"
"EYD","CON-BB-5065","EYD1-S14 SSS-E to GPS MV/LV Pulls","2025-09-07","2025-09-12","40"
"EYD","CON-BB-5075","EYD1-S14 SSS-F to GPS MV/LV Pulls","2025-09-07","2025-09-12","40"
"Loading Dock","802251790","Apply join sealant-A,P25 & P26 SOUTH EAST LOADING DOCK","2025-09-08","2025-09-10","16"
"DCH","CN-F-Z01.DCH.S18.TB.1993","Complete Pathway to TAPBOX-10TOP in Zone 1 DCH","2025-09-08","2025-09-09","8"
"DCH","CN-F-Z01.DCH.S18.TB.1995","Complete Pathway to TAPBOX-09BOT in Zone 1 DCH","2025-09-08","2025-09-09","8"
"USS YARD","CX-F-Z01.EYD.S14.L2.653","L2 QC Electrical Install-EY05-XFMR-USS-1","2025-09-08","2025-09-10","16"
"USS YARD","CX-F-Z01.EYD.S14.L2.657","L2 QC Electrical Install-EY05-SWGR-USS-2","2025-09-08","2025-09-10","16"
"DCH","CN-F-Z02.DCH.S36.DCH.0004","Place,Anchor,Fit-Out & Ground CCB-4 in Zone 2 DCH","2025-09-08","2025-09-09","8"
"MYD","CN-F-Z01.MYD.S24.MCP2.1758","MYD1-Pull,Term,Test & Torque Feeder from MCP-02-BDC to MCP-02-Basin HT Panel A","2025-09-08","2025-09-11","24"
"MYD","CN-F-Z02.MYD.S29.MYD.0002","Tie Grounding Ring to Foundations in Area Zone 2 MYD DC Grounding Loop","2025-09-08","2025-09-09","8"
"EYD","CN-F-Z01.EYD.S36.L2.008","L2 QC Telecom Install-SFE-EYD-12","2025-09-08","2025-09-10","16"
"EYD","CN-F-Z01.EYD.S36.L2.009","L2 QC Telecom Install-SFE-EYD-13","2025-09-08","2025-09-10","16"
"EYD","CN-F-Z02.EYD.S36.L2.005","L2 QC Telecom Install-SFE-EYD-14","2025-09-08","2025-09-10","16"
"USS YARD","CN-F-Z01.DCH.S18.TB.007","Pull,Term,Test & Torque Feeder from EY05-SWGR-USS-3 to TAPBOX-02BOT","2025-09-08","2025-09-10","16"
"USS YARD","CN-F-Z01.DCH.S18.TB.019","Pull,Term,Test & Torque Feeder from EY05-SWGR-USS-3 to TAPBOX-04BOT","2025-09-08","2025-09-10","16"
"USS YARD","CN-F-Z01.DCH.S18.TB.023","Pull,Term,Test & Torque Feeder from EY05-SWGR-USS-3 to TAPBOX-06TOP","2025-09-08","2025-09-10","16"
"DCH","CN-F-Z01.DCH.S18.TB.038","Complete Pathway to TAPBOX-09TOP in Zone 1 DCH","2025-09-08","2025-09-15","40"
"DCH","CN-F-Z01.DCH.S18.TB.042","Complete Pathway to TAPBOX-10BOT in Zone 1 DCH","2025-09-08","2025-09-15","40"
"MCP","101378553","Set MCP-MCP CTR 02,BUILDOUT","2025-09-08","2025-09-10","16"
"MCP","790389803","CTS Electrical Conduit-MCP CTR 01,BUILDOUT","2025-09-08","2025-09-09","8"
"Loading Dock","639318941","6"""" Preforated Drain-PAVING,P25+P26 SOUTH EAST LOADING DOCK","2025-09-08","2025-09-09","8"
"DCH","A1360","PMS-DCH1-Shiraz Bus Plugs-Pull Wire @ SPD4","2025-09-08","2025-09-15","40"
"DCH","CN-F-Z01.DCH.S18.TB.1992","Complete Pathway to TAPBOX-11TOP in Zone 1 DCH","2025-09-09","2025-09-10","8"
"DCH","CN-F-Z01.DCH.S18.TB.1996","Complete Pathway to TAPBOX-11BOT in Zone 1 DCH","2025-09-09","2025-09-10","8"
"DCH","CN-F-Z01.DCH.S18.TB.1997","Complete Pathway to TAPBOX-12BOT in Zone 1 DCH","2025-09-09","2025-09-10","8"
"MYD","CN-F-Z02.MYD.S36.TEQP.004","Place,Anchor,Fit-Out & Ground SFE-MYD-02","2025-09-09","2025-09-11","16"
"MYD","CN-F-Z02.MYD.S36.TEQP.005","Place,Anchor,Fit-Out & Ground SFE-MYD-03","2025-09-09","2025-09-11","16"
"EYD","CN-F-Z01.EYD.S36.L2.002","L2 QC Telecom Install-SFE-EYD-02","2025-09-09","2025-09-11","16"
"EYD","CN-F-Z01.EYD.S36.L2.003","L2 QC Telecom Install-SFE-EYD-03","2025-09-09","2025-09-11","16"
"EYD","CN-F-Z02.EYD.S36.L2.001","L2 QC Telecom Install-SFE-EYD-04","2025-09-09","2025-09-11","16"
"EYD","CN-F-Z02.EYD.S36.L2.002","L2 QC Telecom Install-SFE-EYD-05","2025-09-09","2025-09-11","16"
"EYD","CN-F-Z01.EYD.S36.L2.004","L2 QC Telecom Install-SFE-EYD-06","2025-09-09","2025-09-11","16"
"EYD","CN-F-Z02.EYD.S36.L2.004","L2 QC Telecom Install-SFE-EYD-10","2025-09-09","2025-09-11","16"
"EYD","CN-F-Z01.EYD.S36.L2.007","L2 QC Telecom Install-SFE-EYD-11","2025-09-09","2025-09-11","16"
"EYD","CN-F-Z02.EYD.S36.L2.006","L2 QC Telecom Install-SFE-EYD-15","2025-09-09","2025-09-11","16"
"DCH","CN-F-Z01.DCH.S18.TB.046","Complete Pathway to TAPBOX-12TOP in Zone 1 DCH","2025-09-09","2025-09-16","40"
"MCP","790333610","CTS Piping,grading,handrail-MCP CTR 01,BUILDOUT","2025-09-09","2025-09-19","64"
"MCP","790307269","SSC Steel unload-MCP CTR 01,BUILDOUT","2025-09-09","2025-09-10","8"
"MCP","101300263","PCS+PCB Unload-MCP CTR 02,BUILDOUT","2025-09-09","2025-09-10","8"
"Loading Dock","639338627","APPLY JOINT SEALENT-PAVING,P25+P26 SOUTH EAST LOADING DOCK","2025-09-09","2025-09-10","8"
"USS YARD","CN-F-Z01.DCH.S18.TB.2027","Pull,Term,Test & Torque Feeder from EY05-SWGR-USS-4 to TAPBOX-03BOT","2025-09-10","2025-09-12","16"
"USS YARD","CN-F-Z01.DCH.S18.TB.2028","Pull,Term,Test & Torque Feeder from EY05-SWGR-USS-4 to TAPBOX-05BOT","2025-09-10","2025-09-12","16"
"USS YARD","CN-F-Z01.DCH.S18.TB.2029","Pull,Term,Test & Torque Feeder from EY05-SWGR-USS-4 to TAPBOX-06BOT","2025-09-10","2025-09-12","16"
"USS YARD","CX-F-Z01.EYD.S14.L2.660","L2 QC Electrical Install-EY05-SWGR-USS-3","2025-09-10","2025-09-12","16"
"MYD","CN-F-Z01.MYD.S24.MCP1.1756","MYD1-Pull,Term,Test & Torque Feeder from MCP-01-BDC to MCP-01-Basin HT Panel B","2025-09-10","2025-09-15","24"
"EYD","CN-F-Z02.EYD.USS.01-4","EYD Zone 2 USS 01-04 Install Trestle Steel","2025-09-10","2025-09-17","40"
"MCP","101304885","MCP Plumbing/Mechanical Interconnects-MCP CTR 02,BUILDOUT","2025-09-10","2025-10-01","120"
"MCP","101377531","Set PCS+PCB-MCP CTR 02,BUILDOUT","2025-09-10","2025-09-12","16"
"MCP","101361221","Roofing Seal-MCP CTR 02,BUILDOUT","2025-09-10","2025-09-11","8"
"MCP","101371248","Domestic Water Tie In-MCP CTR 02,BUILDOUT","2025-09-10","2025-09-12","16"
"MCP","101372918","PCS Chemical Piping-MCP CTR 02,BUILDOUT","2025-09-10","2025-09-15","24"
"MCP","101337330","Cormaci Outside Trim-MCP CTR 02,BUILDOUT","2025-09-10","2025-09-15","24"
"MCP","101319727","PCS Piping Connects MUWT & Chem Lines-MCP CTR 02,BUILDOUT","2025-09-10","2025-09-18","48"
"MYD","CN-F-Z01.MYD.S24.MCP2.1759","MYD1-Pull,Term,Test & Torque Feeder from MCP-02-BDC to MCP-02-Basin HT Panel B","2025-09-11","2025-09-16","24"
"MYD","CN-F-Z01.MYD.S24.MCP4.1761","MYD1-Pull,Term,Test & Torque Feeder from MCP-04-BDC to MCP-04-Basin HT Panel A","2025-09-11","2025-09-16","24"
"MYD","CN-F-Z02.MYD.S36.LVCR.010","Pull,Term,& Test Security CAT-6 for SFE-MYD-02","2025-09-11","2025-09-17","32"
"MYD","CN-F-Z02.MYD.S36.LVCR.011","Pull,Term,& Test Security CAT-6 for SFE-MYD-03","2025-09-11","2025-09-17","32"
"DCH","CN-F-Z02.DCH.S27.MOD.024","Interconnect Zone 2 DCH West Perimeter Conveyance Modules","2025-09-11","2025-09-18","40"
"DCH","CN-F-Z02.DCH.S27.MOD.035","Install Zone 2 DCH South Perimeter Raceway Modules","2025-09-11","2025-09-18","40"
"EYD","CON-7320","EYD1-Install/Terminate Electrical Yard Security Devices/IDFs,Pull Cable/Terminate Panel","2025-09-14","2025-10-15","184"
"EYD","CON-6110","EYD1-Fitout GPS1","2025-09-14","2025-10-10","160"
"EYD","CON-8715-10","EYD1-Ehouse Misc.Exterior SOG","2025-09-14","2025-09-14","32"
"DCH","808492369","DCH2-South Wall-S27 Modules","2025-09-14","2025-09-19","40"
"DCH","CN-F-Z01.DCH.S18.TB.2000","Complete Pathway to TAPBOX-13TOP in Zone 1 DCH","2025-09-14","2025-09-15","8"
"EYD","CN-F-Z01.EYD.S14.XFMR-E.111","Complete Pathway to EY05-XFMR-E in Zone 1 EYD","2025-09-14","2025-09-22","48"
"EYD","CN-F-Z01.EYD.S14.XFMR-F.112","Complete Pathway to EY05-XFMR-F in Zone 1 EYD","2025-09-14","2025-09-22","48"
"GPS","CN-F-Z01.EYD.S14.SSS-F.399","Pull & Test MV Feeder from EY05-SWGR-SSS-F to EY05-SWGR-GPS","2025-09-14","2025-09-26","80"
"SSS","CN-F-Z01.EYD.S14.SSS-E.439","Term & Torque MV Feeder from EY05-SWGR-SSS-E to EY05-XFMR-E at EY05-XFMR-E","2025-09-14","2025-09-26","80"
"SSS","CN-F-Z01.EYD.S14.SSS-E.518","Term & Torque MV Feeder from EY05-SWGR-SSS-E to EY05-XFMR-E at EY05-SWGR-SSS-E","2025-09-14","2025-09-26","80"
"USS YARD","CX-F-Z01.EYD.S14.L2.663","L2 QC Electrical Install-EY05-SWGR-USS-4","2025-09-14","2025-09-16","16"
"GPS","CN-F-Z02.EYD.S17.EYD.0003","Install Cable Tray at Z2 CT-MV-GEN-GPS3","2025-09-14","2025-09-19","40"
"GPS","CN-F-Z02.EYD.S17.EYD.0005","Install Cable Tray at Z2 CT-MV-GEN-GPS1,GPS2","2025-09-14","2025-09-19","40"
"GPS","CN-F-Z02.EYD.S17.EYD.0008","Install Cable Tray at Z2 CT-LV-GPSB-CTRL","2025-09-14","2025-09-19","40"
"GPS","CN-F-Z02.EYD.S17.EYD.0009","Install Cable Tray at Z2 CT-LV-GPSA-CTRL","2025-09-14","2025-09-19","40"
"EYD","CN-F-Z02.EYD.S29.EYD.0002","Place Grounding Ring in Area Zone 2 EYD RMU USS","2025-09-14","2025-09-19","40"
"EYD","CN-F-Z01.EYD.S29.EYD.0005","Tie Grounding to Foundations in Area Zone 1 EYD Perun","2025-09-14","2025-09-19","40"
"USS YARD","CN-F-Z01.DCH.S18.TB.027","Pull,Term,Test & Torque Feeder from EY05-SWGR-USS-5 to TAPBOX-07BOT","2025-09-14","2025-09-16","16"
"USS YARD","CN-F-Z01.DCH.S18.TB.035","Pull,Term,Test & Torque Feeder from EY05-SWGR-USS-5 to TAPBOX-08TOP","2025-09-14","2025-09-16","16"
"USS YARD","CN-F-Z01.DCH.S18.TB.039","Pull,Term,Test & Torque Feeder from EY05-SWGR-USS-5 to TAPBOX-09TOP","2025-09-14","2025-09-16","16"
"DCH","CN-F-Z01.DCH.S18.TB.050","Complete Pathway to TAPBOX-13BOT in Zone 1 DCH","2025-09-14","2025-09-19","40"
"DCH","CN-F-Z01.DCH.S18.TB.054","Complete Pathway to TAPBOX-14BOT in Zone 1 DCH","2025-09-14","2025-09-19","40"
"DCH","CN-F-Z01.DCH.S18.TB.058","Complete Pathway to TAPBOX-14TOP in Zone 1 DCH","2025-09-14","2025-09-19","40"
"MCP","101325010","PCS Install-MCP CTR 02,BUILDOUT","2025-09-14","2025-09-16","16"
"MYD","CON-015707","MYD1-Set Cooling Tower Structure (CTS)-CTR 01","2025-09-14","2025-09-19","40"
"DCH","A1490","PMS-DCH1-Fiber Ring-Terminate Fiber","2025-09-14","2025-09-19","40"
"EYD","CON-BB-4965","EYD1-S18 USS 480 Tap Box Terms & Torques Group 1","2025-09-14","2025-09-26","80"
"EYD","CON-BB-5085","EYD1-S14 SSS-E to GPS MV/LV Terms & Torques","2025-09-14","2025-09-19","40"
"EYD","CON-BB-5095","EYD1-S14 SSS-F to GPS MV/LV Terms & Torques","2025-09-14","2025-09-19","40"
"MYD","CON-4935","MYD2-Set Horz Steel/Risers/Horz Piping","2025-09-15","2025-10-06","120"
"DCH","CN-F-Z01.DCH.S18.TB.1999","Complete Pathway to TAPBOX-16TOP in Zone 1 DCH","2025-09-15","2025-09-16","8"
"DCH","CN-F-Z01.DCH.S18.TB.2001","Complete Pathway to TAPBOX-15BOT in Zone 1 DCH","2025-09-15","2025-09-16","8"
"USS YARD","CX-F-Z01.EYD.S14.L2.728","L2 QC Electrical Install-EY05-XFMR-USS-26","2025-09-15","2025-09-17","16"
"MYD","CN-F-Z01.MYD.S24.MCP1.1757","MYD1-Pull,Term,Test & Torque Feeder from MCP-01-BDC to MCP-01-HT TRACE CAB","2025-09-15","2025-09-18","24"
"DCH","CN-F-Z01.DCH.S18.TB.062","Complete Pathway to TAPBOX-15TOP in Zone 1 DCH","2025-09-15","2025-09-22","40"
"DCH","CN-F-Z01.DCH.S18.TB.066","Complete Pathway to TAPBOX-16BOT in Zone 1 DCH","2025-09-15","2025-09-22","40"
"Fire Pump House","719318817","Stair Install-FIRE PUMPHOUSE,BUILDOUT","2025-09-15","2025-09-22","40"
"USS YARD","CN-F-Z01.DCH.S18.TB.2030","Pull,Term,Test & Torque Feeder from EY05-SWGR-USS-6 to TAPBOX-11TOP","2025-09-16","2025-09-18","16"
"USS YARD","CN-F-Z01.DCH.S18.TB.2031","Pull,Term,Test & Torque Feeder from EY05-SWGR-USS-6 to TAPBOX-10TOP","2025-09-16","2025-09-18","16"
"USS YARD","CN-F-Z01.DCH.S18.TB.2032","Pull,Term,Test & Torque Feeder from EY05-SWGR-USS-6 to TAPBOX-07TOP","2025-09-16","2025-09-18","16"
"SSS","CN-F-Z01.EYD.S14.MDA-E.201","Pull & Test MV Feeder from EY05-SWGR-SSS-E to EY05-SWGR-RMU-MDA-E","2025-09-16","2025-09-26","64"
"SSS","CN-F-Z01.EYD.S14.USS-2.447","Term & Torque MV Feeder from EY05-SWGR-SSS-F to EY05-SWGR-RMU-2 at EY05-SWGR-RMU-2","2025-09-16","2025-09-30","80"
"SSS","CN-F-Z01.EYD.S14.SSS-F.453","Term & Torque MV Feeder from EY05-SWGR-SSS-F to EY05-SWGR-RMU-5 at EY05-SWGR-RMU-5","2025-09-16","2025-09-30","80"
"SSS","CN-F-Z01.EYD.S14.SSS-F.459","Term & Torque MV Feeder from EY05-SWGR-SSS-F to EY05-SWGR-RMU-8 at EY05-SWGR-RMU-8","2025-09-16","2025-09-30","80"
"SSS","CN-F-Z01.EYD.S14.USS-11.465","Term & Torque MV Feeder from EY05-SWGR-SSS-F to EY05-SWGR-RMU-11 at EY05-SWGR-RMU-11","2025-09-16","2025-09-30","80"
"SSS","CN-F-Z01.EYD.S14.USS-14.471","Term & Torque MV Feeder from EY05-SWGR-SSS-F to EY05-SWGR-RMU-14 at EY05-SWGR-RMU-14","2025-09-16","2025-09-30","80"
"SSS","CN-F-Z01.EYD.S14.USS-17.477","Term & Torque MV Feeder from EY05-SWGR-SSS-F to EY05-SWGR-RMU-17 at EY05-SWGR-RMU-17","2025-09-16","2025-09-30","80"
"SSS","CN-F-Z01.EYD.S14.USS-20.483","Term & Torque MV Feeder from EY05-SWGR-SSS-F to EY05-SWGR-RMU-20 at EY05-SWGR-RMU-20","2025-09-16","2025-09-30","80"
"SSS","CN-F-Z01.EYD.S14.USS-23.489","Term & Torque MV Feeder from EY05-SWGR-SSS-F to EY05-SWGR-RMU-23 at EY05-SWGR-RMU-23","2025-09-16","2025-09-30","80"
"SSS","CN-F-Z01.EYD.S14.USS-26.495","Term & Torque MV Feeder from EY05-SWGR-SSS-F to EY05-SWGR-RMU-26 at EY05-SWGR-RMU-26","2025-09-16","2025-09-30","80"
"SSS","CN-F-Z01.EYD.S14.SSS-F.526","Term & Torque MV Feeder from EY05-SWGR-SSS-F to EY05-SWGR-RMU-2 at EY05-SWGR-SSS-F","2025-09-16","2025-09-30","80"
"SSS","CN-F-Z01.EYD.S14.SSS-F.532","Term & Torque MV Feeder from EY05-SWGR-SSS-F to EY05-SWGR-RMU-5 at EY05-SWGR-SSS-F","2025-09-16","2025-09-30","80"
"SSS","CN-F-Z01.EYD.S14.USS-8.538","Term & Torque MV Feeder from EY05-SWGR-SSS-F to EY05-SWGR-RMU-8 at EY05-SWGR-SSS-F","2025-09-16","2025-09-30","80"
"SSS","CN-F-Z01.EYD.S14.SSS-F.544","Term & Torque MV Feeder from EY05-SWGR-SSS-F to EY05-SWGR-RMU-11 at EY05-SWGR-SSS-F","2025-09-16","2025-09-30","80"
"SSS","CN-F-Z01.EYD.S14.USS-14.550","Term & Torque MV Feeder from EY05-SWGR-SSS-F to EY05-SWGR-RMU-14 at EY05-SWGR-SSS-F","2025-09-16","2025-09-30","80"
"SSS","CN-F-Z01.EYD.S14.USS-17.556","Term & Torque MV Feeder from EY05-SWGR-SSS-F to EY05-SWGR-RMU-17 at EY05-SWGR-SSS-F","2025-09-16","2025-09-30","80"
"SSS","CN-F-Z01.EYD.S14.SSS-F.562","Term & Torque MV Feeder from EY05-SWGR-SSS-F to EY05-SWGR-RMU-20 at EY05-SWGR-SSS-F","2025-09-16","2025-09-30","80"
"SSS","CN-F-Z01.EYD.S14.SSS-F.568","Term & Torque MV Feeder from EY05-SWGR-SSS-F to EY05-SWGR-RMU-23 at EY05-SWGR-SSS-F","2025-09-16","2025-09-30","80"
"SSS","CN-F-Z01.EYD.S14.SSS-F.574","Term & Torque MV Feeder from EY05-SWGR-SSS-F to EY05-SWGR-RMU-26 at EY05-SWGR-SSS-F","2025-09-16","2025-09-30","80"
"USS YARD","CX-F-Z01.EYD.S14.L2.656","L2 QC Electrical Install-EY05-XFMR-USS-2","2025-09-16","2025-09-18","16"
"USS YARD","CX-F-Z01.EYD.S14.L2.659","L2 QC Electrical Install-EY05-XFMR-USS-3","2025-09-16","2025-09-18","16"
"USS YARD","CX-F-Z01.EYD.S14.L2.662","L2 QC Electrical Install-EY05-XFMR-USS-4","2025-09-16","2025-09-18","16"
"USS YARD","CX-F-Z01.EYD.S14.L2.665","L2 QC Electrical Install-EY05-XFMR-USS-5","2025-09-16","2025-09-18","16"
"USS YARD","CX-F-Z01.EYD.S14.L2.666","L2 QC Electrical Install-EY05-SWGR-USS-5","2025-09-16","2025-09-18","16"
"USS YARD","CX-F-Z01.EYD.S14.L2.668","L2 QC Electrical Install-EY05-XFMR-USS-6","2025-09-16","2025-09-18","16"
"USS YARD","CX-F-Z01.EYD.S14.L2.671","L2 QC Electrical Install-EY05-XFMR-USS-7","2025-09-16","2025-09-18","16"
"USS YARD","CX-F-Z01.EYD.S14.L2.674","L2 QC Electrical Install-EY05-XFMR-USS-8","2025-09-16","2025-09-18","16"
"USS YARD","CX-F-Z01.EYD.S14.L2.677","L2 QC Electrical Install-EY05-XFMR-USS-9","2025-09-16","2025-09-18","16"
"USS YARD","CX-F-Z01.EYD.S14.L2.680","L2 QC Electrical Install-EY05-XFMR-USS-10","2025-09-16","2025-09-18","16"
"USS YARD","CX-F-Z01.EYD.S14.L2.683","L2 QC Electrical Install-EY05-XFMR-USS-11","2025-09-16","2025-09-18","16"
"USS YARD","CX-F-Z01.EYD.S14.L2.686","L2 QC Electrical Install-EY05-XFMR-USS-12","2025-09-16","2025-09-18","16"
"USS YARD","CX-F-Z01.EYD.S14.L2.689","L2 QC Electrical Install-EY05-XFMR-USS-13","2025-09-16","2025-09-18","16"
"USS YARD","CX-F-Z01.EYD.S14.L2.692","L2 QC Electrical Install-EY05-XFMR-USS-14","2025-09-16","2025-09-18","16"
"USS YARD","CX-F-Z01.EYD.S14.L2.695","L2 QC Electrical Install-EY05-XFMR-USS-15","2025-09-16","2025-09-18","16"
"USS YARD","CX-F-Z01.EYD.S14.L2.698","L2 QC Electrical Install-EY05-XFMR-USS-16","2025-09-16","2025-09-18","16"
"USS YARD","CX-F-Z01.EYD.S14.L2.701","L2 QC Electrical Install-EY05-XFMR-USS-17","2025-09-16","2025-09-18","16"
"USS YARD","CX-F-Z01.EYD.S14.L2.704","L2 QC Electrical Install-EY05-XFMR-USS-18","2025-09-16","2025-09-18","16"
"USS YARD","CX-F-Z01.EYD.S14.L2.707","L2 QC Electrical Install-EY05-XFMR-USS-19","2025-09-16","2025-09-18","16"
"USS YARD","CX-F-Z01.EYD.S14.L2.710","L2 QC Electrical Install-EY05-XFMR-USS-20","2025-09-16","2025-09-18","16"
"USS YARD","CX-F-Z01.EYD.S14.L2.713","L2 QC Electrical Install-EY05-XFMR-USS-21","2025-09-16","2025-09-18","16"
"USS YARD","CX-F-Z01.EYD.S14.L2.716","L2 QC Electrical Install-EY05-XFMR-USS-22","2025-09-16","2025-09-18","16"
"USS YARD","CX-F-Z01.EYD.S14.L2.719","L2 QC Electrical Install-EY05-XFMR-USS-23","2025-09-16","2025-09-18","16"
"USS YARD","CX-F-Z01.EYD.S14.L2.722","L2 QC Electrical Install-EY05-XFMR-USS-24","2025-09-16","2025-09-18","16"
"MYD","CN-F-Z01.MYD.S24.MCP2.1760","MYD1-Pull,Term,Test & Torque Feeder from MCP-02-BDC to MCP-02-HT TRACE CAB","2025-09-16","2025-09-19","24"
"MYD","CN-F-Z01.MYD.S24.MCP4.1762","MYD1-Pull,Term,Test & Torque Feeder from MCP-04-BDC to MCP-04-Basin HT Panel B","2025-09-16","2025-09-19","24"
"MCP","790333693","CT Drains & Blowdowns-MCP CTR 01,BUILDOUT","2025-09-16","2025-09-26","64"
"MCP","101361325","CTS Assembly-MCP CTR 02,BUILDOUT","2025-09-16","2025-09-25","56"
"USS YARD","CN-F-Z02.EYD.S18.HA39.44.0001","Install Cable Tray from Zone 2 USS 1-4 to Rows 39-44","2025-09-17","2025-09-22","24"
"EYD","CN-F-Z02.EYD.USS.05-8","EYD Zone 2 USS 05-08 Install Trestle Steel","2025-09-17","2025-09-24","40"
"MCP","790398639","CTS Electrical Conduit-MCP CTR 01,BUILDOUT","2025-09-17","2025-09-18","8"
"DCH","A1340","PMS-DCH1-Shiraz Bus Plugs-Pull Wire @ SPD2","2025-09-17","2025-09-24","40"
"EYD","CON-BB-4565","EYD1-RMU to SSS-E AC Pulls","2025-09-17","2025-09-25","48"
"EYD","CON-BB-4595","EYD1-RMU to SSS-F MV Pulls","2025-09-17","2025-09-29","64"
"EYD","CON-BB-5535","EYD1-RMU to SSS-E MV Terms & Torques","2025-09-17","2025-10-06","104"
"DCH","CON-7865","DCH1-Fiber Pulls-Aisles to MDA Aisles","2025-09-18","2025-10-30","240"
"DCH","CON-6350","DCH1-BMS/PMS+Sec+Device install (breakout & detail)(MDA 1)","2025-09-18","2025-09-22","16"
"MYD","CON-114005","MYD1-Set Cooling Tower Structure (CTS)-CTR 06","2025-09-18","2025-09-22","16"
"DCH","CN-F-Z01.DCH.S18.TB.1998","Complete Pathway to TAPBOX-17TOP in Zone 1 DCH","2025-09-18","2025-09-19","8"
"DCH","CN-F-Z01.DCH.S18.TB.2002","Complete Pathway to TAPBOX-17BOT in Zone 1 DCH","2025-09-18","2025-09-19","8"
"DCH","CN-F-Z01.DCH.S18.TB.2003","Complete Pathway to TAPBOX-18BOT in Zone 1 DCH","2025-09-18","2025-09-19","8"
"USS YARD","CX-F-Z01.EYD.S14.L2.669","L2 QC Electrical Install-EY05-SWGR-USS-6","2025-09-18","2025-09-22","16"
"DCH","CN-F-Z01.DCH.S39.HA-01.0002","Install VESDA Panel for Inside Hot Aisle Loop SVH HA N-1 in Room 1-500-Zone 1 DCH","2025-09-18","2025-09-22","16"
"DCH","CN-F-Z01.DCH.S39.HA-02.0002","Install VESDA Panel for Inside Hot Aisle Loop SVH HA N-2 in Room 1-500-Zone 1 DCH","2025-09-18","2025-09-22","16"
"DCH","CN-F-Z01.DCH.S39.HA-03.0002","Install VESDA Panel for Inside Hot Aisle Loop SVH HA N-3 in Room 1-500-Zone 1 DCH","2025-09-18","2025-09-22","16"
"MYD","CN-F-Z01.MYD.S24.MCP6.1764","MYD1-Pull,Term,Test & Torque Feeder from MCP-06-BDC to MCP-06-Basin HT Panel A","2025-09-18","2025-09-23","24"
"USS YARD","CN-F-Z01.DCH.S18.TB.031","Pull,Term,Test & Torque Feeder from EY05-SWGR-USS-7 to TAPBOX-08BOT","2025-09-18","2025-09-22","16"
"USS YARD","CN-F-Z01.DCH.S18.TB.043","Pull,Term,Test & Torque Feeder from EY05-SWGR-USS-7 to TAPBOX-10BOT","2025-09-18","2025-09-22","16"
"USS YARD","CN-F-Z01.DCH.S18.TB.047","Pull,Term,Test & Torque Feeder from EY05-SWGR-USS-7 to TAPBOX-12TOP","2025-09-18","2025-09-22","16"
"DCH","CN-F-Z01.DCH.S18.TB.070","Complete Pathway to TAPBOX-18TOP in Zone 1 DCH","2025-09-18","2025-09-25","40"
"DCH","CN-F-Z02.DCH.S27.MOD.023","Interconnect Zone 2 DCH South Perimeter Conveyance Modules","2025-09-18","2025-09-25","40"
"DCH","CN-F-Z02.DCH.S27.MOD.026","Interconnect Zone 2 DCH Northwest Corner Conveyance Modules","2025-09-18","2025-09-25","40"
"DCH","CN-F-Z02.DCH.S27.MOD.034","Install Zone 2 DCH East Perimeter Raceway Modules","2025-09-18","2025-09-25","40"
"MCP","790359581","CT Mount Panel Skid-MCP CTR 01,BUILDOUT","2025-09-18","2025-09-22","16"
"MYD","CON-114835","MYD1-CTB & MUP Lighting & interconnects","2025-09-21","2025-09-26","40"
"DCH","383445168","DCH2-East Wall-S27 Modules","2025-09-21","2025-09-26","40"
"DCH","CN-F-Z01.DCH.S18.TB.2006","Complete Pathway to TAPBOX-19TOP in Zone 1 DCH","2025-09-21","2025-09-22","8"
"GPS","CN-F-Z01.EYD.S14.GPS.436","Term & Torque MV Feeder from EY05-SWGR-SSS-E to EY05-SWGR-GPS at EY05-SWGR-GPS","2025-09-21","2025-10-03","80"
"GPS","CN-F-Z01.EYD.S14.SSS-F.438","Term & Torque MV Feeder from EY05-SWGR-GPS to EY05-Load Bank at EY05-Load Bank","2025-09-21","2025-09-24","24"
"GPS","CN-F-Z01.EYD.S14.SSS-E.515","Term & Torque MV Feeder from EY05-SWGR-SSS-E to EY05-SWGR-GPS at EY05-SWGR-SSS-E","2025-09-21","2025-10-03","80"
"GPS","CN-F-Z01.EYD.S14.GPS.517","Term & Torque MV Feeder from EY05-SWGR-GPS to EY05-Load Bank at EY05-SWGR-GPS","2025-09-21","2025-09-24","24"
"DCH","CN-F-Z02.DCH.S29.1-550.0010","QC Inspect Systems Raceway in Area 1-550-Zone 2 DCH","2025-09-21","2025-09-22","8"
"MYD","CN-F-Z01.MYD.S24.MCP4.1763","MYD1-Pull,Term,Test & Torque Feeder from MCP-04-BDC to MCP-04-HT TRACE CAB","2025-09-21","2025-09-24","24"
"DCH","CN-F-Z02.MYD.S17.DB.0005","Trench,Place,Encase & Backfill Telecom Ductbank from Vault MYD Z2 MCP-07 to Vault DCH Pullbox","2025-09-21","2025-09-26","40"
"SSS","CN-F-Z02.EYD.S17.EYD.0001","Install Cable Tray at Z2 CT-MV-SSSA-USS1,USS2","2025-09-21","2025-09-26","40"
"GPS","CN-F-Z02.EYD.S17.EYD.0002","Install Cable Tray at Z2 CT-MV-GPS-SSSA","2025-09-21","2025-09-26","40"
"EYD","CN-F-Z02.EYD.S29.EYD.0003","Place Grounding Ring in Area Zone 2 EYD E Houses","2025-09-21","2025-09-26","40"
"EYD","CN-F-Z02.EYD.S29.EYD.0006","Tie Grounding Ring to Foundations in Area Zone 2 EYD RMU USS","2025-09-21","2025-09-26","40"
"MYD","CN-F-Z01.MYD.S29.MYD.0001","Place Grounding Ring in Area Zone 1 MYD Booster Pump Equip.","2025-09-21","2025-09-26","40"
"MYD","CN-F-Z01.MYD.S29.MYD.0002","Place Grounding Ring in Area Zone 1 MYD Fire Pump Equip.","2025-09-21","2025-09-26","40"
"MYD","CN-F-Z01.MYD.S29.MYD.0003","Place Grounding Ring in Area Z1 MYD DC Grounding Loop (Inc. MWT's,MUP & CTB & link to DC Gro. Ring)","2025-09-21","2025-09-26","40"
"EYD","CN-F-Z01.EYD.S36.ISPF.001","Pull,Term & Test Fiber from SE to SFE-EYD-01","2025-09-21","2025-09-24","24"
"DCH","CN-F-Z01.DCH.S18.TB.074","Complete Pathway to TAPBOX-19BOT in Zone 1 DCH","2025-09-21","2025-09-26","40"
"DCH","CN-F-Z01.DCH.S18.TB.078","Complete Pathway to TAPBOX-20BOT in Zone 1 DCH","2025-09-21","2025-09-26","40"
"DCH","CN-F-Z01.DCH.S18.TB.082","Complete Pathway to TAPBOX-20TOP in Zone 1 DCH","2025-09-21","2025-09-26","40"
"GPS","CN-F-Z01.EYD.S14.CW.3357","Pull,Term,Test & Torque Feeder from EY05-SWGR-GPS (Control) to EY05-SWGR-SSS-E (Control)","2025-09-21","2025-09-26","40"
"MCP","588376909","Set MCP-MCP CTR 04,BUILDOUT","2025-09-21","2025-09-23","16"
"MCP","790314372","CTS Stair install-MCP CTR 01,BUILDOUT","2025-09-21","2025-09-25","32"
"MCP","790396916","CT Unload-MCP CTR 01,BUILDOUT","2025-09-21","2025-09-22","8"
"DCH","998296553","DCH1-Fire Riser 1-521-Hang,Tape,& Finish Drywall","2025-09-21","2025-09-26","40"
"MYD","CON-017061","MYD1-Mobilize (Crane B) & Stage Cooling Tower-CTR 01/Set & Anchor Cooling Tower-CTR 01","2025-09-21","2025-09-26","40"
"EYD","CON-BB-5005","EYD1-S14 Gen Trays Group 1","2025-09-21","2025-09-23","16"
"DCH","CON-6435","DCH1-BMS/PMS+Sec+Device install (breakout & detail)(MDA 2)","2025-09-22","2025-09-24","16"
"MYD","CON-8715-23","MYD2-S25 SOG","2025-09-22","2025-10-02","64"
"USS YARD","CN-F-Z01.DCH.S18.TB.2033","Pull,Term,Test & Torque Feeder from EY05-SWGR-USS-8 to TAPBOX-09BOT","2025-09-22","2025-09-24","16"
"USS YARD","CN-F-Z01.DCH.S18.TB.2034","Pull,Term,Test & Torque Feeder from EY05-SWGR-USS-8 to TAPBOX-11BOT","2025-09-22","2025-09-24","16"
"USS YARD","CN-F-Z01.DCH.S18.TB.2035","Pull,Term,Test & Torque Feeder from EY05-SWGR-USS-8 to TAPBOX-12BOT","2025-09-22","2025-09-24","16"
"SSS","CN-F-Z01.EYD.S14.XFMR-F.200","Pull & Test MV Feeder from EY05-SWGR-SSS-F to EY05-XFMR-F","2025-09-22","2025-09-29","40"
"USS YARD","CX-F-Z01.EYD.S14.L2.672","L2 QC Electrical Install-EY05-SWGR-USS-7","2025-09-22","2025-09-24","16"
"DCH","CN-F-Z01.DCH.S39.HA-01.0001","Install VESDA Panel for Inside Hot Aisle Loop SVH HA S-1 in Room 1-500-Zone 1 DCH","2025-09-22","2025-09-24","16"
"DCH","CN-F-Z01.DCH.S39.HA-02.0001","Install VESDA Panel for Inside Hot Aisle Loop SVH HA S-2 in Room 1-500-Zone 1 DCH","2025-09-22","2025-09-24","16"
"DCH","CN-F-Z01.DCH.S39.HA-03.0001","Install VESDA Panel for Inside Hot Aisle Loop SVH HA S-3 in Room 1-500-Zone 1 DCH","2025-09-22","2025-09-24","16"
"DCH","CN-F-Z02.DCH.S39.HA-23.0002","Install VESDA Panel for Inside Hot Aisle Loop SVH HA N-23 in Room 1-550-Zone 2 DCH","2025-09-22","2025-09-24","16"
"DCH","CN-F-Z02.DCH.S39.HA-24.0002","Install VESDA Panel for Inside Hot Aisle Loop SVH HA N-24 in Room 1-550-Zone 2 DCH","2025-09-22","2025-09-24","16"
"DCH","CN-F-Z02.DCH.S39.HA-25.0002","Install VESDA Panel for Inside Hot Aisle Loop SVH HA N-25 in Room 1-550-Zone 2 DCH","2025-09-22","2025-09-24","16"
"MCP","790313652","CT Build an Install-MCP CTR 01,BUILDOUT","2025-09-22","2025-09-29","40"
"MCP","588324490","PCS+PCB Unload-MCP CTR 04,BUILDOUT","2025-09-22","2025-09-23","8"
"Fire Pump House","719395119","Finish Underground Rough In-FIRE PUMPHOUSE,BUILDOUT","2025-09-22","2025-09-25","24"
"Fire Pump House","719323554","Lighting on tank-FIRE PUMPHOUSE,BUILDOUT","2025-09-22","2025-09-29","40"
"MYD","CN-F-Z01.MYD.S24.MCP6.1765","MYD1-Pull,Term,Test & Torque Feeder from MCP-06-BDC to MCP-06-Basin HT Panel B","2025-09-23","2025-09-26","24"
"MCP","588394989","Cormaci Outside Trim-MCP CTR 04,BUILDOUT","2025-09-23","2025-09-26","24"
"MCP","588305999","PCS Chemical Piping-MCP CTR 04,BUILDOUT","2025-09-23","2025-09-26","24"
"MCP","588370187","MCP Plumbing/Mechanical Interconnects-MCP CTR 04,BUILDOUT","2025-09-23","2025-10-14","120"
"MCP","588317168","Roofing Seal-MCP CTR 04,BUILDOUT","2025-09-23","2025-09-24","8"
"MCP","588380300","Domestic Water Tie In-MCP CTR 04,BUILDOUT","2025-09-23","2025-09-25","16"
"MCP","588363641","Set PCS+PCB-MCP CTR 04,BUILDOUT","2025-09-23","2025-09-25","16"
"MCP","588303271","PCS Piping Connects MUWT & Chem Lines-MCP CTR 04,BUILDOUT","2025-09-23","2025-10-01","48"
"EYD","CON-BB-5015","EYD1-S14 Gen Trays Group 2","2025-09-23","2025-09-25","16"
"DCH","CON-6605","DCH1-BMS/PMS+Sec+Device install (breakout & detail) HA 01","2025-09-24","2025-09-26","16"
"DCH","CN-F-Z01.DCH.S18.TB.2005","Complete Pathway to TAPBOX-22TOP in Zone 1 DCH","2025-09-24","2025-09-25","8"
"DCH","CN-F-Z01.DCH.S18.TB.2007","Complete Pathway to TAPBOX-21BOT in Zone 1 DCH","2025-09-24","2025-09-25","8"
"USS YARD","CX-F-Z01.EYD.S14.L2.675","L2 QC Electrical Install-EY05-SWGR-USS-8","2025-09-24","2025-09-26","16"
"DCH","CN-F-Z02.DCH.S29.1-550.0012","QC Inspect Electrical In-Wall in 1-550-Zone 2 DCH","2025-09-24","2025-09-25","8"
"DCH","CN-F-Z02.DCH.S39.HA-23.0001","Install VESDA Panel for Inside Hot Aisle Loop SVH HA S-23 in Room 1-550-Zone 2 DCH","2025-09-24","2025-09-26","16"
"DCH","CN-F-Z02.DCH.S39.HA-24.0001","Install VESDA Panel for Inside Hot Aisle Loop SVH HA S-24 in Room 1-550-Zone 2 DCH","2025-09-24","2025-09-26","16"
"DCH","CN-F-Z02.DCH.S39.HA-25.0001","Install VESDA Panel for Inside Hot Aisle Loop SVH HA S-25 in Room 1-550-Zone 2 DCH","2025-09-24","2025-09-26","16"
"DCH","CN-F-Z01.DCH.S36.DCH.0001","Place,Anchor,Fit-Out & Ground CCA-1 in Zone 1 DCH","2025-09-24","2025-09-25","8"
"USS YARD","CN-F-Z02.EYD.S18.HA45.50.0001","Install Cable Tray from Zone 2 USS 5-8 to Rows 45-50","2025-09-24","2025-09-29","24"
"EYD","CN-F-Z01.EYD.S36.L2.001","L2 QC Telecom Install-SFE-EYD-01","2025-09-24","2025-09-26","16"
"USS YARD","CN-F-Z01.DCH.S18.TB.051","Pull,Term,Test & Torque Feeder from EY05-SWGR-USS-9 to TAPBOX-13BOT","2025-09-24","2025-09-26","16"
"USS YARD","CN-F-Z01.DCH.S18.TB.059","Pull,Term,Test & Torque Feeder from EY05-SWGR-USS-9 to TAPBOX-14TOP","2025-09-24","2025-09-26","16"
"USS YARD","CN-F-Z01.DCH.S18.TB.063","Pull,Term,Test & Torque Feeder from EY05-SWGR-USS-9 to TAPBOX-15TOP","2025-09-24","2025-09-26","16"
"DCH","CN-F-Z01.DCH.S18.TB.086","Complete Pathway to TAPBOX-21TOP in Zone 1 DCH","2025-09-24","2025-10-01","40"
"DCH","CN-F-Z01.DCH.S18.TB.090","Complete Pathway to TAPBOX-22BOT in Zone 1 DCH","2025-09-24","2025-10-01","40"
"EYD","CN-F-Z02.EYD.USS.09-17","EYD Zone 2 USS 09-12 Install Trestle Steel","2025-09-24","2025-10-01","40"
"MCP","101316921","CTS Electrical Conduit-MCP CTR 02,BUILDOUT","2025-09-24","2025-09-25","8"
"DCH","A1370","PMS-DCH1-Shiraz Bus Plugs-Pull Wire @ SPD5","2025-09-24","2025-10-01","40"
"DCH","019021084","DCH2-Fire Riser 1-571-Frame Walls & Ceilings","2025-09-25","2025-09-29","16"
"DCH","CN-F-Z01.DCH.S18.TB.2004","Complete Pathway to TAPBOX-23TOP in Zone 1 DCH","2025-09-25","2025-09-26","8"
"DCH","CN-F-Z01.DCH.S18.TB.2008","Complete Pathway to TAPBOX-23BOT in Zone 1 DCH","2025-09-25","2025-09-26","8"
"DCH","CN-F-Z01.DCH.S18.TB.2009","Complete Pathway to TAPBOX-24BOT in Zone 1 DCH","2025-09-25","2025-09-26","8"
"DCH","CN-F-Z01.DCH.S29.1-500.0009","QC Inspect Branch Raceway in Area 1-500-Zone 1 DCH","2025-09-25","2025-09-26","8"
"DCH","CN-F-Z01.DCH.S29.1-500.0010","QC Inspect Systems Raceway in Area 1-500-Zone 1 DCH","2025-09-25","2025-09-26","8"
"DCH","CN-F-Z01.DCH.S39.1-500.0025","Install Wall Drops for VESDA Loop S-1 in Room 1-500-Zone 1 DCH","2025-09-25","2025-09-26","8"
"DCH","CN-F-Z01.DCH.S39.1-500.0026","Install Wall Drops for VESDA Loop S-2 in Room 1-500-Zone 1 DCH","2025-09-25","2025-09-26","8"
"DCH","CN-F-Z01.DCH.S39.1-500.0027","Install Wall Drops for VESDA Loop S-3 in Room 1-500-Zone 1 DCH","2025-09-25","2025-09-26","8"
"DCH","CN-F-Z01.DCH.S39.1-500.0028","Install Wall Drops for VESDA Loop S-4 in Room 1-500-Zone 1 DCH","2025-09-25","2025-09-26","8"
"DCH","CN-F-Z01.DCH.S39.1-500.0029","Install Wall Drops for VESDA Loop S-5 in Room 1-500-Zone 1 DCH","2025-09-25","2025-09-26","8"
"DCH","CN-F-Z01.DCH.S39.1-500.0030","Install Wall Drops for VESDA Loop S-6 in Room 1-500-Zone 1 DCH","2025-09-25","2025-09-26","8"
"DCH","CN-F-Z01.DCH.S39.1-500.0031","Install Wall Drops for VESDA Loop S-7 in Room 1-500-Zone 1 DCH","2025-09-25","2025-09-26","8"
"DCH","CN-F-Z01.DCH.S39.1-500.0032","Install Wall Drops for VESDA Loop S-8 in Room 1-500-Zone 1 DCH","2025-09-25","2025-09-26","8"
"DCH","CN-F-Z01.DCH.S39.1-500.0033","Install Wall Drops for VESDA Loop S-9 in Room 1-500-Zone 1 DCH","2025-09-25","2025-09-26","8"
"DCH","CN-F-Z01.DCH.S39.1-500.0034","Install Wall Drops for VESDA Loop S-10 in Room 1-500-Zone 1 DCH","2025-09-25","2025-09-26","8"
"DCH","CN-F-Z01.DCH.S39.1-500.0035","Install Wall Drops for VESDA Loop S-11 in Room 1-500-Zone 1 DCH","2025-09-25","2025-09-26","8"
"DCH","CN-F-Z01.DCH.S39.1-500.0036","Install Wall Drops for VESDA Loop N-1 in Room 1-500-Zone 1 DCH","2025-09-25","2025-09-26","8"
"DCH","CN-F-Z01.DCH.S39.1-500.0037","Install Wall Drops for VESDA Loop N-2 in Room 1-500-Zone 1 DCH","2025-09-25","2025-09-26","8"
"DCH","CN-F-Z01.DCH.S39.1-500.0038","Install Wall Drops for VESDA Loop N-3 in Room 1-500-Zone 1 DCH","2025-09-25","2025-09-26","8"
"DCH","CN-F-Z01.DCH.S39.1-500.0039","Install Wall Drops for VESDA Loop N-4 in Room 1-500-Zone 1 DCH","2025-09-25","2025-09-26","8"
"DCH","CN-F-Z01.DCH.S39.1-500.0040","Install Wall Drops for VESDA Loop N-5 in Room 1-500-Zone 1 DCH","2025-09-25","2025-09-26","8"
"DCH","CN-F-Z01.DCH.S39.1-500.0041","Install Wall Drops for VESDA Loop N-6 in Room 1-500-Zone 1 DCH","2025-09-25","2025-09-26","8"
"DCH","CN-F-Z01.DCH.S39.1-500.0042","Install Wall Drops for VESDA Loop N-7 in Room 1-500-Zone 1 DCH","2025-09-25","2025-09-26","8"
"DCH","CN-F-Z01.DCH.S39.1-500.0043","Install Wall Drops for VESDA Loop N-8 in Room 1-500-Zone 1 DCH","2025-09-25","2025-09-26","8"
"DCH","CN-F-Z01.DCH.S39.1-500.0044","Install Wall Drops for VESDA Loop N-9 in Room 1-500-Zone 1 DCH","2025-09-25","2025-09-26","8"
"DCH","CN-F-Z01.DCH.S39.1-500.0045","Install Wall Drops for VESDA Loop N-10 in Room 1-500-Zone 1 DCH","2025-09-25","2025-09-26","8"
"DCH","CN-F-Z01.DCH.S39.1-500.0046","Install Wall Drops for VESDA Loop N-11 in Room 1-500-Zone 1 DCH","2025-09-25","2025-09-26","8"
"USS YARD","CN-F-Z01.FSA.S33.MDA-F.2669","Pull,Term,Test & Torque Feeder from EY05-SWGR-USS-MDA-F to BDC F-1","2025-09-25","2025-10-02","40"
"USS YARD","CN-F-Z01.FSA.S29.MDA-F.2712","Pull,Term,Test & Torque Feeder from EY05-SWGR-USS-MDA-F to BDC F-2","2025-09-25","2025-10-02","40"
"DCH","CN-F-Z01.DCH.S18.TB.094","Complete Pathway to TAPBOX-24TOP in Zone 1 DCH","2025-09-25","2025-10-02","40"
"DCH","CN-F-Z02.DCH.S27.MOD.022","Interconnect Zone 2 DCH East Perimeter Conveyance Modules","2025-09-25","2025-10-02","40"
"DCH","CN-F-Z02.DCH.S27.MOD.028","Interconnect Zone 2 DCH Southwest Corner Conveyance Modules","2025-09-25","2025-10-02","40"
"MCP","101393838","SSC Steel unload-MCP CTR 02,BUILDOUT","2025-09-25","2025-09-26","8"
"Fire Pump House","719337839","Panel Setting-FIRE PUMPHOUSE,BUILDOUT","2025-09-25","2025-09-29","16"
"MCP","101399101","CTS Piping,grading,handrail-MCP CTR 02,BUILDOUT","2025-09-25","2025-10-07","64"
"MCP","790398837","Final Cooling Tower Connections-Condenser / Sweeper Piping Install-MCP CTR 01,BUILDOUT","2025-09-25","2025-09-29","16"
"MCP","588302481","PCS Install-MCP CTR 04,BUILDOUT","2025-09-25","2025-09-29","16"
"EYD","CON-81077","EYD2-Set Equipment USS-51-RMU (Schneider)","2025-09-25","2025-09-30","40"
"EYD","CON-8357","EYD2-Set Equipment USS-27-RMU (Schneider)","2025-09-25","2025-09-30","40"
"EYD","CON-8387","EYD2-Set Equipment USS-28-RMU (Schneider)","2025-09-25","2025-09-30","40"
"EYD","CON-8417","EYD2-Set Equipment USS-29-RMU (Schneider)","2025-09-25","2025-09-30","40"
"EYD","CON-BB-4575","EYD1--RMU to SSS-E DC Pulls","2025-09-25","2025-10-03","48"
"EYD","CON-BB-5025","EYD1-S14 Gen Trays Group 3","2025-09-25","2025-09-29","16"
"DCH","CON-6695","DCH1-BMS/PMS+Sec+Device install (breakout & detail) HA 02","2025-09-28","2025-09-30","16"
"USS YARD","CN-F-Z01.DCH.S18.TB.2036","Pull,Term,Test & Torque Feeder from EY05-SWGR-USS-10 to TAPBOX-17TOP","2025-09-28","2025-09-30","16"
"USS YARD","CN-F-Z01.DCH.S18.TB.2037","Pull,Term,Test & Torque Feeder from EY05-SWGR-USS-10 to TAPBOX-16TOP","2025-09-28","2025-09-30","16"
"USS YARD","CN-F-Z01.DCH.S18.TB.2038","Pull,Term,Test & Torque Feeder from EY05-SWGR-USS-10 to TAPBOX-13TOP","2025-09-28","2025-09-30","16"
"SSS","CN-F-Z01.EYD.S14.MDA-F.204","Pull & Test MV Feeder from EY05-SWGR-SSS-F to EY05-SWGR-RMU-MDA-F","2025-09-28","2025-10-07","56"
"GPS","CN-F-Z01.EYD.S14.SSS-F.594","Term & Torque MV Feeder from EY05-SWGR-SSS-F to EY05-SWGR-GPS at EY05-SWGR-GPS","2025-09-28","2025-10-10","80"
"GPS","CN-F-Z01.EYD.S14.SSS-F.607","Term & Torque MV Feeder from EY05-SWGR-SSS-F to EY05-SWGR-GPS at EY05-SWGR-SSS-F","2025-09-28","2025-10-10","80"
"USS YARD","CX-F-Z01.EYD.S14.L2.678","L2 QC Electrical Install-EY05-SWGR-USS-9","2025-09-28","2025-09-30","16"
"DCH","CN-F-Z01.DCH.S39.1-500.0047","Install VESDA Panel for Overhead Deck Loop S-1 in Room 1-500-Zone 1 DCH","2025-09-28","2025-09-29","8"
"DCH","CN-F-Z01.DCH.S39.1-500.0048","Install VESDA Panel for Overhead Deck Loop S-2 in Room 1-500-Zone 1 DCH","2025-09-28","2025-09-29","8"
"DCH","CN-F-Z01.DCH.S39.1-500.0049","Install VESDA Panel for Overhead Deck Loop S-3 in Room 1-500-Zone 1 DCH","2025-09-28","2025-09-29","8"
"DCH","CN-F-Z01.DCH.S39.1-500.0050","Install VESDA Panel for Overhead Deck Loop S-4 in Room 1-500-Zone 1 DCH","2025-09-28","2025-09-29","8"
"DCH","CN-F-Z01.DCH.S39.1-500.0051","Install VESDA Panel for Overhead Deck Loop S-5 in Room 1-500-Zone 1 DCH","2025-09-28","2025-09-29","8"
"DCH","CN-F-Z01.DCH.S39.1-500.0052","Install VESDA Panel for Overhead Deck Loop S-6 in Room 1-500-Zone 1 DCH","2025-09-28","2025-09-29","8"
"DCH","CN-F-Z01.DCH.S39.1-500.0053","Install VESDA Panel for Overhead Deck Loop S-7 in Room 1-500-Zone 1 DCH","2025-09-28","2025-09-29","8"
"DCH","CN-F-Z01.DCH.S39.1-500.0054","Install VESDA Panel for Overhead Deck Loop S-8 in Room 1-500-Zone 1 DCH","2025-09-28","2025-09-29","8"
"DCH","CN-F-Z01.DCH.S39.1-500.0055","Install VESDA Panel for Overhead Deck Loop S-9 in Room 1-500-Zone 1 DCH","2025-09-28","2025-09-29","8"
"DCH","CN-F-Z01.DCH.S39.1-500.0056","Install VESDA Panel for Overhead Deck Loop S-10 in Room 1-500-Zone 1 DCH","2025-09-28","2025-09-29","8"
"DCH","CN-F-Z01.DCH.S39.1-500.0057","Install VESDA Panel for Overhead Deck Loop S-11 in Room 1-500-Zone 1 DCH","2025-09-28","2025-09-29","8"
"DCH","CN-F-Z01.DCH.S39.1-500.0058","Install VESDA Panel for Overhead Deck Loop N-1 in Room 1-500-Zone 1 DCH","2025-09-28","2025-09-29","8"
"DCH","CN-F-Z01.DCH.S39.1-500.0059","Install VESDA Panel for Overhead Deck Loop N-2 in Room 1-500-Zone 1 DCH","2025-09-28","2025-09-29","8"
"DCH","CN-F-Z01.DCH.S39.1-500.0060","Install VESDA Panel for Overhead Deck Loop N-3 in Room 1-500-Zone 1 DCH","2025-09-28","2025-09-29","8"
"DCH","CN-F-Z01.DCH.S39.1-500.0061","Install VESDA Panel for Overhead Deck Loop N-4 in Room 1-500-Zone 1 DCH","2025-09-28","2025-09-29","8"
"DCH","CN-F-Z01.DCH.S39.1-500.0062","Install VESDA Panel for Overhead Deck Loop N-5 in Room 1-500-Zone 1 DCH","2025-09-28","2025-09-29","8"
"DCH","CN-F-Z01.DCH.S39.1-500.0063","Install VESDA Panel for Overhead Deck Loop N-6 in Room 1-500-Zone 1 DCH","2025-09-28","2025-09-29","8"
"DCH","CN-F-Z01.DCH.S39.1-500.0064","Install VESDA Panel for Overhead Deck Loop N-7 in Room 1-500-Zone 1 DCH","2025-09-28","2025-09-29","8"
"DCH","CN-F-Z01.DCH.S39.1-500.0065","Install VESDA Panel for Overhead Deck Loop N-8 in Room 1-500-Zone 1 DCH","2025-09-28","2025-09-29","8"
"DCH","CN-F-Z01.DCH.S39.1-500.0066","Install VESDA Panel for Overhead Deck Loop N-9 in Room 1-500-Zone 1 DCH","2025-09-28","2025-09-29","8"
"DCH","CN-F-Z01.DCH.S39.1-500.0067","Install VESDA Panel for Overhead Deck Loop N-10 in Room 1-500-Zone 1 DCH","2025-09-28","2025-09-29","8"
"DCH","CN-F-Z01.DCH.S39.1-500.0068","Install VESDA Panel for Overhead Deck Loop N-11 in Room 1-500-Zone 1 DCH","2025-09-28","2025-09-29","8"
"DCH","CN-F-Z02.DCH.S36.DCH.0002","Place,Anchor,Fit-Out & Ground CCA-5 in Zone 2 DCH","2025-09-28","2025-09-29","8"
"DCH","CN-F-Z01.DCH.S36.DCH.0004","Place,Anchor,Fit-Out & Ground CCB-1 in Zone 1 DCH","2025-09-28","2025-09-29","8"
"SSS","CN-F-Z02.EYD.S14.SSS-E.1075","Pull & Test MV Feeder from SUBE-BUS-E to EY06-SWGR-SSS-E","2025-09-28","2025-10-10","80"
"GPS","CN-F-Z02.EYD.S14.GPS.1177","Pull & Test MV Feeder from EY06-SWGR-GPS to EY06-Load Bank","2025-09-28","2025-10-10","80"
"Loading Dock","CN-F-Z01.FSA.S29.DISC.2373","Place,Anchor & Ground Electrical Disconnect for DF F01 in LOADING DOCK 1-200","2025-09-28","2025-09-29","8"
"Loading Dock","CN-F-Z01.FSA.S29.DISC.2387","Place,Anchor & Ground Electrical Disconnect for EUH F07 in LOADING DOCK 1-200","2025-09-28","2025-09-29","8"
"Loading Dock","CN-F-Z01.FSA.S29.DISC.2388","Place,Anchor & Ground Electrical Disconnect for EUH F08 in LOADING DOCK 1-200","2025-09-28","2025-09-29","8"
"Loading Dock","CN-F-Z01.FSA.S29.DISC.2389","Place,Anchor & Ground Electrical Disconnect for EUH F09 in LOADING DOCK 1-200","2025-09-28","2025-09-29","8"
"Loading Dock","CN-F-Z01.FSA.S29.DISC.2390","Place,Anchor & Ground Electrical Disconnect for EUH F10 in LOADING DOCK 1-200","2025-09-28","2025-09-29","8"
"MYD","CN-F-Z01.MYD.S24.MCP6.1766","MYD1-Pull,Term,Test & Torque Feeder from MCP-06-BDC to MCP-06-HT TRACE CAB","2025-09-28","2025-10-01","24"
"DCH","CN-F-Z02.MYD.S17.DB.0006","Trench,Place,Encase & Backfill Telecom Ductbank from Vault MYD Z2 MCP-09 to Vault DCH Pullbox","2025-09-28","2025-10-03","40"
"EYD","CN-F-Z02.EYD.S29.EYD.0004","Place Grounding Ring in Area Zone 2 EYD Gens (1 to 17)","2025-09-28","2025-10-03","40"
"EYD","CN-F-Z02.EYD.S29.EYD.0007","Tie Grounding Ring to Foundations in Area Zone 2 EYD E Houses","2025-09-28","2025-10-03","40"
"MYD","CN-F-Z01.MYD.S29.MYD.0004","Tie Grounding Ring to Foundations in Area Zone 1 MYD Booster Pump Equip","2025-09-28","2025-09-29","8"
"MYD","CN-F-Z01.MYD.S29.MYD.0005","Tie Grounding Ring to Foundations in Area Zone 1 MYD Fire Pump Equip","2025-09-28","2025-09-29","8"
"MYD","CN-F-Z01.MYD.S29.MYD.0006","Tie Grounding Ring to Foundations in Area Z1 MYD DC Grounding Loop (Inc. MWT's,MUP & CTB & link to DC Gro. Ring)","2025-09-28","2025-09-29","8"
"DCH","CN-F-Z02.DCH.S36.TEQP.003","Place,Anchor,Fit-Out & Ground IDF 1.16 in Zone 2 DCH North","2025-09-28","2025-09-30","16"
"SSS","CN-F-Z02.EYD.S14.CW.3334","Pull,Term,Test & Torque Feeder from SUB01-BUS-B (Control) to EY06-SWGR-SSS-E (Control)","2025-09-28","2025-10-03","40"
"SSS","CN-F-Z02.EYD.S14.CW.3335","Pull,Term,Test & Torque Feeder from SUB01-BUS-B (Control) to EY06-SWGR-SSS-F (Control)","2025-09-28","2025-10-03","40"
"GPS","CN-F-Z02.EYD.S14.CW.3359","Pull,Term,Test & Torque Feeder from EY06-SWGR-GPS (Control) to EY06-SWGR-SSS-E (Control)","2025-09-28","2025-10-03","40"
"GPS","CN-F-Z02.EYD.S14.CW.3360","Pull,Term,Test & Torque Feeder from EY06-SWGR-GPS (Control) to EY06-SWGR-SSS-F (Control)","2025-09-28","2025-10-03","40"
"MCP","118356261","Set MCP-MCP CTR 06,BUILDOUT","2025-09-28","2025-09-30","16"
"MYD","CON-017070","MYD1-Set MCP-01 Pipe Conveyance Structure/Install Grating & Handrail/Set Lower CT Access Stairs (CAS)","2025-09-28","2025-10-03","40"
"DCH","998296573","DCH1-Fire Riser 1-521-Prime,1st,& Final Coat Paint","2025-09-28","2025-10-01","24"
"DCH","998296633","DCH1-Fire Riser 1-522-Hang,Tape,& Finish Drywall","2025-09-28","2025-10-03","40"
"DCH","A1500","PMS-DCH2-Fiber Ring-Pull Fiber","2025-09-28","2025-10-10","80"
"EYD","CON-BB-4715","EYD2-RMU to SSS-E MV Pulls","2025-09-28","2025-10-08","64"
"EYD","CON-BB-4755","EYD2-RMU to SSS-F MV Pulls","2025-09-28","2025-10-08","64"
"EYD","CON-BB-4975","EYD1-S18 USS 480 Tap Box Terms & Torques Group 2","2025-09-28","2025-10-10","80"
"EYD","CON-BB-5235","EYD2-S14 SSS-E to GPS MV/LV Pulls","2025-09-28","2025-10-03","40"
"EYD","CON-BB-5245","EYD2-S14 SSS-F to GPS MV/LV Pulls","2025-09-28","2025-10-03","40"
"DCH","784084752","DCH2-Fire Riser/Restroom/Janitor (1-572/553/552)-Frame Walls & Ceilings","2025-09-29","2025-10-01","16"
"SSS","CN-F-Z01.EYD.S14.SSS-F.440","Term & Torque MV Feeder from EY05-SWGR-SSS-F to EY05-XFMR-F at EY05-XFMR-F","2025-09-29","2025-10-13","80"
"SSS","CN-F-Z01.EYD.S14.SSS-F.519","Term & Torque MV Feeder from EY05-SWGR-SSS-F to EY05-XFMR-F at EY05-SWGR-SSS-F","2025-09-29","2025-10-13","80"
"Loading Dock","CN-F-Z01.FSA.S29.DISC.2552","Complete Pathway to Disconnect for DF F01 in LOADING DOCK 1-200","2025-09-29","2025-09-30","8"
"Loading Dock","CN-F-Z01.FSA.S29.DISC.2566","Complete Pathway to Disconnect for EUH F07 in LOADING DOCK 1-200","2025-09-29","2025-09-30","8"
"Loading Dock","CN-F-Z01.FSA.S29.DISC.2567","Complete Pathway to Disconnect for EUH F08 in LOADING DOCK 1-200","2025-09-29","2025-09-30","8"
"Loading Dock","CN-F-Z01.FSA.S29.DISC.2568","Complete Pathway to Disconnect for EUH F09 in LOADING DOCK 1-200","2025-09-29","2025-09-30","8"
"Loading Dock","CN-F-Z01.FSA.S29.DISC.2569","Complete Pathway to Disconnect for EUH F10 in LOADING DOCK 1-200","2025-09-29","2025-09-30","8"
"MYD","CN-F-Z01.MYD.S36.TEQP.006","Place,Anchor,Fit-Out & Ground SFE-MYD-01","2025-09-29","2025-10-01","16"
"MYD","CN-F-Z01.MYD.S36.TEQP.007","Place,Anchor,Fit-Out & Ground SFE-MYD-04","2025-09-29","2025-10-01","16"
"USS YARD","842363307","Cable Tray Rack Loose Set-USS-01,USS 1-LV","2025-09-29","2025-09-30","8"
"Fire Pump House","719350703","Install Interceptor-FIRE PUMPHOUSE,BUILDOUT","2025-09-29","2025-10-06","40"
"MCP","588373518","CTS Assembly-MCP CTR 04,BUILDOUT","2025-09-29","2025-10-08","56"
"MCP","790336568","CT Stair Install-MCP CTR 01,BUILDOUT","2025-09-29","2025-10-03","32"
"Fire Pump House","719343415","Insulation on Tank-FIRE PUMPHOUSE,BUILDOUT","2025-09-29","2025-10-06","40"
"MCP","118366074","PCS+PCB Unload-MCP CTR 06,BUILDOUT","2025-09-29","2025-09-30","8"
"MCP","209314620","Interconnects from MCP1 to MUP-MUP,UG & STRUCT","2025-09-29","2025-10-02","24"
"EYD","CON-BB-4605","EYD1-RMU to SSS-F AC Pulls","2025-09-29","2025-10-07","48"
"EYD","CON-BB-4635","EYD1-RMU to RMU Trays","2025-09-29","2025-10-07","48"
"EYD","CON-BB-5035","EYD1-S14 Gen Trays Group 4","2025-09-29","2025-10-01","16"
"EYD","CON-BB-5545","EYD1-RMU to SSS-F MV Terms & Torques","2025-09-29","2025-10-16","104"
"DCH","CON-6790","DCH1-BMS/PMS+Sec+Device install (breakout & detail) HA 03","2025-09-30","2025-10-02","16"
"DCH","CN-F-Z01.DCH.S18.TB.2012","Complete Pathway to TAPBOX-25TOP in Zone 1 DCH","2025-09-30","2025-10-01","8"
"EYD","CN-F-Z01.EYD.S14.USS-12.064","Ground EY05-SWGR-RMU-12 in Zone 1 EYD","2025-09-30","2025-10-01","8"
"USS YARD","CX-F-Z01.EYD.S14.L2.681","L2 QC Electrical Install-EY05-SWGR-USS-10","2025-09-30","2025-10-02","16"
"DCH","CN-F-Z02.DCH.S36.DCH.0005","Place,Anchor,Fit-Out & Ground CCB-5 in Zone 2 DCH","2025-09-30","2025-10-01","8"
"EYD","CN-F-Z02.EYD.S14.USS-1.877","Ground EY06-SWGR-RMU-USS-1 in Zone 2 EYD","2025-09-30","2025-10-02","16"
"EYD","CN-F-Z02.EYD.S14.USS-2.880","Ground EY06-SWGR-RMU-USS-2 in Zone 2 EYD","2025-09-30","2025-10-02","16"
"EYD","CN-F-Z02.EYD.S14.USS-3.883","Ground EY06-SWGR-RMU-USS-3 in Zone 2 EYD","2025-09-30","2025-10-02","16"
"EYD","CN-F-Z02.EYD.S14.USS-4.886","Ground EY06-SWGR-RMU-USS-4 in Zone 2 EYD","2025-09-30","2025-10-02","16"
"EYD","CN-F-Z02.EYD.S14.USS-1.962","Complete Pathway to EY06-SWGR-RMU-USS-27in Zone 2 EYD","2025-09-30","2025-10-01","8"
"EYD","CN-F-Z02.EYD.S14.USS-2.965","Complete Pathway to EY06-SWGR-RMU-USS-28in Zone 2 EYD","2025-09-30","2025-10-01","8"
"EYD","CN-F-Z02.EYD.S14.USS-3.968","Complete Pathway to EY06-SWGR-RMU-USS-29in Zone 2 EYD","2025-09-30","2025-10-01","8"
"SSS","CX-F-Z02.EYD.S14.L2.1644","L2 QC Electrical Install-EY06-PACK-SSS-E-AC-3","2025-09-30","2025-10-02","16"
"SSS","CN-F-Z01.MYD.S10.USS-6.1773","Pull & Test MV Feeder from EY05-SWGR-SSS-F to MY05-SWGR-RMU-USS-CUB-6","2025-09-30","2025-10-03","24"
"DCH","CN-F-Z02.DCH.S36.TEQP.001","Place,Anchor,Fit-Out & Ground IDF 1.14 in Zone 2 DCH South","2025-09-30","2025-10-02","16"
"MYD","CN-F-Z02.MYD.S36.ISPF.004","Pull,Term & Test Fiber from SSNR to SFE-MYD-02","2025-09-30","2025-10-02","16"
"MYD","CN-F-Z02.MYD.S36.ISPF.005","Pull,Term & Test Fiber from SSNR to SFE-MYD-03","2025-09-30","2025-10-02","16"
"USS YARD","CN-F-Z01.DCH.S18.TB.055","Pull,Term,Test & Torque Feeder from EY05-SWGR-USS-11 to TAPBOX-14BOT","2025-09-30","2025-10-02","16"
"USS YARD","CN-F-Z01.DCH.S18.TB.067","Pull,Term,Test & Torque Feeder from EY05-SWGR-USS-11 to TAPBOX-16BOT","2025-09-30","2025-10-02","16"
"USS YARD","CN-F-Z01.DCH.S18.TB.071","Pull,Term,Test & Torque Feeder from EY05-SWGR-USS-11 to TAPBOX-18TOP","2025-09-30","2025-10-02","16"
"DCH","CN-F-Z01.DCH.S18.TB.098","Complete Pathway to TAPBOX-25BOT in Zone 1 DCH","2025-09-30","2025-10-07","40"
"DCH","CN-F-Z01.DCH.S18.TB.102","Complete Pathway to TAPBOX-26BOT in Zone 1 DCH","2025-09-30","2025-10-07","40"
"DCH","CN-F-Z01.DCH.S18.TB.106","Complete Pathway to TAPBOX-26TOP in Zone 1 DCH","2025-09-30","2025-10-07","40"
"SSS","CN-F-Z01.EYD.S14.CW.3294","Pull,Term,Test & Torque Feeder from EY05-SWGR-SSS-F (Control) to MY05-USS-CUB-6 (Control)","2025-09-30","2025-10-07","40"
"SSS","CN-F-Z02.EYD.S14.CW.3295","Pull,Term,Test & Torque Feeder from EY06-SWGR-SSS-E (Control) to MY06-USS-CUB-7 (Control)","2025-09-30","2025-10-07","40"
"SSS","CN-F-Z02.EYD.S14.CW.3297","Pull,Term,Test & Torque Feeder from EY06-SWGR-SSS-F (Control) to MY06-USS-CUB-11 (Control)","2025-09-30","2025-10-07","40"
"MCP","118359381","Set PCS+PCB-MCP CTR 06,BUILDOUT","2025-09-30","2025-10-02","16"
"MCP","118369169","PCS Piping Connects MUWT & Chem Lines-MCP CTR 06,BUILDOUT","2025-09-30","2025-10-08","48"
"MCP","118325079","Roofing Seal-MCP CTR 06,BUILDOUT","2025-09-30","2025-10-01","8"
"MCP","118371204","Domestic Water Tie In-MCP CTR 06,BUILDOUT","2025-09-30","2025-10-02","16"
"MCP","118327071","Cormaci Outside Trim-MCP CTR 06,BUILDOUT","2025-09-30","2025-10-03","24"
"MCP","118372430","PCS Chemical Piping-MCP CTR 06,BUILDOUT","2025-09-30","2025-10-03","24"
"MCP","118328578","MCP Plumbing/Mechanical Interconnects-MCP CTR 06,BUILDOUT","2025-09-30","2025-10-21","120"
"USS YARD","842351251","Set PDC-USS-01,USS 1-LV","2025-09-30","2025-10-01","8"
"DCH","470015485","DCH2-Fire Riser 1-573-Frame Walls & Ceilings","2025-10-01","2025-10-03","16"
"DCH","CN-F-Z01.DCH.S18.TB.2011","Complete Pathway to TAPBOX-28TOP in Zone 1 DCH","2025-10-01","2025-10-02","8"
"DCH","CN-F-Z01.DCH.S18.TB.2013","Complete Pathway to TAPBOX-27BOT in Zone 1 DCH","2025-10-01","2025-10-02","8"
"SSS","CN-F-Z02.EYD.S14.USS-1.1082","Pull & Test MV Feeder from EY06-SWGR-SSS-E to EY06-SWGR-RMU-USS-1","2025-10-01","2025-10-02","8"
"SSS","CN-F-Z02.EYD.S14.USS-2.1085","Pull & Test MV Feeder from EY06-SWGR-SSS-F to EY06-SWGR-RMU-USS-2","2025-10-01","2025-10-02","8"
"USS YARD","CN-F-Z02.EYD.S14.USS-2.1261","Pull & Test MV Feeder from EY06-SWGR-RMU-USS-2 to EY06-SWGR-RMU-USS-1","2025-10-01","2025-10-02","8"
"MYD","CN-F-Z01.MYD.S21.PDC-1.1698","Ground MY05-XFMR-PDC-CUB-1 in Zone 1 MYD","2025-10-01","2025-10-02","8"
"MYD","CN-F-Z01.MYD.S21.PDC-1.1699","Ground MY05-PDC-CUB-1 in Zone 1 MYD","2025-10-01","2025-10-02","8"
"USS YARD","CN-F-Z02.EYD.S18.HA51.56.0001","Install Cable Tray from Zone 2 USS 9-12 to Rows 51-56","2025-10-01","2025-10-06","24"
"MYD","CN-F-Z01.MYD.S36.ISPF.006","Pull,Term & Test Fiber from SSNR to SFE-MYD-01","2025-10-01","2025-10-03","16"
"MYD","CN-F-Z01.MYD.S36.ISPF.007","Pull,Term & Test Fiber from SSNR to SFE-MYD-04","2025-10-01","2025-10-03","16"
"MYD","CN-F-Z01.MYD.S36.LVCR.016","Pull,Term,& Test Security CAT-6 for SFE-MYD-01","2025-10-01","2025-10-07","32"
"MYD","CN-F-Z01.MYD.S36.LVCR.017","Pull,Term,& Test Security CAT-6 for SFE-MYD-04","2025-10-01","2025-10-07","32"
"DCH","CN-F-Z01.DCH.S18.TB.110","Complete Pathway to TAPBOX-27TOP in Zone 1 DCH","2025-10-01","2025-10-08","40"
"DCH","CN-F-Z01.DCH.S18.TB.114","Complete Pathway to TAPBOX-28BOT in Zone 1 DCH","2025-10-01","2025-10-08","40"
"EYD","CN-F-Z02.EYD.USS.13-21","EYD Zone 2 USS 13-16 Install Trestle Steel","2025-10-01","2025-10-08","40"
"MYD","CN-F-Z01.MYD.S29.MYD.014","MYD1-Z1-Install & tape Heat Trace Wire for MCP-06","2025-10-01","2025-10-08","40"
"USS YARD","842363546","Set LV-01-USS-01,USS 1-LV","2025-10-01","2025-10-02","8"
"DCH","998296543","DCH1-Fire Riser 1-521-Set EUH","2025-10-01","2025-10-02","8"
"EYD","CON-BB-4645","EYD1-RMU to RMU MV Pulls","2025-10-01","2025-10-08","40"
"EYD","CON-BB-5045","EYD1-S14 Gen Trays Group 5","2025-10-01","2025-10-03","16"
"DCH","CON-7000","DCH1-BMS/PMS+Sec+Device install (breakout & detail) HA 04","2025-10-02","2025-10-06","16"
"DCH","CX-10125","DCH1-Flushing Activity-Hall/MYD Second Half","2025-10-02","2025-10-23","120"
"MYD","CX-10149","MYD1-CTB MAS Fiber Complete (Includes MAC patching to/from Nun) & NUN to NUN","2025-10-02","2025-10-09","40"
"USS YARD","CN-F-Z01.DCH.S18.TB.2039","Pull,Term,Test & Torque Feeder from EY05-SWGR-USS-12 to TAPBOX-15BOT","2025-10-02","2025-10-06","16"
"USS YARD","CN-F-Z01.DCH.S18.TB.2040","Pull,Term,Test & Torque Feeder from EY05-SWGR-USS-12 to TAPBOX-17BOT","2025-10-02","2025-10-06","16"
"USS YARD","CN-F-Z01.DCH.S18.TB.2041","Pull,Term,Test & Torque Feeder from EY05-SWGR-USS-12 to TAPBOX-18BOT","2025-10-02","2025-10-06","16"
"USS YARD","CX-F-Z01.EYD.S14.L2.651","L2 QC Electrical Install-EY05-SWGR-USS-MDA-F","2025-10-02","2025-10-06","16"
"USS YARD","CX-F-Z01.EYD.S14.L2.684","L2 QC Electrical Install-EY05-SWGR-USS-11","2025-10-02","2025-10-06","16"
"SSS","CN-F-Z02.EYD.S14.USS-3.1088","Pull & Test MV Feeder from EY06-SWGR-SSS-E to EY06-SWGR-RMU-USS-3","2025-10-02","2025-10-03","8"
"SSS","CN-F-Z02.EYD.S14.USS-1.1278","Term & Torque MV Feeder from EY06-SWGR-SSS-E to EY06-SWGR-RMU-USS-1 at EY06-SWGR-RMU-USS-1","2025-10-02","2025-10-03","8"
"SSS","CN-F-Z02.EYD.S14.USS-2.1280","Term & Torque MV Feeder from EY06-SWGR-SSS-F to EY06-SWGR-RMU-USS-2 at EY06-SWGR-RMU-USS-2","2025-10-02","2025-10-03","8"
"SSS","CN-F-Z02.EYD.S14.USS-1.1353","Term & Torque MV Feeder from EY06-SWGR-SSS-E to EY06-SWGR-RMU-USS-1 at EY06-SWGR-SSS-E","2025-10-02","2025-10-03","8"
"SSS","CN-F-Z02.EYD.S14.USS-2.1355","Term & Torque MV Feeder from EY06-SWGR-SSS-F to EY06-SWGR-RMU-USS-2 at EY06-SWGR-SSS-F","2025-10-02","2025-10-03","8"
"USS YARD","CN-F-Z02.EYD.S14.USS-2.1426","Term & Torque MV Feeder from EY06-SWGR-RMU-USS-2 to EY06-SWGR-RMU-USS-1 at EY06-SWGR-RMU-USS-1","2025-10-02","2025-10-03","8"
"USS YARD","CN-F-Z02.EYD.S14.USS-2.1439","Term & Torque MV Feeder from EY06-SWGR-RMU-USS-2 to EY06-SWGR-RMU-USS-1 at EY06-SWGR-RMU-USS-2","2025-10-02","2025-10-03","8"
"MYD","CN-F-Z02.MYD.S36.L2.004","L2 QC Telecom Install-SFE-MYD-02","2025-10-02","2025-10-06","16"
"MYD","CN-F-Z02.MYD.S36.L2.005","L2 QC Telecom Install-SFE-MYD-03","2025-10-02","2025-10-06","16"
"DCH","CN-F-Z02.DCH.S27.MOD.027","Interconnect Zone 2 DCH Southeast Corner Conveyance Modules","2025-10-02","2025-10-09","40"
"USS YARD","CN-F-Z02.EYD.S14.CW.3346","Pull,Term,Test & Torque Feeder from EY06-USS-2 (Control) to EY06-USS-1 (Control)","2025-10-02","2025-10-03","8"
"MCP","118358799","PCS Install-MCP CTR 06,BUILDOUT","2025-10-02","2025-10-06","16"
"USS YARD","677323710","Set XFMR-USS-01,USS 1-XMFR","2025-10-02","2025-10-03","8"
"MCP","101329302","CT Drains & Blowdowns-MCP CTR 02,BUILDOUT","2025-10-02","2025-10-14","64"
"DCH","998296533","DCH1-Fire Riser 1-521-Install Finishes","2025-10-02","2025-10-03","8"
"EYD","CON-8447","EYD2-Set Equipment USS-30-RMU (Schneider)","2025-10-02","2025-10-07","40"
"EYD","CON-8477","EYD2-Set Equipment USS-31-RMU (Schneider)","2025-10-02","2025-10-07","40"
"EYD","CON-8507","EYD2-Set Equipment USS-32-RMU (Schneider)","2025-10-02","2025-10-07","40"
"EYD","CON-8537","EYD2-Set Equipment USS-33-RMU (Schneider)","2025-10-02","2025-10-07","40"
"MYD","CON-7170","MYD1-Fitout MCP01","2025-10-05","2025-10-17","80"
"SSS","CN-F-Z02.EYD.S14.USS-3.1282","Term & Torque MV Feeder from EY06-SWGR-SSS-E to EY06-SWGR-RMU-USS-3 at EY06-SWGR-RMU-USS-3","2025-10-05","2025-10-06","8"
"SSS","CN-F-Z02.EYD.S14.USS-3.1357","Term & Torque MV Feeder from EY06-SWGR-SSS-E to EY06-SWGR-RMU-USS-3 at EY06-SWGR-SSS-E","2025-10-05","2025-10-06","8"
"SSS","CN-F-Z01.MYD.S10.SSS-F.1801","Term & Torque MV Feeder from EY05-SWGR-SSS-F to MY05-SWGR-RMU-USS-CUB-6 at MY05-SWGR-RMU-USS-CUB-6","2025-10-05","2025-10-08","24"
"SSS","CN-F-Z01.MYD.S10.SSS-F.1803","Term & Torque MV Feeder from EY05-SWGR-SSS-F to MY05-SWGR-RMU-USS-CUB-6 at EY05-SWGR-SSE-F","2025-10-05","2025-10-08","24"
"DCH","CN-F-Z02.MYD.S17.DB.0007","Trench,Place,Encase & Backfill Telecom Ductbank from Vault MYD Z2 MCP-11 to Vault DCH Pullbox","2025-10-05","2025-10-10","40"
"EYD","CN-F-Z02.EYD.S29.EYD.0001","Place Grounding Ring in Area Zone 2 EYD Perun","2025-10-05","2025-10-10","40"
"EYD","CN-F-Z02.EYD.S29.EYD.0008","Tie Grounding Ring to Foundations in Area Zone 2 EYD Gens (1 to 17)","2025-10-05","2025-10-10","40"
"MCP","790367102","MCP Electrical Interconnects-MCP CTR 01,BUILDOUT","2025-10-05","2025-10-24","120"
"MCP","790316220","610 Motor Heater Conduit-MCP CTR 01,BUILDOUT","2025-10-05","2025-10-09","32"
"USS YARD","594383612","Set RMU-USS-01,USS 1-RMU","2025-10-05","2025-10-06","8"
"MCP","101319326","CTS Electrical Conduit-MCP CTR 02,BUILDOUT","2025-10-05","2025-10-06","8"
"MCP","790338693","610 Motor Conduit-MCP CTR 01,BUILDOUT","2025-10-05","2025-10-09","32"
"DCH","998296563","DCH1-Fire Riser 1-521-Install Fire Suppression Equipment","2025-10-05","2025-10-17","80"
"DCH","998296653","DCH1-Fire Riser 1-522-Prime,1st,& Final Coat Paint","2025-10-05","2025-10-08","24"
"EYD","CON-BB-4585","EYD1-RMU to SSS-E Control Pulls","2025-10-05","2025-10-15","64"
"EYD","CON-BB-5055","EYD1-S14 Gen Trays Group 6","2025-10-05","2025-10-07","16"
"EYD","CON-BB-5255","EYD2-S14 SSS-E to GPS MV/LV Terms & Torques","2025-10-05","2025-10-10","40"
"EYD","CON-BB-5265","EYD2-S14 SSS-F to GPS MV/LV Terms & Torques","2025-10-05","2025-10-10","40"
"DCH","CON-7080","DCH1-BMS/PMS+Sec+Device install (breakout & detail) HA 05","2025-10-06","2025-10-08","16"
"DCH","CN-F-Z01.DCH.S18.TB.2010","Complete Pathway to TAPBOX-29TOP in Zone 1 DCH","2025-10-06","2025-10-07","8"
"DCH","CN-F-Z01.DCH.S18.TB.2014","Complete Pathway to TAPBOX-29BOT in Zone 1 DCH","2025-10-06","2025-10-07","8"
"DCH","CN-F-Z01.DCH.S18.TB.2015","Complete Pathway to TAPBOX-30BOT in Zone 1 DCH","2025-10-06","2025-10-07","8"
"USS YARD","CX-F-Z01.EYD.S14.L2.687","L2 QC Electrical Install-EY05-SWGR-USS-12","2025-10-06","2025-10-08","16"
"DCH","CN-F-Z01.DCH.S39.HA-04.0002","Install VESDA Panel for Inside Hot Aisle Loop SVH HA N-4 in Room 1-500-Zone 1 DCH","2025-10-06","2025-10-08","16"
"DCH","CN-F-Z01.DCH.S39.HA-05.0002","Install VESDA Panel for Inside Hot Aisle Loop SVH HA N-5 in Room 1-500-Zone 1 DCH","2025-10-06","2025-10-08","16"
"DCH","CN-F-Z01.DCH.S39.HA-06.0002","Install VESDA Panel for Inside Hot Aisle Loop SVH HA N-6 in Room 1-500-Zone 1 DCH","2025-10-06","2025-10-08","16"
"MYD","CN-F-Z01.MYD.S21.PDC-1.1697","Ground MY05-SWGR-RMU-PDC-CUB-1 in Zone 1 MYD","2025-10-06","2025-10-07","8"
"MYD","CN-F-Z01.MYD.S21.PDC-1.1712","Complete Pathway to MY05-SWGR-RMU-PDC-CUB-1 in Zone 1 MYD","2025-10-06","2025-10-07","8"
"MYD","CN-F-Z01.MYD.S21.PDC-1.1713","Complete Pathway to MY05-XFMR-PDC-CUB-1 in Zone 1 MYD","2025-10-06","2025-10-07","8"
"MYD","CN-F-Z01.MYD.S21.PDC-1.1714","Complete Pathway to MY05-PDC-CUB-1 in Zone 1 MYD","2025-10-06","2025-10-07","8"
"MYD","CN-F-Z01.MYD.S24.BPS.1726","Trench from PMH-N1 to EXC-XFRM-BPS in Zone 1 MYD","2025-10-06","2025-10-13","40"
"USS YARD","CN-F-Z01.DCH.S18.TB.075","Pull,Term,Test & Torque Feeder from EY05-SWGR-USS-13 to TAPBOX-19BOT","2025-10-06","2025-10-08","16"
"USS YARD","CN-F-Z01.DCH.S18.TB.083","Pull,Term,Test & Torque Feeder from EY05-SWGR-USS-13 to TAPBOX-20TOP","2025-10-06","2025-10-08","16"
"USS YARD","CN-F-Z01.DCH.S18.TB.087","Pull,Term,Test & Torque Feeder from EY05-SWGR-USS-13 to TAPBOX-21TOP","2025-10-06","2025-10-08","16"
"DCH","CN-F-Z01.DCH.S18.TB.118","Complete Pathway to TAPBOX-30TOP in Zone 1 DCH","2025-10-06","2025-10-13","40"
"MCP","118360524","CTS Assembly-MCP CTR 06,BUILDOUT","2025-10-06","2025-10-15","56"
"MCP","101362683","CT Mount Panel Skid-MCP CTR 02,BUILDOUT","2025-10-06","2025-10-08","16"
"USS YARD","677387706","Grounding (1697,1698,1699)-USS-01,USS 1-XMFR","2025-10-06","2025-10-09","24"
"MYD","594375709","CN-F-Z01.MYD.S21.PDC-1.1728-USS-01,USS 1-RMU","2025-10-06","2025-10-07","8"
"USS YARD","594322425","Pathway 1712,1713,1714-USS-01,USS 1-RMU","2025-10-06","2025-10-09","24"
"DCH","CN-F-Z01.DCH.S18.TB.2018","Complete Pathway to TAPBOX-31TOP in Zone 1 DCH","2025-10-07","2025-10-08","8"
"SSS","CN-F-Z01.EYD.S14.USS-1.207","Pull & Test MV Feeder from EY05-SWGR-SSS-E to EY05-SWGR-RMU-1","2025-10-07","2025-10-17","64"
"SSS","CN-F-Z01.EYD.S14.USS-3.213","Pull & Test MV Feeder from EY05-SWGR-SSS-E to EY05-SWGR-RMU-3","2025-10-07","2025-10-17","64"
"SSS","CN-F-Z01.EYD.S14.USS-6.222","Pull & Test MV Feeder from EY05-SWGR-SSS-E to EY05-SWGR-RMU-6","2025-10-07","2025-10-17","64"
"SSS","CN-F-Z01.EYD.S14.USS-9.231","Pull & Test MV Feeder from EY05-SWGR-SSS-E to EY05-SWGR-RMU-9","2025-10-07","2025-10-17","64"
"SSS","CN-F-Z01.EYD.S14.USS-12.240","Pull & Test MV Feeder from EY05-SWGR-SSS-E to EY05-SWGR-RMU-12","2025-10-07","2025-10-17","64"
"SSS","CN-F-Z01.EYD.S14.USS-15.249","Pull & Test MV Feeder from EY05-SWGR-SSS-E to EY05-SWGR-RMU-15","2025-10-07","2025-10-17","64"
"SSS","CN-F-Z01.EYD.S14.USS-18.258","Pull & Test MV Feeder from EY05-SWGR-SSS-E to EY05-SWGR-RMU-18","2025-10-07","2025-10-17","64"
"SSS","CN-F-Z01.EYD.S14.USS-21.267","Pull & Test MV Feeder from EY05-SWGR-SSS-E to EY05-SWGR-RMU-21","2025-10-07","2025-10-17","64"
"SSS","CN-F-Z01.EYD.S14.USS-24.276","Pull & Test MV Feeder from EY05-SWGR-SSS-E to EY05-SWGR-RMU-24","2025-10-07","2025-10-17","64"
"SSS","CN-F-Z01.EYD.S14.SSS-F.443","Term & Torque MV Feeder from EY05-SWGR-SSS-F to EY05-SWGR-RMU-MDA-F at EY05-SWGR-RMU-MDA-F","2025-10-07","2025-10-21","80"
"SSS","CN-F-Z01.EYD.S14.SSS-F.522","Term & Torque MV Feeder from EY05-SWGR-SSS-F to EY05-SWGR-RMU-MDA-F at EY05-SWGR-SSS-F","2025-10-07","2025-10-21","80"
"EYD","CN-F-Z02.EYD.S14.USS-5.889","Ground EY06-SWGR-RMU-USS-5 in Zone 2 EYD","2025-10-07","2025-10-09","16"
"EYD","CN-F-Z02.EYD.S14.USS-6.892","Ground EY06-SWGR-RMU-USS-6 in Zone 2 EYD","2025-10-07","2025-10-09","16"
"EYD","CN-F-Z02.EYD.S14.USS-7.895","Ground EY06-SWGR-RMU-USS-7 in Zone 2 EYD","2025-10-07","2025-10-09","16"
"EYD","CN-F-Z02.EYD.S14.USS-8.898","Ground EY06-SWGR-RMU-USS-8 in Zone 2 EYD","2025-10-07","2025-10-09","16"
"EYD","CN-F-Z02.EYD.S14.USS-4.971","Complete Pathway to EY06-SWGR-RMU-USS-30in Zone 2 EYD","2025-10-07","2025-10-08","8"
"EYD","CN-F-Z02.EYD.S14.USS-5.974","Complete Pathway to EY06-SWGR-RMU-USS-31in Zone 2 EYD","2025-10-07","2025-10-08","8"
"EYD","CN-F-Z02.EYD.S14.USS-6.977","Complete Pathway to EY06-SWGR-RMU-USS-32in Zone 2 EYD","2025-10-07","2025-10-08","8"
"EYD","CN-F-Z02.EYD.S14.USS-7.980","Complete Pathway to EY06-SWGR-RMU-USS-33in Zone 2 EYD","2025-10-07","2025-10-08","8"
"MYD","CN-F-Z01.MYD.S36.L2.006","L2 QC Telecom Install-SFE-MYD-01","2025-10-07","2025-10-09","16"
"MYD","CN-F-Z01.MYD.S36.L2.007","L2 QC Telecom Install-SFE-MYD-04","2025-10-07","2025-10-09","16"
"DCH","CN-F-Z01.DCH.S18.TB.122","Complete Pathway to TAPBOX-31BOT in Zone 1 DCH","2025-10-07","2025-10-14","40"
"DCH","CN-F-Z01.DCH.S18.TB.126","Complete Pathway to TAPBOX-32BOT in Zone 1 DCH","2025-10-07","2025-10-14","40"
"DCH","CN-F-Z01.DCH.S18.TB.130","Complete Pathway to TAPBOX-32TOP in Zone 1 DCH","2025-10-07","2025-10-14","40"
"SSS","CN-F-Z01.EYD.S14.CW.3238","Pull,Term,Test & Torque Feeder from EY05-SWGR-SSS-F (Control) to EY05-USS-MDA-F (Control)","2025-10-07","2025-11-04","160"
"SSS","CN-F-Z01.EYD.S14.CW.3240","Pull,Term,Test & Torque Feeder from EY05-SWGR-SSS-F (Control) to EY05-USS-2 (Control)","2025-10-07","2025-11-04","160"
"SSS","CN-F-Z01.EYD.S14.CW.3243","Pull,Term,Test & Torque Feeder from EY05-SWGR-SSS-F (Control) to EY05-USS-5 (Control)","2025-10-07","2025-11-04","160"
"SSS","CN-F-Z01.EYD.S14.CW.3246","Pull,Term,Test & Torque Feeder from EY05-SWGR-SSS-F (Control) to EY05-USS-8 (Control)","2025-10-07","2025-11-04","160"
"SSS","CN-F-Z01.EYD.S14.CW.3249","Pull,Term,Test & Torque Feeder from EY05-SWGR-SSS-F (Control) to EY05-USS-11 (Control)","2025-10-07","2025-11-04","160"
"SSS","CN-F-Z01.EYD.S14.CW.3252","Pull,Term,Test & Torque Feeder from EY05-SWGR-SSS-F (Control) to EY05-USS-14 (Control)","2025-10-07","2025-11-04","160"
"SSS","CN-F-Z01.EYD.S14.CW.3255","Pull,Term,Test & Torque Feeder from EY05-SWGR-SSS-F (Control) to EY05-USS-17 (Control)","2025-10-07","2025-11-04","160"
"SSS","CN-F-Z01.EYD.S14.CW.3258","Pull,Term,Test & Torque Feeder from EY05-SWGR-SSS-F (Control) to EY05-USS-20 (Control)","2025-10-07","2025-11-04","160"
"SSS","CN-F-Z01.EYD.S14.CW.3261","Pull,Term,Test & Torque Feeder from EY05-SWGR-SSS-F (Control) to EY05-USS-23 (Control)","2025-10-07","2025-11-04","160"
"SSS","CN-F-Z01.EYD.S14.CW.3264","Pull,Term,Test & Torque Feeder from EY05-SWGR-SSS-F (Control) to EY05-USS-26 (Control)","2025-10-07","2025-11-04","160"
"MCP","588380654","CTS Electrical Conduit-MCP CTR 04,BUILDOUT","2025-10-07","2025-10-08","8"
"MCP","101353832","CTS Stair install-MCP CTR 02,BUILDOUT","2025-10-07","2025-10-13","32"
"MCP","101303617","CT Unload-MCP CTR 02,BUILDOUT","2025-10-07","2025-10-08","8"
"MCP","209365260","Controls Wire MCP01 to MUP PLC-MUP,UG & STRUCT","2025-10-07","2025-10-09","16"
"EYD","CON-BB-4615","EYD1--RMU to SSS-F DC Pulls","2025-10-07","2025-10-15","48"
"EYD","CON-BB-5105","EYD1-S14 Gen to GPS 480 Pulls Group 1","2025-10-07","2025-10-13","32"
"DCH","CON-7200","DCH1-BMS/PMS+Sec+Device install (breakout & detail) HA 06","2025-10-08","2025-10-10","16"
"DCH","CX-10162","DCH2-Flushing Activity-Hall/MYD First Half","2025-10-08","2025-10-29","120"
"USS YARD","CN-F-Z01.DCH.S18.TB.2042","Pull,Term,Test & Torque Feeder from EY05-SWGR-USS-14 to TAPBOX-23TOP","2025-10-08","2025-10-10","16"
"USS YARD","CN-F-Z01.DCH.S18.TB.2043","Pull,Term,Test & Torque Feeder from EY05-SWGR-USS-14 to TAPBOX-22TOP","2025-10-08","2025-10-10","16"
"USS YARD","CN-F-Z01.DCH.S18.TB.2044","Pull,Term,Test & Torque Feeder from EY05-SWGR-USS-14 to TAPBOX-19TOP","2025-10-08","2025-10-10","16"
"USS YARD","CX-F-Z01.EYD.S14.L2.690","L2 QC Electrical Install-EY05-SWGR-USS-13","2025-10-08","2025-10-10","16"
"DCH","CN-F-Z01.DCH.S39.HA-04.0001","Install VESDA Panel for Inside Hot Aisle Loop SVH HA S-4 in Room 1-500-Zone 1 DCH","2025-10-08","2025-10-10","16"
"DCH","CN-F-Z01.DCH.S39.HA-05.0001","Install VESDA Panel for Inside Hot Aisle Loop SVH HA S-5 in Room 1-500-Zone 1 DCH","2025-10-08","2025-10-10","16"
"DCH","CN-F-Z01.DCH.S39.HA-06.0001","Install VESDA Panel for Inside Hot Aisle Loop SVH HA S-6 in Room 1-500-Zone 1 DCH","2025-10-08","2025-10-10","16"
"DCH","CN-F-Z02.DCH.S39.HA-26.0002","Install VESDA Panel for Inside Hot Aisle Loop SVH HA N-26 in Room 1-550-Zone 2 DCH","2025-10-08","2025-10-10","16"
"DCH","CN-F-Z02.DCH.S39.HA-27.0002","Install VESDA Panel for Inside Hot Aisle Loop SVH HA N-27 in Room 1-550-Zone 2 DCH","2025-10-08","2025-10-10","16"
"DCH","CN-F-Z02.DCH.S39.HA-28.0002","Install VESDA Panel for Inside Hot Aisle Loop SVH HA N-28 in Room 1-550-Zone 2 DCH","2025-10-08","2025-10-10","16"
"USS YARD","CN-F-Z02.EYD.S14.USS-4.1091","Pull & Test MV Feeder from EY06-SWGR-RMU-USS-3 to EY06-SWGR-RMU-USS-4","2025-10-08","2025-10-09","8"
"SSS","CN-F-Z02.EYD.S14.USS-5.1094","Pull & Test MV Feeder from EY06-SWGR-SSS-F to EY06-SWGR-RMU-USS-5","2025-10-08","2025-10-09","8"
"SSS","CN-F-Z02.EYD.S14.USS-6.1097","Pull & Test MV Feeder from EY06-SWGR-SSS-E to EY06-SWGR-RMU-USS-6","2025-10-08","2025-10-09","8"
"USS YARD","CN-F-Z02.EYD.S14.USS-7.1100","Pull & Test MV Feeder from EY06-SWGR-RMU-USS-6 to EY06-SWGR-RMU-USS-7","2025-10-08","2025-10-09","8"
"USS YARD","CN-F-Z02.EYD.S14.USS-5.1262","Pull & Test MV Feeder from EY06-SWGR-RMU-USS-5 to EY06-SWGR-RMU-USS-4","2025-10-08","2025-10-09","8"
"MCP","CX-F-Z01.MYD.S24.L2.1849","L2 QC Electrical Install-MCP6-Basin HT Panel A","2025-10-08","2025-10-10","16"
"MCP","CX-F-Z01.MYD.S24.L2.1850","L2 QC Electrical Install-MCP6-Basin HT Panel B","2025-10-08","2025-10-10","16"
"MCP","CX-F-Z01.MYD.S24.L2.1851","L2 QC Electrical Install-MCP6-HT TRACE CAB","2025-10-08","2025-10-10","16"
"USS YARD","CN-F-Z02.EYD.S18.HA57.62.0001","Install Cable Tray from Zone 2 USS 13-16 to Rows 57-62","2025-10-08","2025-10-13","24"
"EYD","CN-F-Z02.EYD.USS.17-25","EYD Zone 2 USS 17-20 Install Trestle Steel","2025-10-08","2025-10-15","40"
"MCP","101315255","CT Build an Install-MCP CTR 02,BUILDOUT","2025-10-08","2025-10-15","40"
"MCP","588347309","SSC Steel unload-MCP CTR 04,BUILDOUT","2025-10-08","2025-10-09","8"
"MCP","588357519","CTS Piping,grading,handrail-MCP CTR 04,BUILDOUT","2025-10-08","2025-10-20","64"
"DCH","998296623","DCH1-Fire Riser 1-522-Set EUH","2025-10-08","2025-10-09","8"
"EYD","CON-BB-4655","EYD1-RMU to RMU MV Terms & Torques","2025-10-08","2025-10-31","136"
"EYD","CON-BB-4725","EYD2-RMU to SSS-E AC Pulls","2025-10-08","2025-10-22","80"
"EYD","CON-BB-4765","EYD2-RMU to SSS-F AC Pulls","2025-10-08","2025-10-22","80"
"MYD","CX-10249","MYD1-MWT-01 Fill","2025-10-09","2025-10-16","40"
"MYD","CX-10536","MYD1-MWT-02 Fill","2025-10-09","2025-10-16","40"
"MYD","CX-10230","MYD1-MUPT Building Fiber Complete (Includes MAC patching to/from Nun) & NUN to NUN","2025-10-09","2025-10-16","40"
"MYD","CON-8715-18","MYD1-Exterior SOG P11 & 12","2025-10-09","2025-10-14","24"
"MYD","CON-8715-21","MYD1-West MCP SOG","2025-10-09","2025-10-15","32"
"MCP","CON-8715-25","MCP/Trench SOG","2025-10-09","2025-10-21","64"
"DCH","CN-F-Z01.DCH.S18.TB.2017","Complete Pathway to TAPBOX-34TOP in Zone 1 DCH","2025-10-09","2025-10-10","8"
"DCH","CN-F-Z01.DCH.S18.TB.2019","Complete Pathway to TAPBOX-33BOT in Zone 1 DCH","2025-10-09","2025-10-10","8"
"USS YARD","CN-F-Z02.EYD.S14.USS-4.1284","Term & Torque MV Feeder from EY06-SWGR-RMU-USS-3 to EY06-SWGR-RMU-USS-4 at EY06-SWGR-RMU-USS-4","2025-10-09","2025-10-10","8"
"SSS","CN-F-Z02.EYD.S14.USS-5.1286","Term & Torque MV Feeder from EY06-SWGR-SSS-F to EY06-SWGR-RMU-USS-5 at EY06-SWGR-RMU-USS-5","2025-10-09","2025-10-10","8"
"SSS","CN-F-Z02.EYD.S14.USS-6.1288","Term & Torque MV Feeder from EY06-SWGR-SSS-E to EY06-SWGR-RMU-USS-6 at EY06-SWGR-RMU-USS-6","2025-10-09","2025-10-10","8"
"USS YARD","CN-F-Z02.EYD.S14.USS-7.1290","Term & Torque MV Feeder from EY06-SWGR-RMU-USS-6 to EY06-SWGR-RMU-USS-7 at EY06-SWGR-RMU-USS-7","2025-10-09","2025-10-10","8"
"USS YARD","CN-F-Z02.EYD.S14.USS-4.1359","Term & Torque MV Feeder from EY06-SWGR-RMU-USS-3 to EY06-SWGR-RMU-USS-4 at EY06-SWGR-RMU-USS-3","2025-10-09","2025-10-10","8"
"SSS","CN-F-Z02.EYD.S14.USS-5.1361","Term & Torque MV Feeder from EY06-SWGR-SSS-F to EY06-SWGR-RMU-USS-5 at EY06-SWGR-SSS-F","2025-10-09","2025-10-10","8"
"USS YARD","CN-F-Z02.EYD.S14.USS-7.1365","Term & Torque MV Feeder from EY06-SWGR-RMU-USS-6 to EY06-SWGR-RMU-USS-7 at EY06-SWGR-RMU-USS-6","2025-10-09","2025-10-10","8"
"USS YARD","CN-F-Z02.EYD.S14.USS-5.1427","Term & Torque MV Feeder from EY06-SWGR-RMU-USS-5 to EY06-SWGR-RMU-USS-4 at EY06-SWGR-RMU-USS-4","2025-10-09","2025-10-10","8"
"USS YARD","CN-F-Z02.EYD.S14.USS-5.1440","Term & Torque MV Feeder from EY06-SWGR-RMU-USS-5 to EY06-SWGR-RMU-USS-4 at EY06-SWGR-RMU-USS-5","2025-10-09","2025-10-10","8"
"SSS","CN-F-Z01.MYD.S10.SSS-E.1780","Term & Torque MV Feeder from EY05-SWGR-SSS-E to MY05-SWGR-RMU-PDC-CUB-1 at MY05-SWGR-RMU-PDC-CUB-1","2025-10-09","2025-10-14","24"
"SSS","CN-F-Z01.MYD.S10.SSS-E.1790","Term & Torque MV Feeder from EY05-SWGR-SSS-E to MY05-SWGR-RMU-PDC-CUB-1 at EY05-SWGR-SSE-E","2025-10-09","2025-10-14","24"
"DCH","CN-F-Z01.DCH.S18.TB.134","Complete Pathway to TAPBOX-33TOP in Zone 1 DCH","2025-10-09","2025-10-16","40"
"DCH","CN-F-Z01.DCH.S18.TB.138","Complete Pathway to TAPBOX-34BOT in Zone 1 DCH","2025-10-09","2025-10-16","40"
"DCH","CN-F-Z02.DCH.S27.MOD.025","Interconnect Zone 2 DCH Northeast Corner Conveyance Modules","2025-10-09","2025-10-16","40"
"USS YARD","CN-F-Z02.EYD.S14.CW.3268","Pull,Term,Test & Torque Feeder from EY06-USS-3 (Control) to EY06-USS-4 (Control)","2025-10-09","2025-10-10","8"
"USS YARD","CN-F-Z02.EYD.S14.CW.3271","Pull,Term,Test & Torque Feeder from EY06-USS-6 (Control) to EY06-USS-7 (Control)","2025-10-09","2025-10-10","8"
"USS YARD","CN-F-Z02.EYD.S14.CW.3347","Pull,Term,Test & Torque Feeder from EY06-USS-5 (Control) to EY06-USS-4 (Control)","2025-10-09","2025-10-10","8"
"MCP","790366583","Basin Heater Conduits-MCP CTR 01,BUILDOUT","2025-10-09","2025-10-15","32"
"MCP","790323192","Install EFL / F-MCP CTR 01,BUILDOUT","2025-10-09","2025-10-15","32"
"USS YARD","842395413","Hard set rack & cable tray-USS-01,USS 1-LV","2025-10-09","2025-10-20","56"
"USS YARD","594329574","MV Pull 1728-USS-01,USS 1-RMU","2025-10-09","2025-10-10","8"
"DCH","998296613","DCH1-Fire Riser 1-522-Install Finishes","2025-10-09","2025-10-10","8"
"EYD","CON-8567","EYD2-Set Equipment USS-34-RMU (Schneider)","2025-10-09","2025-10-14","40"
"EYD","CON-8597","EYD2-Set Equipment USS-35-RMU (Schneider)","2025-10-09","2025-10-14","40"
"EYD","CON-8627","EYD2-Set Equipment USS-36-RMU (Schneider)","2025-10-09","2025-10-14","40"
"EYD","CON-8657","EYD2-Set Equipment USS-37-RMU (Schneider)","2025-10-09","2025-10-14","40"
"EYD","CON-7555","EYD1-LV Cable Pull & Terms to Fuel & All","2025-10-12","2025-11-21","240"
"MYD","CON-8335","MYD2-Heat Trace S25","2025-10-12","2025-10-24","80"
"DCH","CON-7255","DCH1-BMS/PMS+Sec+Device install (breakout & detail) HA 07","2025-10-12","2025-10-14","16"
"DCH","CN-F-Z01.DCH.S18.TB.2016","Complete Pathway to TAPBOX-35TOP in Zone 1 DCH","2025-10-12","2025-10-13","8"
"DCH","CN-F-Z01.DCH.S18.TB.2020","Complete Pathway to TAPBOX-35BOT in Zone 1 DCH","2025-10-12","2025-10-13","8"
"DCH","CN-F-Z01.DCH.S18.TB.2021","Complete Pathway to TAPBOX-36BOT in Zone 1 DCH","2025-10-12","2025-10-13","8"
"USS YARD","CX-F-Z01.EYD.S14.L2.693","L2 QC Electrical Install-EY05-SWGR-USS-14","2025-10-12","2025-10-14","16"
"DCH","CN-F-Z02.DCH.S29.1-550.0009","QC Inspect Branch Raceway in Area 1-550-Zone 2 DCH","2025-10-12","2025-10-13","8"
"DCH","CN-F-Z02.DCH.S39.HA-26.0001","Install VESDA Panel for Inside Hot Aisle Loop SVH HA S-26 in Room 1-550-Zone 2 DCH","2025-10-12","2025-10-14","16"
"DCH","CN-F-Z02.DCH.S39.HA-27.0001","Install VESDA Panel for Inside Hot Aisle Loop SVH HA S-27 in Room 1-550-Zone 2 DCH","2025-10-12","2025-10-14","16"
"DCH","CN-F-Z02.DCH.S39.HA-28.0001","Install VESDA Panel for Inside Hot Aisle Loop SVH HA S-28 in Room 1-550-Zone 2 DCH","2025-10-12","2025-10-14","16"
"DCH","CN-F-Z01.DCH.S36.DCH.0002","Place,Anchor,Fit-Out & Ground CCA-2 in Zone 1 DCH","2025-10-12","2025-10-13","8"
"SSS","CN-F-Z02.EYD.S14.SSS-E.1273","Term & Torque MV Feeder from SUBE-BUS-E to EY06-SWGR-SSS-E at EY06-SWGR-SSS-E","2025-10-12","2025-10-15","24"
"GPS","CN-F-Z02.EYD.S14.GPS.1347","Term & Torque MV Feeder from EY06-SWGR-GPS to EY06-Load Bank at EY06-Load Bank","2025-10-12","2025-10-15","24"
"SSS","CN-F-Z02.EYD.S14.BUS-E.1348","Term & Torque MV Feeder from SUBE-BUS-E to EY06-SWGR-SSS-E at SUBE-BUS-E","2025-10-12","2025-10-15","24"
"SSS","CN-F-Z02.EYD.S14.USS-6.1363","Term & Torque MV Feeder from EY06-SWGR-SSS-E to EY06-SWGR-RMU-USS-6 at EY06-SWGR-SSS-E","2025-10-12","2025-10-13","8"
"GPS","CN-F-Z02.EYD.S14.GPS.1422","Term & Torque MV Feeder from EY06-SWGR-GPS to EY06-Load Bank at EY06-SWGR-GPS","2025-10-12","2025-10-15","24"
"EYD","CN-F-Z02.EYD.S29.EYD.0005","Tie Grounding Ring to Foundations in Area Zone 2 EYD Perun","2025-10-12","2025-10-17","40"
"DCH","CN-F-Z01.DCH.S36.TEQP.003","Place,Anchor,Fit-Out & Ground IDF 1.6 in Zone 1 DCH North","2025-10-12","2025-10-14","16"
"USS YARD","CN-F-Z01.DCH.S18.TB.079","Pull,Term,Test & Torque Feeder from EY05-SWGR-USS-15 to TAPBOX-20BOT","2025-10-12","2025-10-14","16"
"USS YARD","CN-F-Z01.DCH.S18.TB.091","Pull,Term,Test & Torque Feeder from EY05-SWGR-USS-15 to TAPBOX-22BOT","2025-10-12","2025-10-14","16"
"USS YARD","CN-F-Z01.DCH.S18.TB.095","Pull,Term,Test & Torque Feeder from EY05-SWGR-USS-15 to TAPBOX-24TOP","2025-10-12","2025-10-14","16"
"DCH","CN-F-Z01.DCH.S18.TB.142","Complete Pathway to TAPBOX-36TOP in Zone 1 DCH","2025-10-12","2025-10-17","40"
"USS YARD","CN-F-Z02.EYD.S14.L2.3392","L2 QC Electrical Install-EY06-USS-4 (Control)","2025-10-12","2025-10-14","16"
"DCH","998296863","DCH1-Restroom 1-513-Hang,Tape,& Finish Drywall","2025-10-12","2025-10-17","40"
"DCH","A1510","PMS-DCH2-Fiber Ring-Splice Fiber","2025-10-12","2025-10-17","40"
"EYD","CON-BB-4985","EYD1-S18 USS 480 Tap Box Terms & Torques Group 3","2025-10-12","2025-10-24","80"
"EYD","CON-BB-5275","EYD2-S14 Gen Trays Group 1","2025-10-12","2025-10-14","16"
"DCH","CN-F-Z01.DCH.S18.TB.2022","Complete Pathway to TAPBOX-37TOP in Zone 1 DCH","2025-10-13","2025-10-14","8"
"DCH","CN-F-Z01.DCH.S18.TB.2023","Complete Pathway to TAPBOX-37BOT in Zone 1 DCH","2025-10-13","2025-10-14","8"
"MYD","CN-F-Z01.MYD.S24.BPS-2.1725","Complete Pathway to EXC-XFMR-BPS in Zone 1 MYD","2025-10-13","2025-10-20","40"
"DCH","CN-F-Z01.DCH.S18.TB.146","Complete Pathway to TAPBOX-37BOT in Zone 1 DCH","2025-10-13","2025-10-20","40"
"DCH","CN-F-Z01.DCH.S18.TB.150","Complete Pathway to TAPBOX-38TOP in Zone 1 DCH","2025-10-13","2025-10-20","40"
"MCP","101340639","Final Cooling Tower Connections-Condenser / Sweeper Piping Install-MCP CTR 02,BUILDOUT","2025-10-13","2025-10-15","16"
"DCH","A1350","PMS-DCH1-Shiraz Bus Plugs-Pull Wire @ SPD3","2025-10-13","2025-10-20","40"
"EYD","CON-BB-5115","EYD1-S14 Gen to GPS 480 Pulls Group 2","2025-10-13","2025-10-17","32"
"MYD","CON-7180","MYD1-Site Lighting Seq.6-USS","2025-10-14","2025-10-28","80"
"DCH","CON-7340","DCH1-BMS/PMS+Sec+Device install (breakout & detail) HA 08","2025-10-14","2025-10-16","16"
"USS YARD","CN-F-Z01.DCH.S18.TB.2045","Pull,Term,Test & Torque Feeder from EY05-SWGR-USS-16 to TAPBOX-21BOT","2025-10-14","2025-10-16","16"
"USS YARD","CN-F-Z01.DCH.S18.TB.2046","Pull,Term,Test & Torque Feeder from EY05-SWGR-USS-16 to TAPBOX-23BOT","2025-10-14","2025-10-16","16"
"USS YARD","CN-F-Z01.DCH.S18.TB.2047","Pull,Term,Test & Torque Feeder from EY05-SWGR-USS-16 to TAPBOX-24BOT","2025-10-14","2025-10-16","16"
"USS YARD","CX-F-Z01.EYD.S14.L2.696","L2 QC Electrical Install-EY05-SWGR-USS-15","2025-10-14","2025-10-16","16"
"DCH","CN-F-Z01.DCH.S36.DCH.0005","Place,Anchor,Fit-Out & Ground CCB-2 in Zone 1 DCH","2025-10-14","2025-10-15","8"
"EYD","CN-F-Z02.EYD.S14.USS-9.901","Ground EY06-SWGR-RMU-USS-9 in Zone 2 EYD","2025-10-14","2025-10-16","16"
"EYD","CN-F-Z02.EYD.S14.USS-10.904","Ground EY06-SWGR-RMU-USS-10 in Zone 2 EYD","2025-10-14","2025-10-16","16"
"EYD","CN-F-Z02.EYD.S14.USS-11.907","Ground EY06-SWGR-RMU-USS-11 in Zone 2 EYD","2025-10-14","2025-10-16","16"
"EYD","CN-F-Z02.EYD.S14.USS-12.910","Ground EY06-SWGR-RMU-USS-12 in Zone 2 EYD","2025-10-14","2025-10-16","16"
"EYD","CN-F-Z02.EYD.S14.USS-8.983","Complete Pathway to EY06-SWGR-RMU-USS-34in Zone 2 EYD","2025-10-14","2025-10-15","8"
"EYD","CN-F-Z02.EYD.S14.USS-9.986","Complete Pathway to EY06-SWGR-RMU-USS-35in Zone 2 EYD","2025-10-14","2025-10-15","8"
"EYD","CN-F-Z02.EYD.S14.USS-10.989","Complete Pathway to EY06-SWGR-RMU-USS-36in Zone 2 EYD","2025-10-14","2025-10-15","8"
"EYD","CN-F-Z02.EYD.S14.USS-11.992","Complete Pathway to EY06-SWGR-RMU-USS-37in Zone 2 EYD","2025-10-14","2025-10-15","8"
"DCH","CN-F-Z01.DCH.S36.TEQP.001","Place,Anchor,Fit-Out & Ground IDF 1.4 in Zone 1 DCH South","2025-10-14","2025-10-16","16"
"MCP","118345078","CTS Electrical Conduit-MCP CTR 06,BUILDOUT","2025-10-14","2025-10-15","8"
"EYD","CON-BB-5285","EYD2-S14 Gen Trays Group 2","2025-10-14","2025-10-16","16"
"SSS","CN-F-Z02.EYD.S14.USS-8.1103","Pull & Test MV Feeder from EY06-SWGR-SSS-F to EY06-SWGR-RMU-USS-8","2025-10-15","2025-10-16","8"
"SSS","CN-F-Z02.EYD.S14.USS-9.1106","Pull & Test MV Feeder from EY06-SWGR-SSS-E to EY06-SWGR-RMU-USS-9","2025-10-15","2025-10-16","8"
"USS YARD","CN-F-Z02.EYD.S14.USS-10.1109","Pull & Test MV Feeder from EY06-SWGR-RMU-USS-9 to EY06-SWGR-RMU-USS-10","2025-10-15","2025-10-16","8"
"SSS","CN-F-Z02.EYD.S14.USS-11.1112","Pull & Test MV Feeder from EY06-SWGR-SSS-F to EY06-SWGR-RMU-USS-11","2025-10-15","2025-10-16","8"
"USS YARD","CN-F-Z02.EYD.S14.USS-8.1263","Pull & Test MV Feeder from EY06-SWGR-RMU-USS-8 to EY06-SWGR-RMU-USS-7","2025-10-15","2025-10-16","8"
"USS YARD","CN-F-Z02.EYD.S14.USS-11.1264","Pull & Test MV Feeder from EY06-SWGR-RMU-USS-11 to EY06-SWGR-RMU-USS-10","2025-10-15","2025-10-16","8"
"USS YARD","CN-F-Z02.EYD.S18.HA63.68.0001","Install Cable Tray from Zone 2 USS 17-20 to Rows 63-68","2025-10-15","2025-10-20","24"
"EYD","CN-F-Z02.EYD.USS.21-29","EYD Zone 2 USS 21-24 Install Trestle Steel","2025-10-15","2025-10-22","40"
"MCP","790322241","Install Conduit & CT Receptacles Conduit-MCP CTR 01,BUILDOUT","2025-10-15","2025-10-23","48"
"MCP","101395874","CT Stair Install-MCP CTR 02,BUILDOUT","2025-10-15","2025-10-21","32"
"MCP","118351499","SSC Steel unload-MCP CTR 06,BUILDOUT","2025-10-15","2025-10-16","8"
"MCP","118315764","CTS Piping,grading,handrail-MCP CTR 06,BUILDOUT","2025-10-15","2025-10-27","64"
"USS YARD","116346368","Cable Tray Rack Loose Set-USS-02,USS 2-LV","2025-10-15","2025-10-16","8"
"MCP","588346416","CT Drains & Blowdowns-MCP CTR 04,BUILDOUT","2025-10-15","2025-10-27","64"
"Conveyance","158311096","Conveyance Steel Seq 1-CTB,UG & STRUCT","2025-10-15","2025-10-29","80"
"MYD","762347142","CN-F-Z01.MYD.S21.PDC-1.1728-USS-02,USS 2-RMU","2025-10-15","2025-10-16","8"
"EYD","CON-BB-4625","EYD1-RMU to SSS-F Control Pulls","2025-10-15","2025-10-27","64"
"DCH","CON-7415","DCH1-BMS/PMS+Sec+Device install (breakout & detail) HA 09","2025-10-16","2025-10-20","16"
"MYD","CX-10250","MYD1-MCP-01 Fiber Complete (Includes MAC patching to/from Nun) & NUN to NUN","2025-10-16","2025-10-23","40"
"MYD","CON-017062","MYD1-Mobilize Crane C/Dance Floor-MCP-01","2025-10-16","2025-10-17","8"
"USS YARD","CX-F-Z01.EYD.S14.L2.699","L2 QC Electrical Install-EY05-SWGR-USS-16","2025-10-16","2025-10-20","16"
"SSS","CN-F-Z02.EYD.S14.USS-8.1292","Term & Torque MV Feeder from EY06-SWGR-SSS-F to EY06-SWGR-RMU-USS-8 at EY06-SWGR-RMU-USS-8","2025-10-16","2025-10-17","8"
"SSS","CN-F-Z02.EYD.S14.USS-9.1294","Term & Torque MV Feeder from EY06-SWGR-SSS-E to EY06-SWGR-RMU-USS-9 at EY06-SWGR-RMU-USS-9","2025-10-16","2025-10-17","8"
"USS YARD","CN-F-Z02.EYD.S14.USS-10.1296","Term & Torque MV Feeder from EY06-SWGR-RMU-USS-9 to EY06-SWGR-RMU-USS-10 at EY06-SWGR-RMU-USS-10","2025-10-16","2025-10-17","8"
"SSS","CN-F-Z02.EYD.S14.USS-11.1298","Term & Torque MV Feeder from EY06-SWGR-SSS-F to EY06-SWGR-RMU-USS-11 at EY06-SWGR-RMU-USS-11","2025-10-16","2025-10-17","8"
"SSS","CN-F-Z02.EYD.S14.USS-8.1367","Term & Torque MV Feeder from EY06-SWGR-SSS-F to EY06-SWGR-RMU-USS-8 at EY06-SWGR-SSS-F","2025-10-16","2025-10-17","8"
"SSS","CN-F-Z02.EYD.S14.USS-9.1369","Term & Torque MV Feeder from EY06-SWGR-SSS-E to EY06-SWGR-RMU-USS-9 at EY06-SWGR-SSS-E","2025-10-16","2025-10-17","8"
"USS YARD","CN-F-Z02.EYD.S14.USS-10.1371","Term & Torque MV Feeder from EY06-SWGR-RMU-USS-9 to EY06-SWGR-RMU-USS-10 at EY06-SWGR-RMU-USS-9","2025-10-16","2025-10-17","8"
"SSS","CN-F-Z02.EYD.S14.USS-11.1373","Term & Torque MV Feeder from EY06-SWGR-SSS-F to EY06-SWGR-RMU-USS-11 at EY06-SWGR-SSS-F","2025-10-16","2025-10-17","8"
"USS YARD","CN-F-Z02.EYD.S14.USS-8.1428","Term & Torque MV Feeder from EY06-SWGR-RMU-USS-8 to EY06-SWGR-RMU-USS-7 at EY06-SWGR-RMU-USS-7","2025-10-16","2025-10-17","8"
"USS YARD","CN-F-Z02.EYD.S14.USS-11.1429","Term & Torque MV Feeder from EY06-SWGR-RMU-USS-11 to EY06-SWGR-RMU-USS-10 at EY06-SWGR-RMU-USS-10","2025-10-16","2025-10-17","8"
"USS YARD","CN-F-Z02.EYD.S14.USS-8.1441","Term & Torque MV Feeder from EY06-SWGR-RMU-USS-8 to EY06-SWGR-RMU-USS-7 at EY06-SWGR-RMU-USS-8","2025-10-16","2025-10-17","8"
"USS YARD","CN-F-Z02.EYD.S14.USS-11.1442","Term & Torque MV Feeder from EY06-SWGR-RMU-USS-11 to EY06-SWGR-RMU-USS-10 at EY06-SWGR-RMU-USS-11","2025-10-16","2025-10-17","8"
"USS YARD","CN-F-Z01.FSA.S33.MDA-E.2603","Pull,Term,Test & Torque Feeder from EY05-SWGR-USS-MDA-E to BDC E-1","2025-10-16","2025-10-23","40"
"USS YARD","CN-F-Z01.FSA.S33.MDA-E.2651","Pull,Term,Test & Torque Feeder from EY05-SWGR-USS-MDA-E to BDC E-2","2025-10-16","2025-10-23","40"
"USS YARD","CN-F-Z01.DCH.S18.TB.099","Pull,Term,Test & Torque Feeder from EY05-SWGR-USS-17 to TAPBOX-25BOT","2025-10-16","2025-10-20","16"
"USS YARD","CN-F-Z01.DCH.S18.TB.107","Pull,Term,Test & Torque Feeder from EY05-SWGR-USS-17 to TAPBOX-26TOP","2025-10-16","2025-10-20","16"
"USS YARD","CN-F-Z01.DCH.S18.TB.111","Pull,Term,Test & Torque Feeder from EY05-SWGR-USS-17 to TAPBOX-27TOP","2025-10-16","2025-10-20","16"
"USS YARD","CN-F-Z02.EYD.S14.CW.3274","Pull,Term,Test & Torque Feeder from EY06-USS-9 (Control) to EY06-USS-10 (Control)","2025-10-16","2025-10-17","8"
"USS YARD","CN-F-Z02.EYD.S14.CW.3348","Pull,Term,Test & Torque Feeder from EY06-USS-8 (Control) to EY06-USS-7 (Control)","2025-10-16","2025-10-17","8"
"USS YARD","CN-F-Z02.EYD.S14.CW.3349","Pull,Term,Test & Torque Feeder from EY06-USS-11 (Control) to EY06-USS-10 (Control)","2025-10-16","2025-10-17","8"
"USS YARD","116307495","Set PDC-USS-02,USS 2-LV","2025-10-16","2025-10-17","8"
"MCP","790353273","Install EFL / FG Fixtures-MCP CTR 01,BUILDOUT","2025-10-16","2025-10-23","40"
"MCP","588303592","CTS Electrical Conduit-MCP CTR 04,BUILDOUT","2025-10-16","2025-10-17","8"
"EYD","CON-8687","EYD2-Set Equipment USS-38-RMU (Schneider)","2025-10-16","2025-10-21","40"
"EYD","CON-8717","EYD2-Set Equipment USS-39-RMU (Schneider)","2025-10-16","2025-10-21","40"
"EYD","CON-8747","EYD2-Set Equipment USS-40-RMU (Schneider)","2025-10-16","2025-10-21","40"
"EYD","CON-8777","EYD2-Set Equipment USS-41-RMU (Schneider)","2025-10-16","2025-10-21","40"
"EYD","CON-BB-5295","EYD2-S14 Gen Trays Group 3","2025-10-16","2025-10-20","16"
"MYD","CON-8575","MYD2-Insulation S25","2025-10-19","2025-11-14","160"
"MYD","CON-017056","MYD1-Set & Anchor SS02 (Chiller)/SS01(Heat Exchanger)/SS03(Pump)/Install Chiller Skid Roof Bump/Set SS04(Exp.Tank)-MCP","2025-10-19","2025-10-21","16"
"MYD","CN-F-Z01.MYD.S21.PDC-2.1701","Ground MY05-XFMR-PDC-CUB-2 in Zone 1 MYD","2025-10-19","2025-10-20","8"
"MYD","CN-F-Z01.MYD.S21.PDC-2.1702","Ground MY05-PDC-CUB-2 in Zone 1 MYD","2025-10-19","2025-10-20","8"
"MYD","CN-F-Z01.MYD.S21.PDC-2.1716","Complete Pathway to MY05-XFMR-PDC-CUB-2 in Zone 1 MYD","2025-10-19","2025-10-20","8"
"MYD","CN-F-Z01.MYD.S21.PDC-2.1717","Complete Pathway to MY05-PDC-CUB-2 in Zone 1 MYD","2025-10-19","2025-10-20","8"
"USS YARD","CN-F-Z02.EYD.S14.L2.3395","L2 QC Electrical Install-EY06-USS-7 (Control)","2025-10-19","2025-10-21","16"
"USS YARD","CN-F-Z02.EYD.S14.L2.3398","L2 QC Electrical Install-EY06-USS-10 (Control)","2025-10-19","2025-10-21","16"
"USS YARD","116310084","Set LV-01-USS-02,USS 2-LV","2025-10-19","2025-10-20","8"
"MCP","588301293","CT Mount Panel Skid-MCP CTR 04,BUILDOUT","2025-10-19","2025-10-21","16"
"DCH","998296643","DCH1-Fire Riser 1-522-Install Fire Suppression Equipment","2025-10-19","2025-10-31","80"
"DCH","998296713","DCH1-Fire Riser 1-523-Hang,Tape,& Finish Drywall","2025-10-19","2025-10-24","40"
"DCH","998296873","DCH1-Restroom 1-513-Prime,1st,& Final Coat Paint","2025-10-19","2025-10-22","24"
"DCH","A1520","PMS-DCH2-Fiber Ring-Terminate Fiber","2025-10-19","2025-10-24","40"
"EYD","CON-BB-5125","EYD1-S14 Gen to GPS 480 Pulls Group 3","2025-10-19","2025-10-23","32"
"DCH","CON-7475","DCH1-BMS/PMS+Sec+Device install (breakout & detail) HA 10","2025-10-20","2025-10-22","16"
"USS YARD","CN-F-Z01.DCH.S18.TB.2048","Pull,Term,Test & Torque Feeder from EY05-SWGR-USS-18 to TAPBOX-29TOP","2025-10-20","2025-10-22","16"
"USS YARD","CN-F-Z01.DCH.S18.TB.2049","Pull,Term,Test & Torque Feeder from EY05-SWGR-USS-18 to TAPBOX-28TOP","2025-10-20","2025-10-22","16"
"USS YARD","CN-F-Z01.DCH.S18.TB.2050","Pull,Term,Test & Torque Feeder from EY05-SWGR-USS-18 to TAPBOX-25TOP","2025-10-20","2025-10-22","16"
"USS YARD","CX-F-Z01.EYD.S14.L2.702","L2 QC Electrical Install-EY05-SWGR-USS-17","2025-10-20","2025-10-22","16"
"MYD","CN-F-Z01.MYD.S24.MYD.3","Install Cable Tray at Z1 MYD PDC-01","2025-10-20","2025-10-27","40"
"USS YARD","842381752","Feeder Chiller (term,test,torque)-USS-01,USS 1-LV","2025-10-20","2025-10-27","40"
"MCP","588301234","CTS Stair install-MCP CTR 04,BUILDOUT","2025-10-20","2025-10-24","32"
"USS YARD","240366877","Set XFMR-USS-02,USS 2-XMFR","2025-10-20","2025-10-21","8"
"MCP","588331125","CT Unload-MCP CTR 04,BUILDOUT","2025-10-20","2025-10-21","8"
"DCH","A1380","PMS-DCH1-Shiraz Bus Plugs-Pull Wire @ SPD6","2025-10-20","2025-10-27","40"
"EYD","CON-BB-5305","EYD2-S14 Gen Trays Group 4","2025-10-20","2025-10-22","16"
"MYD","CON-017075","MYD1-Set Upper Cooling Tower Stairs (CTS)-MCP-01","2025-10-21","2025-10-24","24"
"SSS","CN-F-Z01.EYD.S14.SSS-E.441","Term & Torque MV Feeder from EY05-SWGR-SSS-E to EY05-SWGR-RMU-MDA-E at EY05-SWGR-RMU-MDA-E","2025-10-21","2025-11-04","80"
"SSS","CN-F-Z01.EYD.S14.SSS-E.445","Term & Torque MV Feeder from EY05-SWGR-SSS-E to EY05-SWGR-RMU-1 at EY05-SWGR-RMU-1","2025-10-21","2025-11-04","80"
"SSS","CN-F-Z01.EYD.S14.SSS-E.449","Term & Torque MV Feeder from EY05-SWGR-SSS-E to EY05-SWGR-RMU-3 at EY05-SWGR-RMU-3","2025-10-21","2025-11-04","80"
"SSS","CN-F-Z01.EYD.S14.SSS-E.455","Term & Torque MV Feeder from EY05-SWGR-SSS-E to EY05-SWGR-RMU-6 at EY05-SWGR-RMU-6","2025-10-21","2025-11-04","80"
"SSS","CN-F-Z01.EYD.S14.SSS-E.461","Term & Torque MV Feeder from EY05-SWGR-SSS-E to EY05-SWGR-RMU-9 at EY05-SWGR-RMU-9","2025-10-21","2025-11-04","80"
"SSS","CN-F-Z01.EYD.S14.USS-12.467","Term & Torque MV Feeder from EY05-SWGR-SSS-E to EY05-SWGR-RMU-12 at EY05-SWGR-RMU-12","2025-10-21","2025-11-04","80"
"SSS","CN-F-Z01.EYD.S14.USS-15.473","Term & Torque MV Feeder from EY05-SWGR-SSS-E to EY05-SWGR-RMU-15 at EY05-SWGR-RMU-15","2025-10-21","2025-11-04","80"
"SSS","CN-F-Z01.EYD.S14.USS-18.479","Term & Torque MV Feeder from EY05-SWGR-SSS-E to EY05-SWGR-RMU-18 at EY05-SWGR-RMU-18","2025-10-21","2025-11-04","80"
"SSS","CN-F-Z01.EYD.S14.USS-21.485","Term & Torque MV Feeder from EY05-SWGR-SSS-E to EY05-SWGR-RMU-21 at EY05-SWGR-RMU-21","2025-10-21","2025-11-04","80"
"SSS","CN-F-Z01.EYD.S14.USS-24.491","Term & Torque MV Feeder from EY05-SWGR-SSS-E to EY05-SWGR-RMU-24 at EY05-SWGR-RMU-24","2025-10-21","2025-11-04","80"
"SSS","CN-F-Z01.EYD.S14.SSS-E.520","Term & Torque MV Feeder from EY05-SWGR-SSS-E to EY05-SWGR-RMU-MDA-E at EY05-SWGR-SSS-E","2025-10-21","2025-11-04","80"
"SSS","CN-F-Z01.EYD.S14.SSS-E.524","Term & Torque MV Feeder from EY05-SWGR-SSS-E to EY05-SWGR-RMU-1 at EY05-SWGR-SSS-E","2025-10-21","2025-11-04","80"
"SSS","CN-F-Z01.EYD.S14.SSS-E.528","Term & Torque MV Feeder from EY05-SWGR-SSS-E to EY05-SWGR-RMU-3 at EY05-SWGR-SSS-E","2025-10-21","2025-11-04","80"
"SSS","CN-F-Z01.EYD.S14.SSS-E.534","Term & Torque MV Feeder from EY05-SWGR-SSS-E to EY05-SWGR-RMU-6 at EY05-SWGR-SSS-E","2025-10-21","2025-11-04","80"
"SSS","CN-F-Z01.EYD.S14.USS-9.540","Term & Torque MV Feeder from EY05-SWGR-SSS-E to EY05-SWGR-RMU-9 at EY05-SWGR-SSS-E","2025-10-21","2025-11-04","80"
"SSS","CN-F-Z01.EYD.S14.SSS-E.546","Term & Torque MV Feeder from EY05-SWGR-SSS-E to EY05-SWGR-RMU-12 at EY05-SWGR-SSS-E","2025-10-21","2025-11-04","80"
"SSS","CN-F-Z01.EYD.S14.USS-15.552","Term & Torque MV Feeder from EY05-SWGR-SSS-E to EY05-SWGR-RMU-15 at EY05-SWGR-SSS-E","2025-10-21","2025-11-04","80"
"SSS","CN-F-Z01.EYD.S14.USS-18.558","Term & Torque MV Feeder from EY05-SWGR-SSS-E to EY05-SWGR-RMU-18 at EY05-SWGR-SSS-E","2025-10-21","2025-11-04","80"
"SSS","CN-F-Z01.EYD.S14.SSS-E.564","Term & Torque MV Feeder from EY05-SWGR-SSS-E to EY05-SWGR-RMU-21 at EY05-SWGR-SSS-E","2025-10-21","2025-11-04","80"
"SSS","CN-F-Z01.EYD.S14.SSS-E.570","Term & Torque MV Feeder from EY05-SWGR-SSS-E to EY05-SWGR-RMU-24 at EY05-SWGR-SSS-E","2025-10-21","2025-11-04","80"
"EYD","CN-F-Z02.EYD.S14.USS-13.913","Ground EY06-SWGR-RMU-USS-13 in Zone 2 EYD","2025-10-21","2025-10-23","16"
"EYD","CN-F-Z02.EYD.S14.USS-14.916","Ground EY06-SWGR-RMU-USS-14 in Zone 2 EYD","2025-10-21","2025-10-23","16"
"EYD","CN-F-Z02.EYD.S14.USS-15.919","Ground EY06-SWGR-RMU-USS-15 in Zone 2 EYD","2025-10-21","2025-10-23","16"
"EYD","CN-F-Z02.EYD.S14.USS-16.922","Ground EY06-SWGR-RMU-USS-16 in Zone 2 EYD","2025-10-21","2025-10-23","16"
"EYD","CN-F-Z02.EYD.S14.USS-12.995","Complete Pathway to EY06-SWGR-RMU-USS-38in Zone 2 EYD","2025-10-21","2025-10-22","8"
"EYD","CN-F-Z02.EYD.S14.USS-13.998","Complete Pathway to EY06-SWGR-RMU-USS-39in Zone 2 EYD","2025-10-21","2025-10-22","8"
"EYD","CN-F-Z02.EYD.S14.USS-14.1001","Complete Pathway to EY06-SWGR-RMU-USS-40in Zone 2 EYD","2025-10-21","2025-10-22","8"
"EYD","CN-F-Z02.EYD.S14.USS-15.1004","Complete Pathway to EY06-SWGR-RMU-USS-15 in Zone 2 EYD","2025-10-21","2025-10-22","8"
"MCP","101367605","MCP Electrical Interconnects-MCP CTR 02,BUILDOUT","2025-10-21","2025-11-11","120"
"MCP","588351555","CT Build an Install-MCP CTR 04,BUILDOUT","2025-10-21","2025-10-28","40"
"MCP","101360958","610 Motor Conduit-MCP CTR 02,BUILDOUT","2025-10-21","2025-10-27","32"
"USS YARD","762307659","Set RMU-USS-02,USS 2-RMU","2025-10-21","2025-10-22","8"
"MCP","101316925","610 Motor Heater Conduit-MCP CTR 02,BUILDOUT","2025-10-21","2025-10-27","32"
"DCH","CON-7535","DCH1-BMS/PMS+Sec+Device install (breakout & detail)","2025-10-22","2025-10-24","16"
"USS YARD","CX-F-Z01.EYD.S14.L2.705","L2 QC Electrical Install-EY05-SWGR-USS-18","2025-10-22","2025-10-24","16"
"DCH","CN-F-Z01.DCH.S39.HA-07.0002","Install VESDA Panel for Inside Hot Aisle Loop SVH HA N-7 in Room 1-500-Zone 1 DCH","2025-10-22","2025-10-24","16"
"DCH","CN-F-Z01.DCH.S39.HA-08.0002","Install VESDA Panel for Inside Hot Aisle Loop SVH HA N-8 in Room 1-500-Zone 1 DCH","2025-10-22","2025-10-24","16"
"DCH","CN-F-Z01.DCH.S39.HA-09.0002","Install VESDA Panel for Inside Hot Aisle Loop SVH HA N-9 in Room 1-500-Zone 1 DCH","2025-10-22","2025-10-24","16"
"SSS","CN-F-Z02.EYD.S14.USS-12.1115","Pull & Test MV Feeder from EY06-SWGR-SSS-E to EY06-SWGR-RMU-USS-12","2025-10-22","2025-10-23","8"
"USS YARD","CN-F-Z02.EYD.S14.USS-13.1118","Pull & Test MV Feeder from EY06-SWGR-RMU-USS-12 to EY06-SWGR-RMU-USS-13","2025-10-22","2025-10-23","8"
"SSS","CN-F-Z02.EYD.S14.USS-14.1121","Pull & Test MV Feeder from EY06-SWGR-SSS-F to EY06-SWGR-RMU-USS-14","2025-10-22","2025-10-23","8"
"SSS","CN-F-Z02.EYD.S14.USS-15.1124","Pull & Test MV Feeder from EY06-SWGR-SSS-E to EY06-SWGR-RMU-USS-15","2025-10-22","2025-10-23","8"
"USS YARD","CN-F-Z02.EYD.S14.USS-14.1265","Pull & Test MV Feeder from EY06-SWGR-RMU-USS-14 to EY06-SWGR-RMU-USS-13","2025-10-22","2025-10-23","8"
"MYD","CN-F-Z01.MYD.S21.PDC-2.1700","Ground MY05-SWGR-RMU-PDC-CUB-2 in Zone 1 MYD","2025-10-22","2025-10-23","8"
"MYD","CN-F-Z01.MYD.S21.PDC-2.1715","Complete Pathway to MY05-SWGR-RMU-PDC-CUB-2 in Zone 1 MYD","2025-10-22","2025-10-23","8"
"USS YARD","CN-F-Z02.EYD.S18.HA69.74.0001","Install Cable Tray from Zone 2 USS 21-24 to Rows 69-74","2025-10-22","2025-10-27","24"
"USS YARD","CN-F-Z01.DCH.S18.TB.103","Pull,Term,Test & Torque Feeder from EY05-SWGR-USS-19 to TAPBOX-26BOT","2025-10-22","2025-10-24","16"
"USS YARD","CN-F-Z01.DCH.S18.TB.115","Pull,Term,Test & Torque Feeder from EY05-SWGR-USS-19 to TAPBOX-28BOT","2025-10-22","2025-10-24","16"
"USS YARD","CN-F-Z01.DCH.S18.TB.119","Pull,Term,Test & Torque Feeder from EY05-SWGR-USS-19 to TAPBOX-30TOP","2025-10-22","2025-10-24","16"
"EYD","CN-F-Z02.EYD.USS.25-31","EYD Zone 2 USS 25-26 Install Trestle Steel","2025-10-22","2025-10-29","40"
"USS YARD","116379655","Hard set rack & cable tray-USS-02,USS 2-LV","2025-10-22","2025-10-31","56"
"MCP","118308067","CT Drains & Blowdowns-MCP CTR 06,BUILDOUT","2025-10-22","2025-11-03","64"
"USS YARD","240345118","Grounding 1700,1701,1701-USS-02,USS 2-XMFR","2025-10-22","2025-10-27","24"
"DCH","998296893","DCH1-Restroom 1-513-Set AC/EF/EUHs","2025-10-22","2025-10-27","24"
"EYD","CON-BB-4735","EYD2--RMU to SSS-E DC Pulls","2025-10-22","2025-11-05","80"
"EYD","CON-BB-4775","EYD2--RMU to SSS-F DC Pulls","2025-10-22","2025-11-05","80"
"EYD","CON-BB-5315","EYD2-S14 Gen Trays Group 5","2025-10-22","2025-10-24","16"
"MYD","CX-10273","MYD1-MCP-02 Fiber Complete (Includes MAC patching to/from Nun) & NUN to NUN","2025-10-23","2025-10-30","40"
"USS YARD","CX-F-Z01.EYD.S14.L2.648","L2 QC Electrical Install-EY05-SWGR-USS-MDA-E","2025-10-23","2025-10-27","16"
"SSS","CN-F-Z02.EYD.S14.USS-12.1300","Term & Torque MV Feeder from EY06-SWGR-SSS-E to EY06-SWGR-RMU-USS-12 at EY06-SWGR-RMU-USS-12","2025-10-23","2025-10-24","8"
"USS YARD","CN-F-Z02.EYD.S14.USS-13.1302","Term & Torque MV Feeder from EY06-SWGR-RMU-USS-12 to EY06-SWGR-RMU-USS-13 at EY06-SWGR-RMU-USS-13","2025-10-23","2025-10-24","8"
"SSS","CN-F-Z02.EYD.S14.USS-14.1304","Term & Torque MV Feeder from EY06-SWGR-SSS-F to EY06-SWGR-RMU-USS-14 at EY06-SWGR-RMU-USS-14","2025-10-23","2025-10-24","8"
"SSS","CN-F-Z02.EYD.S14.USS-15.1306","Term & Torque MV Feeder from EY06-SWGR-SSS-E to EY06-SWGR-RMU-USS-15 at EY06-SWGR-RMU-USS-15","2025-10-23","2025-10-24","8"
"SSS","CN-F-Z02.EYD.S14.USS-12.1375","Term & Torque MV Feeder from EY06-SWGR-SSS-E to EY06-SWGR-RMU-USS-12 at EY06-SWGR-SSS-E","2025-10-23","2025-10-24","8"
"USS YARD","CN-F-Z02.EYD.S14.USS-13.1377","Term & Torque MV Feeder from EY06-SWGR-RMU-USS-12 to EY06-SWGR-RMU-USS-13 at EY06-SWGR-RMU-USS-12","2025-10-23","2025-10-24","8"
"SSS","CN-F-Z02.EYD.S14.USS-14.1379","Term & Torque MV Feeder from EY06-SWGR-SSS-F to EY06-SWGR-RMU-USS-14 at EY06-SWGR-SSS-F","2025-10-23","2025-10-24","8"
"SSS","CN-F-Z02.EYD.S14.USS-15.1381","Term & Torque MV Feeder from EY06-SWGR-SSS-E to EY06-SWGR-RMU-USS-15 at EY06-SWGR-SSS-E","2025-10-23","2025-10-24","8"
"USS YARD","CN-F-Z02.EYD.S14.USS-14.1430","Term & Torque MV Feeder from EY06-SWGR-RMU-USS-14 to EY06-SWGR-RMU-USS-13 at EY06-SWGR-RMU-USS-13","2025-10-23","2025-10-24","8"
"USS YARD","CN-F-Z02.EYD.S14.USS-14.1443","Term & Torque MV Feeder from EY06-SWGR-RMU-USS-14 to EY06-SWGR-RMU-USS-13 at EY06-SWGR-RMU-USS-14","2025-10-23","2025-10-24","8"
"USS YARD","CN-F-Z02.EYD.S14.CW.3277","Pull,Term,Test & Torque Feeder from EY06-USS-12 (Control) to EY06-USS-13 (Control)","2025-10-23","2025-10-24","8"
"USS YARD","CN-F-Z02.EYD.S14.CW.3350","Pull,Term,Test & Torque Feeder from EY06-USS-14 (Control) to EY06-USS-13 (Control)","2025-10-23","2025-10-24","8"
"MCP","790394710","610 Motor Wire Pulls-MCP CTR 01,BUILDOUT","2025-10-23","2025-10-27","16"
"MCP","790388594","610 Motor Heater Wire Pulls-MCP CTR 01,BUILDOUT","2025-10-23","2025-10-27","16"
"MCP","118354923","CTS Electrical Conduit-MCP CTR 06,BUILDOUT","2025-10-23","2025-10-24","8"
"EYD","CON-8807","EYD2-Set Equipment USS-42-RMU (Schneider)","2025-10-23","2025-10-28","40"
"EYD","CON-8837","EYD2-Set Equipment USS-43-RMU (Schneider)","2025-10-23","2025-10-28","40"
"EYD","CON-8867","EYD2-Set Equipment USS-44-RMU (Schneider)","2025-10-23","2025-10-28","40"
"EYD","CON-8897","EYD2-Set Equipment USS-45-RMU (Schneider)","2025-10-23","2025-10-28","40"
"EYD","CON-BB-5135","EYD1-S14 Gen to GPS 480 Pulls Group 4","2025-10-23","2025-10-29","32"
"DCH","CON-7620","DCH1-BMS/PMS+Sec+Device install (breakout & detail) HA 12","2025-10-26","2025-10-28","16"
"USS YARD","CN-F-Z01.DCH.S18.TB.2051","Pull,Term,Test & Torque Feeder from EY05-SWGR-USS-20 to TAPBOX-27BOT","2025-10-26","2025-10-28","16"
"USS YARD","CN-F-Z01.DCH.S18.TB.2052","Pull,Term,Test & Torque Feeder from EY05-SWGR-USS-20 to TAPBOX-29BOT","2025-10-26","2025-10-28","16"
"USS YARD","CN-F-Z01.DCH.S18.TB.2053","Pull,Term,Test & Torque Feeder from EY05-SWGR-USS-20 to TAPBOX-30BOT","2025-10-26","2025-10-28","16"
"USS YARD","CX-F-Z01.EYD.S14.L2.708","L2 QC Electrical Install-EY05-SWGR-USS-19","2025-10-26","2025-10-28","16"
"DCH","CN-F-Z01.DCH.S39.HA-07.0001","Install VESDA Panel for Inside Hot Aisle Loop SVH HA S-7 in Room 1-500-Zone 1 DCH","2025-10-26","2025-10-28","16"
"DCH","CN-F-Z01.DCH.S39.HA-08.0001","Install VESDA Panel for Inside Hot Aisle Loop SVH HA S-8 in Room 1-500-Zone 1 DCH","2025-10-26","2025-10-28","16"
"DCH","CN-F-Z01.DCH.S39.HA-09.0001","Install VESDA Panel for Inside Hot Aisle Loop SVH HA S-9 in Room 1-500-Zone 1 DCH","2025-10-26","2025-10-28","16"
"DCH","CN-F-Z02.DCH.S39.HA-29.0002","Install VESDA Panel for Inside Hot Aisle Loop SVH HA N-29 in Room 1-550-Zone 2 DCH","2025-10-26","2025-10-28","16"
"DCH","CN-F-Z02.DCH.S39.HA-30.0002","Install VESDA Panel for Inside Hot Aisle Loop SVH HA N-30 in Room 1-550-Zone 2 DCH","2025-10-26","2025-10-28","16"
"DCH","CN-F-Z02.DCH.S39.HA-31.0002","Install VESDA Panel for Inside Hot Aisle Loop SVH HA N-31 in Room 1-550-Zone 2 DCH","2025-10-26","2025-10-28","16"
"USS YARD","CN-F-Z02.EYD.S14.L2.3401","L2 QC Electrical Install-EY06-USS-13 (Control)","2025-10-26","2025-10-28","16"
"MCP","118331435","CT Mount Panel Skid-MCP CTR 06,BUILDOUT","2025-10-26","2025-10-28","16"
"MCP","588321949","Final Cooling Tower Connections-Condenser / Sweeper Piping Install-MCP CTR 04,BUILDOUT","2025-10-26","2025-10-28","16"
"DCH","998296733","DCH1-Fire Riser 1-523-Prime,1st,& Final Coat Paint","2025-10-26","2025-10-29","24"
"DCH","998296793","DCH1-Fire Riser 1-524-Hang,Tape,& Finish Drywall","2025-10-26","2025-10-31","40"
"EYD","CON-BB-4995","EYD1-S18 USS 480 Tap Box Terms & Torques Group 4","2025-10-26","2025-11-07","80"
"EYD","CON-BB-5325","EYD2-S14 Gen Trays Group 6","2025-10-26","2025-10-28","16"
"MCP","CN-F-Z01.MYD.S24.PDC-1.1730","Pull,Term,Test & Torque Feeder from MY05-PDC-CUB-1 to MCP1-Chiller","2025-10-27","2025-11-03","40"
"MCP","790394078","Receptacles wire pulls & terms-MCP CTR 01,BUILDOUT","2025-10-27","2025-11-04","48"
"MCP","118342255","CTS Stair install-MCP CTR 06,BUILDOUT","2025-10-27","2025-10-31","32"
"MCP","118361576","CT Unload-MCP CTR 06,BUILDOUT","2025-10-27","2025-10-28","8"
"MCP","101344664","Install EFL / F-MCP CTR 02,BUILDOUT","2025-10-27","2025-10-31","32"
"USS YARD","842385276","BDC for MY-01-USS-01,USS 1-LV","2025-10-27","2025-11-03","40"
"MCP","101399702","Basin Heater Conduits-MCP CTR 02,BUILDOUT","2025-10-27","2025-10-31","32"
"MCP","790391419","EFL / FG Wire Pulls-MCP CTR 01,BUILDOUT","2025-10-27","2025-11-04","48"
"DCH","998296913","DCH1-Restroom 1-513-Install Ceramic Tile","2025-10-27","2025-11-03","40"
"DCH","A1390","PMS-DCH1-Shiraz Bus Plugs-Terminate @ SPD Cabinets","2025-10-27","2025-11-03","40"
"DCH","CON-7695","DCH1-BMS/PMS+Sec+Device install (breakout & detail) HA 13","2025-10-28","2025-10-30","16"
"USS YARD","CX-F-Z01.EYD.S14.L2.711","L2 QC Electrical Install-EY05-SWGR-USS-20","2025-10-28","2025-10-30","16"
"SSS","CX-F-Z01.EYD.S14.L2.782","L2 QC Electrical Install-EY05-PACK-SSS-E-AC-3","2025-10-28","2025-10-30","16"
"DCH","CN-F-Z02.DCH.S39.HA-29.0001","Install VESDA Panel for Inside Hot Aisle Loop SVH HA S-29 in Room 1-550-Zone 2 DCH","2025-10-28","2025-10-30","16"
"DCH","CN-F-Z02.DCH.S39.HA-30.0001","Install VESDA Panel for Inside Hot Aisle Loop SVH HA S-30 in Room 1-550-Zone 2 DCH","2025-10-28","2025-10-30","16"
"DCH","CN-F-Z02.DCH.S39.HA-31.0001","Install VESDA Panel for Inside Hot Aisle Loop SVH HA S-31 in Room 1-550-Zone 2 DCH","2025-10-28","2025-10-30","16"
"EYD","CN-F-Z02.EYD.S14.USS-17.925","Ground EY06-SWGR-RMU-USS-17 in Zone 2 EYD","2025-10-28","2025-10-30","16"
"EYD","CN-F-Z02.EYD.S14.USS-18.928","Ground EY06-SWGR-RMU-USS-18 in Zone 2 EYD","2025-10-28","2025-10-30","16"
"EYD","CN-F-Z02.EYD.S14.USS-19.931","Ground EY06-SWGR-RMU-USS-19 in Zone 2 EYD","2025-10-28","2025-10-30","16"
"EYD","CN-F-Z02.EYD.S14.USS-20.934","Ground EY06-SWGR-RMU-USS-20 in Zone 2 EYD","2025-10-28","2025-10-30","16"
"EYD","CN-F-Z02.EYD.S14.USS-16.1007","Complete Pathway to EY06-SWGR-RMU-USS-42in Zone 2 EYD","2025-10-28","2025-10-29","8"
"EYD","CN-F-Z02.EYD.S14.USS-17.1010","Complete Pathway to EY06-SWGR-RMU-USS-43in Zone 2 EYD","2025-10-28","2025-10-29","8"
"EYD","CN-F-Z02.EYD.S14.USS-18.1013","Complete Pathway to EY06-SWGR-RMU-USS-44in Zone 2 EYD","2025-10-28","2025-10-29","8"
"EYD","CN-F-Z02.EYD.S14.USS-19.1016","Complete Pathway to EY06-SWGR-RMU-USS-45in Zone 2 EYD","2025-10-28","2025-10-29","8"
"USS YARD","CN-F-Z01.DCH.S18.TB.123","Pull,Term,Test & Torque Feeder from EY05-SWGR-USS-21 to TAPBOX-31BOT","2025-10-28","2025-10-30","16"
"USS YARD","CN-F-Z01.DCH.S18.TB.131","Pull,Term,Test & Torque Feeder from EY05-SWGR-USS-21 to TAPBOX-32TOP","2025-10-28","2025-10-30","16"
"USS YARD","CN-F-Z01.DCH.S18.TB.135","Pull,Term,Test & Torque Feeder from EY05-SWGR-USS-21 to TAPBOX-33TOP","2025-10-28","2025-10-30","16"
"USS YARD","352398055","Cable Tray Rack Loose Set-USS-04,USS 4-LV","2025-10-28","2025-10-29","8"
"MCP","588383328","CT Stair Install-MCP CTR 04,BUILDOUT","2025-10-28","2025-11-03","32"
"MCP","118320965","CT Build an Install-MCP CTR 06,BUILDOUT","2025-10-28","2025-11-04","40"
"MYD","374319741","CN-F-Z01.MYD.S21.PDC-1.1728-USS-04,USS-4 RMU","2025-10-28","2025-10-29","8"
"EYD","CON-BB-5335","EYD2-S14 Gen to GPS 480 Pulls Group 1","2025-10-28","2025-11-03","32"
"DCH","CX-11013","DCH2-Flushing Activity-Hall/MYD Second Half","2025-10-29","2025-11-19","120"
"USS YARD","CN-F-Z02.EYD.S14.USS-16.1127","Pull & Test MV Feeder from EY06-SWGR-RMU-USS-15 to EY06-SWGR-RMU-USS-16","2025-10-29","2025-10-30","8"
"SSS","CN-F-Z02.EYD.S14.USS-17.1130","Pull & Test MV Feeder from EY06-SWGR-SSS-F to EY06-SWGR-RMU-USS-17","2025-10-29","2025-10-30","8"
"SSS","CN-F-Z02.EYD.S14.USS-18.1133","Pull & Test MV Feeder from EY06-SWGR-SSS-E to EY06-SWGR-RMU-USS-18","2025-10-29","2025-10-30","8"
"USS YARD","CN-F-Z02.EYD.S14.USS-19.1136","Pull & Test MV Feeder from EY06-SWGR-RMU-USS-18 to EY06-SWGR-RMU-USS-19","2025-10-29","2025-10-30","8"
"USS YARD","CN-F-Z02.EYD.S14.USS-17.1266","Pull & Test MV Feeder from EY06-SWGR-RMU-USS-17 to EY06-SWGR-RMU-USS-16","2025-10-29","2025-10-30","8"
"USS YARD","CN-F-Z02.EYD.S18.HA75.76.0001","Install Cable Tray from Zone 2 USS 25-26 to Rows 75-76","2025-10-29","2025-11-03","24"
"USS YARD","352333071","Set PDC-USS-04,USS 4-LV","2025-10-29","2025-10-30","8"
"Conveyance","209324045","Conveyance Steel Seq 1-MUP,UG & STRUCT","2025-10-29","2025-11-12","80"
"DCH","998296703","DCH1-Fire Riser 1-523-Set EUH","2025-10-29","2025-10-30","8"
"EYD","CON-BB-5145","EYD1-S14 Gen to GPS 480 Pulls Group 5","2025-10-29","2025-11-03","24"
"EYD","CON-BB-5485","EYD2-S18 USS 480 Tap Box Pulls","2025-10-29","2025-11-26","160"
"SSS","PRO-029352","Deliver-Zilla RMU/USSs ** OFE Tracker 11/07/2025**","2025-10-30","2025-10-31","8"
"SSS","PRO-029353","Deliver-Zilla LV XMFR/USSs ** OFE Tracker 11/07/2025** (change 1/27/25)","2025-10-30","2025-10-31","8"
"MYD","PRO-029354","MYD2-Deliver-Zilla LV SWGR/USSs-** OFE Tracker 11/07/2025**","2025-10-30","2025-10-31","8"
"EYD","CON-7185","EYD2-Set Equipment SSS2 A/B (E-House)","2025-10-30","2025-11-05","32"
"EYD","CON-7595","EYD2-Set Equipment GPS2","2025-10-30","2025-11-05","32"
"DCH","CON-7770","DCH1-BMS/PMS+Sec+Device install (breakout & detail) HA 14","2025-10-30","2025-11-03","16"
"MYD","CX-10394","MYD1-MCP-04 Fiber Complete (Includes MAC patching to/from Nun) & NUN to NUN","2025-10-30","2025-11-06","40"
"USS YARD","CN-F-Z01.DCH.S18.TB.2054","Pull,Term,Test & Torque Feeder from EY05-SWGR-USS-22 to TAPBOX-35TOP","2025-10-30","2025-11-03","16"
"USS YARD","CN-F-Z01.DCH.S18.TB.2055","Pull,Term,Test & Torque Feeder from EY05-SWGR-USS-22 to TAPBOX-34TOP","2025-10-30","2025-11-03","16"
"USS YARD","CN-F-Z01.DCH.S18.TB.2056","Pull,Term,Test & Torque Feeder from EY05-SWGR-USS-22 to TAPBOX-31TOP","2025-10-30","2025-11-03","16"
"USS YARD","CX-F-Z01.EYD.S14.L2.714","L2 QC Electrical Install-EY05-SWGR-USS-21","2025-10-30","2025-11-03","16"
"DCH","CN-F-Z02.DCH.S36.DCH.0003","Place,Anchor,Fit-Out & Ground CCA-6 in Zone 2 DCH","2025-10-30","2025-10-31","8"
"USS YARD","CN-F-Z02.EYD.S14.USS-16.1308","Term & Torque MV Feeder from EY06-SWGR-RMU-USS-15 to EY06-SWGR-RMU-USS-16 at EY06-SWGR-RMU-USS-16","2025-10-30","2025-10-31","8"
"SSS","CN-F-Z02.EYD.S14.USS-17.1310","Term & Torque MV Feeder from EY06-SWGR-SSS-F to EY06-SWGR-RMU-USS-17 at EY06-SWGR-RMU-USS-17","2025-10-30","2025-10-31","8"
"SSS","CN-F-Z02.EYD.S14.USS-18.1312","Term & Torque MV Feeder from EY06-SWGR-SSS-E to EY06-SWGR-RMU-USS-18 at EY06-SWGR-RMU-USS-18","2025-10-30","2025-10-31","8"
"USS YARD","CN-F-Z02.EYD.S14.USS-19.1314","Term & Torque MV Feeder from EY06-SWGR-RMU-USS-18 to EY06-SWGR-RMU-USS-19 at EY06-SWGR-RMU-USS-19","2025-10-30","2025-10-31","8"
"USS YARD","CN-F-Z02.EYD.S14.USS-16.1383","Term & Torque MV Feeder from EY06-SWGR-RMU-USS-15 to EY06-SWGR-RMU-USS-16 at EY06-SWGR-RMU-USS-15","2025-10-30","2025-10-31","8"
"SSS","CN-F-Z02.EYD.S14.USS-17.1385","Term & Torque MV Feeder from EY06-SWGR-SSS-F to EY06-SWGR-RMU-USS-17 at EY06-SWGR-SSS-F","2025-10-30","2025-10-31","8"
"SSS","CN-F-Z02.EYD.S14.USS-18.1387","Term & Torque MV Feeder from EY06-SWGR-SSS-E to EY06-SWGR-RMU-USS-18 at EY06-SWGR-SSS-E","2025-10-30","2025-10-31","8"
"USS YARD","CN-F-Z02.EYD.S14.USS-19.1389","Term & Torque MV Feeder from EY06-SWGR-RMU-USS-18 to EY06-SWGR-RMU-USS-19 at EY06-SWGR-RMU-USS-18","2025-10-30","2025-10-31","8"
"USS YARD","CN-F-Z02.EYD.S14.USS-17.1431","Term & Torque MV Feeder from EY06-SWGR-RMU-USS-17 to EY06-SWGR-RMU-USS-16 at EY06-SWGR-RMU-USS-16","2025-10-30","2025-10-31","8"
"USS YARD","CN-F-Z02.EYD.S14.USS-17.1444","Term & Torque MV Feeder from EY06-SWGR-RMU-USS-17 to EY06-SWGR-RMU-USS-16 at EY06-SWGR-RMU-USS-17","2025-10-30","2025-10-31","8"
"MYD","CN-F-Z01.MYD.S21.USS-4.1704","Ground MY05-XFMR-USS-CUB-4 in Zone 1 MYD","2025-10-30","2025-10-31","8"
"MYD","CN-F-Z01.MYD.S21.USS-4.1705","Ground MY05-SWGR-USS-CUB-4 in Zone 1 MYD","2025-10-30","2025-10-31","8"
"MYD","CN-F-Z01.MYD.S21.USS-4.1720","Complete Pathway to MY05 SWGR-USS-CUB-4 in Zone 1 MYD","2025-10-30","2025-10-31","8"
"GPS","CN-F-Z01.EYD.S14.EYD.0001","Install Cable Tray from Z1 EY-05-GEN 1-7 to GPS-1","2025-10-30","2025-11-05","32"
"USS YARD","CN-F-Z02.EYD.S14.CW.3280","Pull,Term,Test & Torque Feeder from EY06-USS-15 (Control) to EY06-USS-16 (Control)","2025-10-30","2025-10-31","8"
"USS YARD","CN-F-Z02.EYD.S14.CW.3283","Pull,Term,Test & Torque Feeder from EY06-USS-18 (Control) to EY06-USS-19 (Control)","2025-10-30","2025-10-31","8"
"USS YARD","CN-F-Z02.EYD.S14.CW.3351","Pull,Term,Test & Torque Feeder from EY06-USS-17 (Control) to EY06-USS-16 (Control)","2025-10-30","2025-10-31","8"
"USS YARD","352330385","Set LV-01-USS-04,USS 4-LV","2025-10-30","2025-10-31","8"
"DCH","998296693","DCH1-Fire Riser 1-523-Install Finishes","2025-10-30","2025-10-31","8"
"EYD","CON-8927","EYD2-Set Equipment USS-46-RMU (Schneider)","2025-10-30","2025-11-04","40"
"EYD","CON-8957","EYD2-Set Equipment USS-47-RMU (Schneider)","2025-10-30","2025-11-04","40"
"EYD","CON-81017","EYD2-Set Equipment USS-49-RMU (Schneider)","2025-10-30","2025-11-04","40"
"EYD","CON-81047","EYD2-Set Equipment USS-50-RMU (Schneider)","2025-10-30","2025-11-04","40"
"EYD","CON-81107","EYD2-Set Equipment USS-52-RMU (Schneider)","2025-10-30","2025-11-04","40"
"DCH","019087937","DCH2-Fire Riser 1-571-Hang,Tape,& Finish Drywall","2025-11-02","2025-11-07","40"
"USS YARD","CN-F-Z02.EYD.S14.L2.3404","L2 QC Electrical Install-EY06-USS-16 (Control)","2025-11-02","2025-11-04","16"
"MYD","CN-F-Z01.MYD.S24.MYD.8","Install Cable Tray at Z1 MYD PDC-02","2025-11-02","2025-11-07","40"
"USS YARD","395308623","Set XFMR-USS-04,USS-4 XMFR","2025-11-02","2025-11-03","8"
"MCP","118345171","Final Cooling Tower Connections-Condenser / Sweeper Piping Install-MCP CTR 06,BUILDOUT","2025-11-02","2025-11-04","16"
"MCP","101398862","Install Conduit & CT Receptacles Conduit-MCP CTR 02,BUILDOUT","2025-11-02","2025-11-10","48"
"USS YARD","116332912","Feeder Chiller (term,test,torque)-USS-02,USS 2-LV","2025-11-02","2025-11-07","40"
"DCH","998296723","DCH1-Fire Riser 1-523-Install Fire Suppression Equipment","2025-11-02","2025-11-14","80"
"DCH","998296813","DCH1-Fire Riser 1-524-Prime,1st,& Final Coat Paint","2025-11-02","2025-11-05","24"
"EYD","CON-BB-4665","EYD1-Perun to SSS-E MV Pulls","2025-11-02","2025-11-14","80"
"EYD","CON-BB-4675","EYD1-Perun to SSS-F MV Pulls","2025-11-02","2025-11-14","80"
"DCH","CON-7820","DCH1-BMS/PMS+Sec+Device install (breakout & detail) HA 15","2025-11-03","2025-11-05","16"
"MYD","CON-016988","MYD1-Install PCW Building Risers-MCP-01","2025-11-03","2025-11-04","8"
"USS YARD","CX-F-Z01.EYD.S14.L2.717","L2 QC Electrical Install-EY05-SWGR-USS-22","2025-11-03","2025-11-05","16"
"DCH","CN-F-Z02.DCH.S36.DCH.0006","Place,Anchor,Fit-Out & Ground CCB-6 in Zone 2 DCH","2025-11-03","2025-11-04","8"
"MYD","CN-F-Z01.MYD.S21.USS-4.1719","Complete Pathway to MY05-XFMR-USS-CUB-4 in Zone 1 MYD","2025-11-03","2025-11-04","8"
"MCP","CN-F-Z01.MYD.S24.PDC-1.1731","Pull,Term,Test & Torque Feeder from MY05-PDC-CUB-1 to MCP1-BDC","2025-11-03","2025-11-10","40"
"MCP","CX-F-Z01.MYD.S24.L2.1812","L2 QC Electrical Install-MCP1-Chiller","2025-11-03","2025-11-05","16"
"USS YARD","CN-F-Z01.DCH.S18.TB.127","Pull,Term,Test & Torque Feeder from EY05-SWGR-USS-23 to TAPBOX-32BOT","2025-11-03","2025-11-05","16"
"USS YARD","CN-F-Z01.DCH.S18.TB.139","Pull,Term,Test & Torque Feeder from EY05-SWGR-USS-23 to TAPBOX-34BOT","2025-11-03","2025-11-05","16"
"USS YARD","CN-F-Z01.DCH.S18.TB.143","Pull,Term,Test & Torque Feeder from EY05-SWGR-USS-23 to TAPBOX-36TOP","2025-11-03","2025-11-05","16"
"USS YARD","374375951","Set RMU-USS-04,USS-4 RMU","2025-11-03","2025-11-04","8"
"MCP","588385784","610 Motor Conduit-MCP CTR 04,BUILDOUT","2025-11-03","2025-11-07","32"
"MCP","588324333","MCP Electrical Interconnects-MCP CTR 04,BUILDOUT","2025-11-03","2025-11-24","120"
"USS YARD","842372752","Pull PDC 1+2 to FPH-USS-01,USS 1-LV","2025-11-03","2025-11-06","24"
"MCP","101317979","Install EFL / FG Fixtures-MCP CTR 02,BUILDOUT","2025-11-03","2025-11-10","40"
"MCP","588347878","610 Motor Heater Conduit-MCP CTR 04,BUILDOUT","2025-11-03","2025-11-07","32"
"DCH","998296923","DCH1-Restroom 1-513-Install Bathroom Fixtures/Devices/Finishes","2025-11-03","2025-11-10","40"
"DCH","A1110","BMS-DCH1-Pull Fiber Loop","2025-11-03","2025-11-17","80"
"EYD","CON-BB-5155","EYD1-S14 Gen to GPS 480 Pulls Group 6","2025-11-03","2025-11-06","24"
"EYD","CON-BB-5345","EYD2-S14 Gen to GPS 480 Pulls Group 2","2025-11-03","2025-11-07","32"
"USS YARD","CN-F-Z01.EYD.S14.USS-25.280","Pull & Test MV Feeder from EY05-SWGR-RMU-25 to EY05-XFMR-USS-25","2025-11-04","2025-11-11","40"
"USS YARD","CN-F-Z01.EYD.S14.USS-6.457","Term & Torque MV Feeder from EY05-SWGR-RMU-USS-6 to EY05-SWGR-RMU-USS-7 at EY05-SWGR-RMU-USS-7","2025-11-04","2025-11-25","120"
"USS YARD","CN-F-Z01.EYD.S14.USS-9.463","Term & Torque MV Feeder from EY05-SWGR-RMU-USS-9 to EY05-SWGR-RMU-USS-10 at EY05-SWGR-RMU-USS-10","2025-11-04","2025-11-25","120"
"USS YARD","CN-F-Z01.EYD.S14.USS-13.469","Term & Torque MV Feeder from EY05-SWGR-RMU-USS-12 to EY05-SWGR-RMU-USS-13 at EY05-SWGR-RMU-USS-13","2025-11-04","2025-11-25","120"
"USS YARD","CN-F-Z01.EYD.S14.USS-16.475","Term & Torque MV Feeder from EY05-SWGR-RMU-USS-15 to EY05-SWGR-RMU-USS-16 at EY05-SWGR-RMU-USS-16","2025-11-04","2025-11-25","120"
"USS YARD","CN-F-Z01.EYD.S14.USS-18.481","Term & Torque MV Feeder from EY05-SWGR-RMU-USS-18 to EY05-SWGR-RMU-USS-19 at EY05-SWGR-RMU-USS-19","2025-11-04","2025-11-25","120"
"USS YARD","CN-F-Z01.EYD.S14.USS-22.487","Term & Torque MV Feeder from EY05-SWGR-RMU-USS-21 to EY05-SWGR-RMU-USS-22 at EY05-SWGR-RMU-USS-22","2025-11-04","2025-11-25","120"
"USS YARD","CN-F-Z01.EYD.S14.USS-25.493","Term & Torque MV Feeder from EY05-SWGR-RMU-USS-24 to EY05-SWGR-RMU-USS-25 at EY05-SWGR-RMU-USS-25","2025-11-04","2025-11-25","120"
"USS YARD","CN-F-Z01.EYD.S14.USS-3.530","Term & Torque MV Feeder from EY05-SWGR-RMU-USS-3 to EY05-SWGR-RMU-USS-4 at EY05-SWGR-RMU-USS-3","2025-11-04","2025-11-25","120"
"USS YARD","CN-F-Z01.EYD.S14.USS-9.542","Term & Torque MV Feeder from EY05-SWGR-RMU-USS-9 to EY05-SWGR-RMU-USS-10 at EY05-SWGR-RMU-USS-9","2025-11-04","2025-11-25","120"
"USS YARD","CN-F-Z01.EYD.S14.USS-16.554","Term & Torque MV Feeder from EY05-SWGR-RMU-USS-15 to EY05-SWGR-RMU-USS-16 at EY05-SWGR-RMU-USS-15","2025-11-04","2025-11-25","120"
"USS YARD","CN-F-Z01.EYD.S14.USS-18.560","Term & Torque MV Feeder from EY05-SWGR-RMU-USS-18 to EY05-SWGR-RMU-USS-19 at EY05-SWGR-RMU-USS-18","2025-11-04","2025-11-25","120"
"USS YARD","CN-F-Z01.EYD.S14.USS-21.566","Term & Torque MV Feeder from EY05-SWGR-RMU-USS-21 to EY05-SWGR-RMU-USS-22 at EY05-SWGR-RMU-USS-21","2025-11-04","2025-11-25","120"
"USS YARD","CN-F-Z01.EYD.S14.USS-2.597","Term & Torque MV Feeder from EY05-SWGR-RMU-2 to EY05-SWGR-RMU-1 at EY05-SWGR-RMU-USS-1","2025-11-04","2025-11-25","120"
"USS YARD","CN-F-Z01.EYD.S14.USS-8.599","Term & Torque MV Feeder from EY05-SWGR-RMU-USS-8 to EY05-SWGR-RMU-USS-7 at EY05-SWGR-RMU-USS-7","2025-11-04","2025-11-25","120"
"USS YARD","CN-F-Z01.EYD.S14.USS-11.600","Term & Torque MV Feeder from EY05-SWGR-RMU-USS-11 to EY05-SWGR-RMU-USS-10 at EY05-SWGR-RMU-USS-10","2025-11-04","2025-11-25","120"
"USS YARD","CN-F-Z01.EYD.S14.USS-14.601","Term & Torque MV Feeder from EY05-SWGR-RMU-USS-14 to EY05-SWGR-RMU-USS-13 at EY05-SWGR-RMU-USS-13","2025-11-04","2025-11-25","120"
"USS YARD","CN-F-Z01.EYD.S14.USS-17.602","Term & Torque MV Feeder from EY05-SWGR-RMU-USS-17 to EY05-SWGR-RMU-USS-16 at EY05-SWGR-RMU-USS-16","2025-11-04","2025-11-25","120"
"USS YARD","CN-F-Z01.EYD.S14.USS-20.603","Term & Torque MV Feeder from EY05-SWGR-RMU-USS-20 to EY05-SWGR-RMU-USS-19 at EY05-SWGR-RMU-USS-19","2025-11-04","2025-11-25","120"
"USS YARD","CN-F-Z01.EYD.S14.USS-23.604","Term & Torque MV Feeder from EY05-SWGR-RMU-USS-23 to EY05-SWGR-RMU-USS-22 at EY05-SWGR-RMU-USS-22","2025-11-04","2025-11-25","120"
"USS YARD","CN-F-Z01.EYD.S14.USS-26.605","Term & Torque MV Feeder from EY05-SWGR-RMU-USS-26 to EY05-SWGR-RMU-USS-25 at EY05-SWGR-RMU-USS-25","2025-11-04","2025-11-25","120"
"USS YARD","CN-F-Z01.EYD.S14.USS-2.610","Term & Torque MV Feeder from EY05-SWGR-RMU-USS-2 to EY05-SWGR-RMU-USS-1 at EY05-SWGR-RMU-USS-2","2025-11-04","2025-11-25","120"
"USS YARD","CN-F-Z01.EYD.S14.USS-5.611","Term & Torque MV Feeder from EY05-SWGR-RMU-USS-5 to EY05-SWGR-RMU-USS-4 at EY05-SWGR-RMU-USS-5","2025-11-04","2025-11-25","120"
"USS YARD","CN-F-Z01.EYD.S14.USS-8.612","Term & Torque MV Feeder from EY05-SWGR-RMU-USS-8 to EY05-SWGR-RMU-USS-7 at EY05-SWGR-RMU-USS-8","2025-11-04","2025-11-25","120"
"USS YARD","CN-F-Z01.EYD.S14.USS-11.613","Term & Torque MV Feeder from EY05-SWGR-RMU-USS-11 to EY05-SWGR-RMU-USS-10 at EY05-SWGR-RMU-USS-11","2025-11-04","2025-11-25","120"
"USS YARD","CN-F-Z01.EYD.S14.USS-14.614","Term & Torque MV Feeder from EY05-SWGR-RMU-USS-14 to EY05-SWGR-RMU-USS-13 at EY05-SWGR-RMU-USS-14","2025-11-04","2025-11-25","120"
"USS YARD","CN-F-Z01.EYD.S14.USS-17.615","Term & Torque MV Feeder from EY05-SWGR-RMU-USS-17 to EY05-SWGR-RMU-USS-16 at EY05-SWGR-RMU-USS-17","2025-11-04","2025-11-25","120"
"USS YARD","CN-F-Z01.EYD.S14.USS-20.616","Term & Torque MV Feeder from EY05-SWGR-RMU-USS-20 to EY05-SWGR-RMU-USS-19 at EY05-SWGR-RMU-USS-20","2025-11-04","2025-11-25","120"
"USS YARD","CN-F-Z01.EYD.S14.USS-23.617","Term & Torque MV Feeder from EY05-SWGR-RMU-USS-23 to EY05-SWGR-RMU-USS-22 at EY05-SWGR-RMU-USS-23","2025-11-04","2025-11-25","120"
"USS YARD","CN-F-Z01.EYD.S14.USS-26.618","Term & Torque MV Feeder from EY05-SWGR-RMU-USS-26 to EY05-SWGR-RMU-USS-25 at EY05-SWGR-RMU-USS-26","2025-11-04","2025-11-25","120"
"SSS","CX-F-Z01.EYD.S14.L2.645","L2 QC Electrical Install-EY05-PNL-SSS-F-BDC","2025-11-04","2025-11-06","16"
"SSS","CX-F-Z01.EYD.S14.L2.747","L2 QC Electrical Install-EY05-SWGR-SSS-E-MTS","2025-11-04","2025-11-06","16"
"SSS","CX-F-Z01.EYD.S14.L2.766","L2 QC Electrical Install-EY05-PNL-SSS-F-RP","2025-11-04","2025-11-06","16"
"EYD","CN-F-Z02.EYD.S14.USS-21.937","Ground EY06-SWGR-RMU-USS-21 in Zone 2 EYD","2025-11-04","2025-11-06","16"
"EYD","CN-F-Z02.EYD.S14.USS-22.940","Ground EY06-SWGR-RMU-USS-22 in Zone 2 EYD","2025-11-04","2025-11-06","16"
"EYD","CN-F-Z02.EYD.S14.USS-23.943","Ground EY06-SWGR-RMU-USS-23 in Zone 2 EYD","2025-11-04","2025-11-06","16"
"EYD","CN-F-Z02.EYD.S14.USS-24.946","Ground EY06-SWGR-RMU-USS-24 in Zone 2 EYD","2025-11-04","2025-11-06","16"
"EYD","CN-F-Z02.EYD.S14.USS-25.949","Ground EY06-SWGR-RMU-USS-25 in Zone 2 EYD","2025-11-04","2025-11-06","16"
"EYD","CN-F-Z02.EYD.S14.USS-26.952","Ground EY06-SWGR-RMU-USS-26 in Zone 2 EYD","2025-11-04","2025-11-06","16"
"EYD","CN-F-Z02.EYD.S14.USS-20.1019","Complete Pathway to EY06-SWGR-RMU-USS-46in Zone 2 EYD","2025-11-04","2025-11-05","8"
"EYD","CN-F-Z02.EYD.S14.USS-21.1022","Complete Pathway to EY06-SWGR-RMU-USS-47in Zone 2 EYD","2025-11-04","2025-11-05","8"
"EYD","CN-F-Z02.EYD.S14.USS-22.1025","Complete Pathway to EY06-SWGR-RMU-USS-48in Zone 2 EYD","2025-11-04","2025-11-05","8"
"EYD","CN-F-Z02.EYD.S14.USS-23.1028","Complete Pathway to EY06-SWGR-RMU-USS-49in Zone 2 EYD","2025-11-04","2025-11-05","8"
"EYD","CN-F-Z02.EYD.S14.USS-24.1031","Complete Pathway to EY06-SWGR-RMU-USS-50in Zone 2 EYD","2025-11-04","2025-11-05","8"
"EYD","CN-F-Z02.EYD.S14.USS-25.1034","Complete Pathway to EY06-SWGR-RMU-USS-51in Zone 2 EYD","2025-11-04","2025-11-05","8"
"EYD","CN-F-Z02.EYD.S14.USS-26.1037","Complete Pathway to EY06-SWGR-RMU-USS-52in Zone 2 EYD","2025-11-04","2025-11-05","8"
"MYD","CN-F-Z01.MYD.S21.USS-4.1703","Ground MY05-SWGR-RMU-USS-CUB-4 in Zone 1 MYD","2025-11-04","2025-11-05","8"
"MYD","CN-F-Z01.MYD.S21.USS-4.1718","Complete Pathway to MY05-SWGR-RMU-USS-CUB-4 in Zone 1 MYD","2025-11-04","2025-11-05","8"
"USS YARD","CN-F-Z01.MYD.S24.USS-4.1739","Pull,Term,Test & Torque Feeder from MY05-XFMR-USS-CUB-4 to MY05-SWGR-USS-4","2025-11-04","2025-11-11","40"
"SSS","CN-F-Z01.EYD.S14.CW.3237","Pull,Term,Test & Torque Feeder from EY05-SWGR-SSS-E (Control) to EY05-USS-MDA-E (Control)","2025-11-04","2025-12-04","160"
"SSS","CN-F-Z01.EYD.S14.CW.3239","Pull,Term,Test & Torque Feeder from EY05-SWGR-SSS-E (Control) to EY05-USS-1 (Control)","2025-11-04","2025-12-04","160"
"SSS","CN-F-Z01.EYD.S14.CW.3241","Pull,Term,Test & Torque Feeder from EY05-SWGR-SSS-E (Control) to EY05-USS-3 (Control)","2025-11-04","2025-12-04","160"
"SSS","CN-F-Z01.EYD.S14.CW.3244","Pull,Term,Test & Torque Feeder from EY05-SWGR-SSS-E (Control) to EY05-USS-6 (Control)","2025-11-04","2025-12-04","160"
"SSS","CN-F-Z01.EYD.S14.CW.3247","Pull,Term,Test & Torque Feeder from EY05-SWGR-SSS-E (Control) to EY05-USS-9 (Control)","2025-11-04","2025-12-04","160"
"SSS","CN-F-Z01.EYD.S14.CW.3250","Pull,Term,Test & Torque Feeder from EY05-SWGR-SSS-E (Control) to EY05-USS-12 (Control)","2025-11-04","2025-12-04","160"
"SSS","CN-F-Z01.EYD.S14.CW.3253","Pull,Term,Test & Torque Feeder from EY05-SWGR-SSS-E (Control) to EY05-USS-15 (Control)","2025-11-04","2025-12-04","160"
"SSS","CN-F-Z01.EYD.S14.CW.3256","Pull,Term,Test & Torque Feeder from EY05-SWGR-SSS-E (Control) to EY05-USS-18 (Control)","2025-11-04","2025-12-04","160"
"SSS","CN-F-Z01.EYD.S14.CW.3259","Pull,Term,Test & Torque Feeder from EY05-SWGR-SSS-E (Control) to EY05-USS-21 (Control)","2025-11-04","2025-12-04","160"
"SSS","CN-F-Z01.EYD.S14.CW.3262","Pull,Term,Test & Torque Feeder from EY05-SWGR-SSS-E (Control) to EY05-USS-24 (Control)","2025-11-04","2025-12-04","160"
"USS YARD","CN-F-Z01.EYD.S14.L2.3373","L2 QC Electrical Install-EY05-USS-11 (Control)","2025-11-04","2025-11-06","16"
"USS YARD","642327061","Cable Tray Rack Loose Set-USS-06,USS 6-LV","2025-11-04","2025-11-05","8"
"USS YARD","352363715","Hard set rack & cable tray-USS-04,USS 4-LV","2025-11-04","2025-11-13","56"
"MCP","790364049","Roofing Membrane Install-MCP CTR 01,BUILDOUT","2025-11-04","2025-11-11","40"
"MCP","118374915","CT Stair Install-MCP CTR 06,BUILDOUT","2025-11-04","2025-11-10","32"
"USS YARD","395311604","Grounding 1703,1704,1705-USS-04,USS-4 XMFR","2025-11-04","2025-11-07","24"
"MYD","944361142","CN-F-Z01.MYD.S21.PDC-1.1728-USS-06,USS 6-RMU","2025-11-04","2025-11-05","8"
"EYD","CON-8190","EYD2-Install/Terminate Electrical Yard Security Devices/IDFs,Pull Cable/Terminate Panel","2025-11-05","2026-01-06","320"
"EYD","CON-7605-BB","EYD2-SSS2 A/B Fitout","2025-11-05","2025-12-05","160"
"EYD","CON-7855-BB","EYD2-GPS2 Fitout","2025-11-05","2025-12-05","160"
"DCH","CON-7885","DCH1-BMS/PMS+Sec+Device install (breakout & detail) HA 16","2025-11-05","2025-11-07","16"
"EYD","CON-8715-6","EYD1-Heavy Duty SOG TRs","2025-11-05","2025-11-12","40"
"USS YARD","CN-F-Z01.DCH.S18.TB.2057","Pull,Term,Test & Torque Feeder from EY05-SWGR-USS-24 to TAPBOX-33BOT","2025-11-05","2025-11-07","16"
"USS YARD","CN-F-Z01.DCH.S18.TB.2058","Pull,Term,Test & Torque Feeder from EY05-SWGR-USS-24 to TAPBOX-35BOT","2025-11-05","2025-11-07","16"
"USS YARD","CN-F-Z01.DCH.S18.TB.2059","Pull,Term,Test & Torque Feeder from EY05-SWGR-USS-24 to TAPBOX-36BOT","2025-11-05","2025-11-07","16"
"USS YARD","CX-F-Z01.EYD.S14.L2.720","L2 QC Electrical Install-EY05-SWGR-USS-23","2025-11-05","2025-11-07","16"
"EYD","CN-F-Z02.EYD.S14.SSS-F.1043","Complete Pathway to EY06-PACK-SSS-F-AC-3 in Zone 2 EYD","2025-11-05","2025-11-07","16"
"GPS","CN-F-Z02.EYD.S14.SSS-E.1076","Pull & Test MV Feeder from EY06-SWGR-SSS-E to EY06-SWGR-GPS","2025-11-05","2025-11-19","80"
"SSS","CN-F-Z02.EYD.S14.SSS-F.1077","Pull & Test MV Feeder from SUBE-BUS-E to EY06-SWGR-SSS-F","2025-11-05","2025-11-19","80"
"SSS","CN-F-Z02.EYD.S14.USS-20.1139","Pull & Test MV Feeder from EY06-SWGR-SSS-F to EY06-SWGR-RMU-USS-20","2025-11-05","2025-11-06","8"
"SSS","CN-F-Z02.EYD.S14.USS-21.1142","Pull & Test MV Feeder from EY06-SWGR-SSS-E to EY06-SWGR-RMU-USS-21","2025-11-05","2025-11-06","8"
"USS YARD","CN-F-Z02.EYD.S14.USS-22.1145","Pull & Test MV Feeder from EY06-SWGR-RMU-USS-21 to EY06-SWGR-RMU-USS-22","2025-11-05","2025-11-06","8"
"SSS","CN-F-Z02.EYD.S14.USS-23.1148","Pull & Test MV Feeder from EY06-SWGR-SSS-F to EY06-SWGR-RMU-USS-23","2025-11-05","2025-11-06","8"
"SSS","CN-F-Z02.EYD.S14.USS-24.1151","Pull & Test MV Feeder from EY06-SWGR-SSS-E to EY06-SWGR-RMU-USS-24","2025-11-05","2025-11-06","8"
"USS YARD","CN-F-Z02.EYD.S14.USS-25.1154","Pull & Test MV Feeder from EY06-SWGR-RMU-USS-24 to EY06-SWGR-RMU-USS-25","2025-11-05","2025-11-06","8"
"SSS","CN-F-Z02.EYD.S14.USS-26.1157","Pull & Test MV Feeder from EY06-SWGR-SSS-F to EY06-SWGR-RMU-USS-26","2025-11-05","2025-11-06","8"
"SSS","CN-F-Z02.EYD.S14.SSS-E.1258","Pull & Test MV Feeder from SUBF-BUS-F to EY06-SWGR-SSS-E","2025-11-05","2025-11-19","80"
"SSS","CN-F-Z02.EYD.S14.SSS-F.1260","Pull & Test MV Feeder from SUBF-BUS-F to EY06-SWGR-SSS-F","2025-11-05","2025-11-19","80"
"USS YARD","CN-F-Z02.EYD.S14.USS-20.1267","Pull & Test MV Feeder from EY06-SWGR-RMU-USS-20 to EY06-SWGR-RMU-USS-19","2025-11-05","2025-11-06","8"
"USS YARD","CN-F-Z02.EYD.S14.USS-23.1268","Pull & Test MV Feeder from EY06-SWGR-RMU-USS-23 to EY06-SWGR-RMU-USS-22","2025-11-05","2025-11-06","8"
"USS YARD","CN-F-Z02.EYD.S14.USS-26.1270","Pull & Test MV Feeder from EY06-SWGR-RMU-USS-26 to EY06-SWGR-RMU-USS-25","2025-11-05","2025-11-06","8"
"USS YARD","CN-F-Z01.MYD.S21.USS-4.1738","Pull & Test MV Feeder from MY05-SWGR-RMU-USS-CUB-4 to MY05-XFMR-USS-CUB-4 (FROM INTACK)","2025-11-05","2025-11-06","8"
"GPS","CN-F-Z01.EYD.S14.EYD.0002","Install Cable Tray from Z1 EY-05-GEN 8-12 to GPS-1","2025-11-05","2025-11-11","32"
"USS YARD","642372837","Set PDC-USS-06,USS 6-LV","2025-11-05","2025-11-06","8"
"DCH","998296783","DCH1-Fire Riser 1-524-Set EUH","2025-11-05","2025-11-06","8"
"EYD","CON-BB-4745","EYD2-RMU to SSS-E Control Pulls","2025-11-05","2025-12-05","160"
"EYD","CON-BB-4785","EYD2-RMU to SSS-F Control Pulls","2025-11-05","2025-12-05","160"
"MYD","CX-10494","MYD1-MCP-06 Fiber Complete (Includes MAC patching to/from Nun) & NUN to NUN","2025-11-06","2025-11-13","40"
"SSS","CN-F-Z02.EYD.S14.USS-20.1316","Term & Torque MV Feeder from EY06-SWGR-SSS-F to EY06-SWGR-RMU-USS-20 at EY06-SWGR-RMU-USS-20","2025-11-06","2025-11-07","8"
"SSS","CN-F-Z02.EYD.S14.USS-21.1318","Term & Torque MV Feeder from EY06-SWGR-SSS-E to EY06-SWGR-RMU-USS-21 at EY06-SWGR-RMU-USS-21","2025-11-06","2025-11-07","8"
"USS YARD","CN-F-Z02.EYD.S14.USS-22.1320","Term & Torque MV Feeder from EY06-SWGR-RMU-USS-21 to EY06-SWGR-RMU-USS-22 at EY06-SWGR-RMU-USS-22","2025-11-06","2025-11-07","8"
"SSS","CN-F-Z02.EYD.S14.USS-23.1322","Term & Torque MV Feeder from EY06-SWGR-SSS-F to EY06-SWGR-RMU-USS-23 at EY06-SWGR-RMU-USS-23","2025-11-06","2025-11-07","8"
"SSS","CN-F-Z02.EYD.S14.USS-24.1324","Term & Torque MV Feeder from EY06-SWGR-SSS-E to EY06-SWGR-RMU-USS-24 at EY06-SWGR-RMU-USS-24","2025-11-06","2025-11-07","8"
"USS YARD","CN-F-Z02.EYD.S14.USS-25.1326","Term & Torque MV Feeder from EY06-SWGR-RMU-USS-24 to EY06-SWGR-RMU-USS-25 at EY06-SWGR-RMU-USS-25","2025-11-06","2025-11-07","8"
"SSS","CN-F-Z02.EYD.S14.USS-26.1328","Term & Torque MV Feeder from EY06-SWGR-SSS-F to EY06-SWGR-RMU-USS-26 at EY06-SWGR-RMU-USS-26","2025-11-06","2025-11-07","8"
"SSS","CN-F-Z02.EYD.S14.USS-20.1391","Term & Torque MV Feeder from EY06-SWGR-SSS-F to EY06-SWGR-RMU-USS-20 at EY06-SWGR-SSS-F","2025-11-06","2025-11-07","8"
"SSS","CN-F-Z02.EYD.S14.USS-21.1393","Term & Torque MV Feeder from EY06-SWGR-SSS-E to EY06-SWGR-RMU-USS-21 at EY06-SWGR-SSS-E","2025-11-06","2025-11-07","8"
"USS YARD","CN-F-Z02.EYD.S14.USS-22.1395","Term & Torque MV Feeder from EY06-SWGR-RMU-USS-21 to EY06-SWGR-RMU-USS-22 at EY06-SWGR-RMU-USS-21","2025-11-06","2025-11-07","8"
"SSS","CN-F-Z02.EYD.S14.USS-23.1397","Term & Torque MV Feeder from EY06-SWGR-SSS-F to EY06-SWGR-RMU-USS-23 at EY06-SWGR-SSS-F","2025-11-06","2025-11-07","8"
"SSS","CN-F-Z02.EYD.S14.USS-24.1399","Term & Torque MV Feeder from EY06-SWGR-SSS-E to EY06-SWGR-RMU-USS-24 at EY06-SWGR-SSS-E","2025-11-06","2025-11-07","8"
"USS YARD","CN-F-Z02.EYD.S14.USS-25.1401","Term & Torque MV Feeder from EY06-SWGR-RMU-USS-24 to EY06-SWGR-RMU-USS-25 at EY06-SWGR-RMU-USS-24","2025-11-06","2025-11-07","8"
"SSS","CN-F-Z02.EYD.S14.USS-26.1403","Term & Torque MV Feeder from EY06-SWGR-SSS-F to EY06-SWGR-RMU-USS-26 at EY06-SWGR-SSS-F","2025-11-06","2025-11-07","8"
"USS YARD","CN-F-Z02.EYD.S14.USS-20.1432","Term & Torque MV Feeder from EY06-SWGR-RMU-USS-20 to EY06-SWGR-RMU-USS-19 at EY06-SWGR-RMU-USS-19","2025-11-06","2025-11-07","8"
"USS YARD","CN-F-Z02.EYD.S14.USS-22.1433","Term & Torque MV Feeder from EY06-SWGR-RMU-USS-23 to EY06-SWGR-RMU-USS-22 at EY06-SWGR-RMU-USS-22","2025-11-06","2025-11-07","8"
"USS YARD","CN-F-Z02.EYD.S14.USS-26.1435","Term & Torque MV Feeder from EY06-SWGR-RMU-USS-26 to EY06-SWGR-RMU-USS-25 at EY06-SWGR-RMU-USS-25","2025-11-06","2025-11-07","8"
"USS YARD","CN-F-Z02.EYD.S14.USS-20.1445","Term & Torque MV Feeder from EY06-SWGR-RMU-USS-20 to EY06-SWGR-RMU-USS-19 at EY06-SWGR-RMU-USS-20","2025-11-06","2025-11-07","8"
"USS YARD","CN-F-Z02.EYD.S14.USS-22.1446","Term & Torque MV Feeder from EY06-SWGR-RMU-USS-23 to EY06-SWGR-RMU-USS-22 at EY06-SWGR-RMU-USS-23","2025-11-06","2025-11-07","8"
"USS YARD","CN-F-Z02.EYD.S14.USS-25.1448","Term & Torque MV Feeder from EY06-SWGR-RMU-USS-26 to EY06-SWGR-RMU-USS-25 at EY06-SWGR-RMU-USS-26","2025-11-06","2025-11-07","8"
"MYD","CN-F-Z01.MYD.S21.USS-6.1707","Ground MY05-XFMR-USS-CUB-6 in Zone 1 MYD","2025-11-06","2025-11-07","8"
"MYD","CN-F-Z01.MYD.S21.USS-6.1708","Ground MY05-SWGR-USS-CUB-6 in Zone 1 MYD","2025-11-06","2025-11-07","8"
"MYD","CN-F-Z01.MYD.S21.USS-6.1723","Complete Pathway to MY05-SWGR-USS-CUB-6 in Zone 1 MYD","2025-11-06","2025-11-07","8"
"USS YARD","CN-F-Z01.MYD.S21.USS-4.1785","Term & Torque MV Feeder from MY05-SWGR-RMU-USS-CUB-4 to MY05-XFMR-USS-CUB-4 at MY05-XFMR-USS-CUB-4","2025-11-06","2025-11-07","8"
"USS YARD","CN-F-Z01.MYD.S21.USS-4.1795","Term & Torque MV Feeder from MY05-SWGR-RMU-USS-CUB-4 to MY05-XFMR-USS-CUB-4 at MY05-SWGR-RMU-USS-CUB-4","2025-11-06","2025-11-11","24"
"USS YARD","CN-F-Z02.EYD.S14.CW.3286","Pull,Term,Test & Torque Feeder from EY06-USS-21 (Control) to EY06-USS-22 (Control)","2025-11-06","2025-11-07","8"
"USS YARD","CN-F-Z02.EYD.S14.CW.3289","Pull,Term,Test & Torque Feeder from EY06-USS-24 (Control) to EY06-USS-25 (Control)","2025-11-06","2025-11-07","8"
"USS YARD","CN-F-Z02.EYD.S14.CW.3352","Pull,Term,Test & Torque Feeder from EY06-USS-20 (Control) to EY06-USS-19 (Control)","2025-11-06","2025-11-07","8"
"USS YARD","CN-F-Z02.EYD.S14.CW.3353","Pull,Term,Test & Torque Feeder from EY06-USS-23 (Control) to EY06-USS-22 (Control)","2025-11-06","2025-11-07","8"
"USS YARD","CN-F-Z02.EYD.S14.CW.3354","Pull,Term,Test & Torque Feeder from EY06-USS-26 (Control) to EY06-USS-25 (Control)","2025-11-06","2025-11-07","8"
"MYD","CN-F-Z01.MYD.USS.04","MYD Zone 1 USS 04 Install Trestle Steel","2025-11-06","2025-11-13","40"
"USS YARD","842370929","Term PDC 1+2 to FPH-USS-01,USS 1-LV","2025-11-06","2025-11-10","16"
"USS YARD","642388952","Set LV-01-USS-06,USS 6-LV","2025-11-06","2025-11-07","8"
"DCH","998296773","DCH1-Fire Riser 1-524-Install Finishes","2025-11-06","2025-11-07","8"
"DCH","CON-7935","DCH1-BMS/PMS+Sec+Device install (breakout & detail) HA 17","2025-11-09","2025-11-11","16"
"MYD","CON-8715-19","MYD1-MUP SOG","2025-11-09","2025-11-13","32"
"DCH","019090386","DCH2-Fire Riser 1-571-Prime,1st,& Final Coat Paint","2025-11-09","2025-11-12","24"
"USS YARD","CX-F-Z01.EYD.S14.L2.723","L2 QC Electrical Install-EY05-SWGR-USS-24","2025-11-09","2025-11-11","16"
"DCH","CN-F-Z01.DCH.S39.HA-10.0002","Install VESDA Panel for Inside Hot Aisle Loop SVH HA N-10 in Room 1-500-Zone 1 DCH","2025-11-09","2025-11-11","16"
"DCH","CN-F-Z01.DCH.S39.HA-11.0002","Install VESDA Panel for Inside Hot Aisle Loop SVH HA N-11 in Room 1-500-Zone 1 DCH","2025-11-09","2025-11-11","16"
"DCH","CN-F-Z01.DCH.S39.HA-12.0002","Install VESDA Panel for Inside Hot Aisle Loop SVH HA N-12 in Room 1-500-Zone 1 DCH","2025-11-09","2025-11-11","16"
"MCP","CN-F-Z01.MYD.S24.PDC-2.1735","Pull,Term,Test & Torque Feeder from MY05-PDC-CUB-2 to MCP2-Chiller","2025-11-09","2025-11-14","40"
"USS YARD","CN-F-Z01.DCH.S18.TB.147","Pull,Term,Test & Torque Feeder from EY05-SWGR-USS-25 to TAPBOX-37BOT","2025-11-09","2025-11-14","40"
"USS YARD","CN-F-Z01.DCH.S18.TB.151","Pull,Term,Test & Torque Feeder from EY05-SWGR-USS-25 to TAPBOX-38TOP","2025-11-09","2025-11-14","40"
"USS YARD","CN-F-Z02.EYD.S14.L2.3407","L2 QC Electrical Install-EY06-USS-19 (Control)","2025-11-09","2025-11-11","16"
"USS YARD","CN-F-Z02.EYD.S14.L2.3410","L2 QC Electrical Install-EY06-USS-22 (Control)","2025-11-09","2025-11-11","16"
"USS YARD","CN-F-Z02.EYD.S14.L2.3413","L2 QC Electrical Install-EY06-USS-25 (Control)","2025-11-09","2025-11-11","16"
"USS YARD","204350178","Set XFMR-USS-06,USS 6-XMFR","2025-11-09","2025-11-10","8"
"Fire Pump House","719342299","Set FPH Enclosure-FIRE PUMPHOUSE,BUILDOUT","2025-11-09","2025-11-10","8"
"MCP","588311157","Install EFL / F-MCP CTR 04,BUILDOUT","2025-11-09","2025-11-13","32"
"USS YARD","116376333","BDC for MY-01-USS-02,USS 2-LV","2025-11-09","2025-11-14","40"
"MCP","588320894","Basin Heater Conduits-MCP CTR 04,BUILDOUT","2025-11-09","2025-11-13","32"
"EYD","CON-BB-5355","EYD2-S14 Gen to GPS 480 Pulls Group 3","2025-11-09","2025-11-13","32"
"MYD","CN-F-Z01.MYD.S21.USS-6.1722","Complete Pathway to MY05-XFMR-USS-CUB-6 in Zone 1 MYD","2025-11-10","2025-11-11","8"
"MCP","CX-F-Z01.MYD.S24.L2.1813","L2 QC Electrical Install-MCP1-BDC","2025-11-10","2025-11-12","16"
"SSS","CN-F-Z02.EYD.S14.PRN.075","Splice & Test PRN Fiber at EY06-SSS-E","2025-11-10","2025-12-08","144"
"SSS","CN-F-Z02.EYD.S14.PRN.076","Splice & Test PRN Fiber at EY06-SSS-F","2025-11-10","2025-12-08","144"
"USS YARD","944390276","Set RMU-USS-06,USS 6-RMU","2025-11-10","2025-11-11","8"
"MCP","101375710","610 Motor Wire Pulls-MCP CTR 02,BUILDOUT","2025-11-10","2025-11-12","16"
"MCP","118360970","610 Motor Heater Conduit-MCP CTR 06,BUILDOUT","2025-11-10","2025-11-14","32"
"USS YARD","842366221","Torque PDC 1+2 to FPH-USS-01,USS 1-LV","2025-11-10","2025-11-11","8"
"MCP","101344688","610 Motor Heater Wire Pulls-MCP CTR 02,BUILDOUT","2025-11-10","2025-11-12","16"
"Fire Pump House","719361049","Connections-FIRE PUMPHOUSE,BUILDOUT","2025-11-10","2025-11-17","40"
"MCP","118328772","610 Motor Conduit-MCP CTR 06,BUILDOUT","2025-11-10","2025-11-14","32"
"Fire Pump House","719317637","Roof Penetration-FIRE PUMPHOUSE,BUILDOUT","2025-11-10","2025-11-11","8"
"MCP","118348305","MCP Electrical Interconnects-MCP CTR 06,BUILDOUT","2025-11-10","2025-12-03","120"
"DCH","CON-7980","DCH1-BMS/PMS+Sec+Device install (breakout & detail) HA 18","2025-11-11","2025-11-13","16"
"USS YARD","CN-F-Z01.EYD.S14.USS-25.494","Term & Torque MV Feeder from EY05-SWGR-RMU-25 to EY05-XFMR-USS-25 at EY05-XFMR-USS-25","2025-11-11","2025-12-04","120"
"USS YARD","CN-F-Z01.EYD.S14.USS-25.573","Term & Torque MV Feeder from EY05-SWGR-RMU-25 to EY05-XFMR-USS-25 at EY05-SWGR-RMU-25","2025-11-11","2025-12-04","120"
"DCH","CN-F-Z01.DCH.S39.HA-10.0001","Install VESDA Panel for Inside Hot Aisle Loop SVH HA S-10 in Room 1-500-Zone 1 DCH","2025-11-11","2025-11-13","16"
"DCH","CN-F-Z01.DCH.S39.HA-11.0001","Install VESDA Panel for Inside Hot Aisle Loop SVH HA S-11 in Room 1-500-Zone 1 DCH","2025-11-11","2025-11-13","16"
"DCH","CN-F-Z01.DCH.S39.HA-12.0001","Install VESDA Panel for Inside Hot Aisle Loop SVH HA S-12 in Room 1-500-Zone 1 DCH","2025-11-11","2025-11-13","16"
"DCH","CN-F-Z02.DCH.S39.HA-32.0002","Install VESDA Panel for Inside Hot Aisle Loop SVH HA N-32 in Room 1-550-Zone 2 DCH","2025-11-11","2025-11-13","16"
"DCH","CN-F-Z02.DCH.S39.HA-33.0002","Install VESDA Panel for Inside Hot Aisle Loop SVH HA N-33 in Room 1-550-Zone 2 DCH","2025-11-11","2025-11-13","16"
"DCH","CN-F-Z02.DCH.S39.HA-34.0002","Install VESDA Panel for Inside Hot Aisle Loop SVH HA N-34 in Room 1-550-Zone 2 DCH","2025-11-11","2025-11-13","16"
"SSS","CX-F-Z02.EYD.S14.L2.1626","L2 QC Electrical Install-EY06-PACK-SSS-F-AC-3","2025-11-11","2025-11-13","16"
"MYD","CN-F-Z01.MYD.S21.USS-6.1706","Ground MY05-SWGR-RMU-USS-CUB-6 in Zone 1 MYD","2025-11-11","2025-11-12","8"
"MYD","CN-F-Z01.MYD.S21.USS-6.1721","Complete Pathway to MY05-SWGR-RMU-USS-CUB-6 in Zone 1 MYD","2025-11-11","2025-11-12","8"
"USS YARD","CN-F-Z01.MYD.S24.USS-6.1744","Pull,Term,Test & Torque Feeder from MY05-XFMR-USS-CUB-6 to MY05-SWGR-USS-CUB-6","2025-11-11","2025-11-18","40"
"USS YARD","CX-F-Z01.MYD.S21.L2.1820","L2 QC Electrical Install-MY05-XFMR-USS-CUB-4","2025-11-11","2025-11-13","16"
"USS YARD","CX-F-Z01.MYD.S21.L2.1821","L2 QC Electrical Install-MY05-SWGR-USS-CUB-4","2025-11-11","2025-11-18","40"
"GPS","CN-F-Z01.EYD.S14.EYD.0003","Install Cable Tray from Z1 EY-05-GEN 13-17 to GPS-1","2025-11-11","2025-11-17","32"
"MYD","CN-F-Z01.MYD.S24.MYD.0001","Install Trench Cable Tray at Z1 MYD MV Ring FDR Crossover Tray","2025-11-11","2025-11-13","16"
"USS YARD","642387693","Hard set rack & cable tray-USS-06,USS 6-LV","2025-11-11","2025-11-20","56"
"Fire Pump House","719321147","Roof Sealing-FIRE PUMPHOUSE,BUILDOUT","2025-11-11","2025-11-12","8"
"USS YARD","842363548","Test PDC 1+2 to FPH-USS-01,USS 1-LV","2025-11-11","2025-11-12","8"
"MCP","790337071","EFL / FG Wire Pulls-MCP CTR 01,BUILDOUT","2025-11-11","2025-11-14","24"
"USS YARD","204386198","Grounding 1706,1708,1709-USS-06,USS 6-XMFR","2025-11-11","2025-11-14","24"
"DCH","CON-8620","DCH2-Fiber Pulls-Aisles to MDA Aisles","2025-11-12","2025-12-29","240"
"DCH","019087326","DCH2-Fire Riser 1-571-Set EUH","2025-11-12","2025-11-13","8"
"USS YARD","CN-F-Z01.MYD.S21.USS-6.1743","Pull & Test MV Feeder from MY05-SWGR-RMU-USS-CUB-6 to MY05-XFMR-USS-CUB-6 (FROM INTACK)","2025-11-12","2025-11-13","8"
"MCP","101361792","EFL / FG Wire Pulls-MCP CTR 02,BUILDOUT","2025-11-12","2025-11-20","48"
"MCP","101392067","Receptacles wire pulls & terms-MCP CTR 02,BUILDOUT","2025-11-12","2025-11-20","48"
"DCH","CON-8030","DCH1-BMS/PMS+Sec+Device install (breakout & detail) HA 19","2025-11-13","2025-11-17","16"
"DCH","019053679","DCH2-Fire Riser 1-571-Install Finishes","2025-11-13","2025-11-14","8"
"DCH","CN-F-Z02.DCH.S39.HA-32.0001","Install VESDA Panel for Inside Hot Aisle Loop SVH HA S-32 in Room 1-550-Zone 2 DCH","2025-11-13","2025-11-17","16"
"DCH","CN-F-Z02.DCH.S39.HA-33.0001","Install VESDA Panel for Inside Hot Aisle Loop SVH HA S-33 in Room 1-550-Zone 2 DCH","2025-11-13","2025-11-17","16"
"DCH","CN-F-Z02.DCH.S39.HA-34.0001","Install VESDA Panel for Inside Hot Aisle Loop SVH HA S-34 in Room 1-550-Zone 2 DCH","2025-11-13","2025-11-17","16"
"DCH","CN-F-Z01.DCH.S36.DCH.0003","Place,Anchor,Fit-Out & Ground CCA-3 in Zone 1 DCH","2025-11-13","2025-11-14","8"
"USS YARD","CN-F-Z01.MYD.S10.PDC-2.1737","Pull & Test MV Feeder from MY05-SWGR-RMU-PDC-CUB-2 to MY05-SWGR-RMU-USS-CUB-4","2025-11-13","2025-11-18","24"
"USS YARD","CN-F-Z01.MYD.S10.USS-4.1742","Pull & Test MV Feeder from MY05-SWGR-RMU-USS-CUB-4 to MY05-SWGR-RMU-USS-CUB-6","2025-11-13","2025-11-18","24"
"USS YARD","CN-F-Z01.MYD.S21.USS-6.1787","Term & Torque MV Feeder from MY05-SWGR-RMU-USS-CUB-6 to MY05-XFMR-USS-CUB-6 at MY05-XFMR-USS-CUB-6","2025-11-13","2025-11-14","8"
"USS YARD","CN-F-Z01.MYD.S21.USS-6.1797","Term & Torque MV Feeder from MY05-SWGR-RMU-USS-CUB-6 to MY05-XFMR-USS-CUB-6 at MY05-SWGR-RMU-USS-CUB-6","2025-11-13","2025-11-18","24"
"MYD","CN-F-Z01.MYD.S24.MYD.0002","Install Cable Tray at Z1 MYD USS-04","2025-11-13","2025-12-01","80"
"USS YARD","CN-F-Z01.EYD.S14.CW.3293","Pull,Term,Test & Torque Feeder from MY05-USS-CUB-6 (Control) to MY05-USS-CUB-4 (Control)","2025-11-13","2025-11-20","40"
"USS YARD","CN-F-Z01.EYD.S14.CW.3355","Pull,Term,Test & Torque Feeder from MY05-USS-CUB-4 (Control) to MY05-PDC-2 (Control)","2025-11-13","2025-11-20","40"
"MCP","588394760","Install Conduit & CT Receptacles Conduit-MCP CTR 04,BUILDOUT","2025-11-13","2025-11-21","48"
"USS YARD","352372834","Feeder Chiller (term,test,torque)-USS-04,USS 4-LV","2025-11-13","2025-11-20","40"
"EYD","CON-BB-5365","EYD2-S14 Gen to GPS 480 Pulls Group 4","2025-11-13","2025-11-19","32"
"DCH","784023086","DCH2-Fire Riser/Restroom/Janitor (1-572/553/552)-Hang,Tape,& Finish Drywall","2025-11-16","2025-11-21","40"
"USS YARD","CN-F-Z01.DCH.S18.TB.2060","Pull,Term,Test & Torque Feeder from EY05-SWGR-USS-26 to TAPBOX-37TOP","2025-11-16","2025-11-21","40"
"USS YARD","CN-F-Z01.DCH.S18.TB.2061","Pull,Term,Test & Torque Feeder from EY05-SWGR-USS-26 to TAPBOX-37BOT","2025-11-16","2025-11-21","40"
"USS YARD","CX-F-Z01.EYD.S14.L2.726","L2 QC Electrical Install-EY05-SWGR-USS-25","2025-11-16","2025-11-18","16"
"MCP","CN-F-Z01.MYD.S24.PDC-2.1736","Pull,Term,Test & Torque Feeder from MY05-PDC-CUB-2 to MCP2-BDC","2025-11-16","2025-11-21","40"
"MCP","CX-F-Z01.MYD.S24.L2.1817","L2 QC Electrical Install-MCP2-Chiller","2025-11-16","2025-11-18","16"
"MYD","CN-F-Z01.MYD.S39.FRR.001","Install Fire Alarm Panels in MYD MUP Module","2025-11-16","2025-11-19","24"
"MYD","CN-F-Z01.MYD.S29.MYD.011","MYD1-Z1-Install & tape Heat Trace Wire for MCP-01","2025-11-16","2025-11-21","40"
"MCP","790368397","Heat Trace wire pulls-MCP CTR 01,BUILDOUT","2025-11-16","2025-11-24","48"
"USS YARD","116366356","Pull PDC 1+2 to FPH-USS-02,USS 2-LV","2025-11-16","2025-11-19","24"
"MCP","588338513","Install EFL / FG Fixtures-MCP CTR 04,BUILDOUT","2025-11-16","2025-11-21","40"
"MCP","118384094","Basin Heater Conduits-MCP CTR 06,BUILDOUT","2025-11-16","2025-11-20","32"
"MCP","118339573","Install EFL / F-MCP CTR 06,BUILDOUT","2025-11-16","2025-11-20","32"
"DCH","998296803","DCH1-Fire Riser 1-524-Install Fire Suppression Equipment","2025-11-16","2025-12-02","80"
"EYD","CON-BB-4685","EYD1-Perun to SSS-E MV Terms & Torques","2025-11-16","2025-11-20","32"
"EYD","CON-BB-4695","EYD1-Perun to SSS-F MV Terms & Torques","2025-11-16","2025-11-20","32"
"GPS","CN-F-Z01.EYD.S14.GEN-17.317","Pull & Test MV Feeder from EY05-SWG-GPS to EY05-GEN-17","2025-11-17","2025-11-19","16"
"DCH","CN-F-Z01.DCH.S36.DCH.0006","Place,Anchor,Fit-Out & Ground CCB-3 in Zone 1 DCH","2025-11-17","2025-11-18","8"
"SSS","CX-F-Z02.EYD.S14.L2.1609","L2 QC Electrical Install-EY06-SWGR-SSS-E-MTS","2025-11-17","2025-11-19","16"
"SSS","CX-F-Z02.EYD.S14.L2.1610","L2 QC Electrical Install-EY06-PNL-SSS-E-RP","2025-11-17","2025-11-19","16"
"GPS","CN-F-Z02.EYD.S14.EYD.0004","Install Cable Tray from Z2 EY-06-GEN 1-7 to GPS-2","2025-11-17","2025-11-21","32"
"DCH","CN-F-Z02.DCH.S36.TEQP.004","Place,Anchor,Fit-Out & Ground IDF 1.17 in Zone 2 DCH North","2025-11-17","2025-11-19","16"
"DCH","A1070","BMS-DCH1-Splice Fiber Loop","2025-11-17","2025-12-03","80"
"DCH","A1120","BMS-DCH2-Pull Fiber Loop","2025-11-17","2025-12-03","80"
"USS YARD","CN-F-Z01.MYD.S10.PDC-2.1784","Term & Torque MV Feeder from MY05-SWGR-RMU-PDC-CUB-2 to MY05-SWGR-RMU-USS-CUB-4 at MY05-SWGR-RMU-USS-CUB-4","2025-11-18","2025-11-21","24"
"USS YARD","CN-F-Z01.MYD.S10.USS-4.1786","Term & Torque MV Feeder from MY05-SWGR-RMU-USS-CUB-4 to MY05-SWGR-RMU-USS-CUB-6 at MY05-SWGR-RMU-USS-CUB-6","2025-11-18","2025-11-21","24"
"USS YARD","CN-F-Z01.MYD.S10.PDC-2.1794","Term & Torque MV Feeder from MY05-SWGR-RMU-PDC-CUB-2 to MY05-SWGR-RMU-USS-CUB-4 at MY05-SWGR-RMU-PDC-CUB-2","2025-11-18","2025-11-21","24"
"USS YARD","CN-F-Z01.MYD.S10.USS-4.1796","Term & Torque MV Feeder from MY05-SWGR-RMU-USS-CUB-4 to MY05-SWGR-RMU-USS-CUB-6 at MY05-SWGR-RMU-USS-CUB-4","2025-11-18","2025-11-21","24"
"USS YARD","CX-F-Z01.MYD.S21.L2.1825","L2 QC Electrical Install-MY05-XFMR-USS-CUB-6","2025-11-18","2025-11-20","16"
"GPS","CN-F-Z01.EYD.S14.GEN-16.316","Pull & Test MV Feeder from EY05-SWG-GPS to EY05-GEN-16","2025-11-19","2025-11-21","16"
"GPS","CN-F-Z02.EYD.S14.SSS-E.1274","Term & Torque MV Feeder from EY06-SWGR-SSS-E to EY06-SWGR-GPS at EY06-SWGR-GPS","2025-11-19","2025-11-24","24"
"SSS","CN-F-Z02.EYD.S14.SSS-F.1275","Term & Torque MV Feeder from SUBE-BUS-E to EY06-SWGR-SSS-F at EY06-SWGR-SSS-F","2025-11-19","2025-11-24","24"
"GPS","CN-F-Z02.EYD.S14.GPS.1349","Term & Torque MV Feeder from EY06-SWGR-SSS-E to EY06-SWGR-GPS at EY06-SWGR-SSS-E","2025-11-19","2025-11-24","24"
"SSS","CN-F-Z02.EYD.S14.SSS-F.1350","Term & Torque MV Feeder from SUBE-BUS-E to EY06-SWGR-SSS-F at SUBE-BUS-E","2025-11-19","2025-11-24","24"
"SSS","CN-F-Z02.EYD.S14.SSS-E.1423","Term & Torque MV Feeder from SUBF-BUS-F to EY06-SWGR-SSS-E at EY06-SWGR-SSS-E","2025-11-19","2025-11-24","24"
"SSS","CN-F-Z02.EYD.S14.SSS-F.1425","Term & Torque MV Feeder from SUBF-BUS-F to EY06-SWGR-SSS-F at EY06-SWGR-SSS-F","2025-11-19","2025-11-24","24"
"SSS","CN-F-Z02.EYD.S14.SSS-E.1436","Term & Torque MV Feeder from SUBF-BUS-F to EY06-SWGR-SSS-E at SUBF-BUS-F","2025-11-19","2025-11-24","24"
"SSS","CN-F-Z02.EYD.S14.SSS-F.1438","Term & Torque MV Feeder from SUBF-BUS-F to EY06-SWGR-SSS-F at SUBF-BUS-F","2025-11-19","2025-11-24","24"
"DCH","CN-F-Z02.DCH.S36.TEQP.002","Place,Anchor,Fit-Out & Ground IDF 1.15 in Zone 2 DCH South","2025-11-19","2025-11-21","16"
"MYD","CN-F-Z01.MYD.S39.FRR.002","Complete Pathways to Fire Alarm Panels in MYD MUP Module","2025-11-19","2025-11-26","40"
"USS YARD","116348106","Term PDC 1+2 to FPH-USS-02,USS 2-LV","2025-11-19","2025-11-21","16"
"EYD","CON-BB-5375","EYD2-S14 Gen to GPS 480 Pulls Group 5","2025-11-19","2025-11-24","24"
"USS YARD","CN-F-Z01.EYD.S14.L2.3417","L2 QC Electrical Install-MY05-USS-CUB-4 (Control)","2025-11-20","2025-11-24","16"
"USS YARD","CN-F-Z01.EYD.S14.L2.3418","L2 QC Electrical Install-MY05-USS-CUB-6 (Control)","2025-11-20","2025-11-24","16"
"USS YARD","642360547","Feeder Chiller (term,test,torque)-USS-06,USS 6-LV","2025-11-20","2025-12-01","40"
"USS YARD","352342908","BDC for MY-01-USS-04,USS 4-LV","2025-11-20","2025-12-01","40"
"MCP","118350265","Install Conduit & CT Receptacles Conduit-MCP CTR 06,BUILDOUT","2025-11-20","2025-12-02","48"
"MCP","101342433","Roofing Membrane Install-MCP CTR 02,BUILDOUT","2025-11-20","2025-12-01","40"
"EYD","CX-10502","EYD1-Fuel Fill Station L3","2025-11-23","2025-12-05","64"
"DCH","470084330","DCH2-Fire Riser 1-573-Hang,Tape,& Finish Drywall","2025-11-23","2025-12-02","40"
"DCH","784074507","DCH2-Fire Riser/Restroom/Janitor (1-572/553/552)-Prime,1st,& Final Coat Paint","2025-11-23","2025-11-26","24"
"GPS","CN-F-Z01.EYD.S14.GEN-15.315","Pull & Test MV Feeder from EY05-SWG-GPS to EY05-GEN-15","2025-11-23","2025-11-25","16"
"USS YARD","CX-F-Z01.EYD.S14.L2.729","L2 QC Electrical Install-EY05-SWGR-USS-26","2025-11-23","2025-11-25","16"
"GPS","CN-F-Z02.EYD.S14.GEN-1.1160","Pull & Test MV Feeder from EY06-SWGR-GPS to EY06-GEN-1","2025-11-23","2025-11-24","8"
"DCH","CN-F-Z02.DCH.S18.TB.2140","Complete Pathway to TAPBOX-39TOP in Zone 2 DCH","2025-11-23","2025-11-24","8"
"MCP","CX-F-Z01.MYD.S24.L2.1818","L2 QC Electrical Install-MCP2-BDC","2025-11-23","2025-11-25","16"
"USS YARD","CX-F-Z01.MYD.S21.L2.1819","L2 QC Electrical Install-MY05-SWGR-RMU-USS-CUB-4","2025-11-23","2025-11-25","16"
"USS YARD","CX-F-Z01.MYD.S21.L2.1824","L2 QC Electrical Install-MY05-SWGR-RMU-USS-CUB-6","2025-11-23","2025-11-25","16"
"MCP","CX-F-Z01.MYD.S24.L2.1840","L2 QC Electrical Install-MCP1-Basin HT Panel A","2025-11-23","2025-11-25","16"
"MCP","CX-F-Z01.MYD.S24.L2.1841","L2 QC Electrical Install-MCP1-Basin HT Panel B","2025-11-23","2025-11-25","16"
"MCP","CX-F-Z01.MYD.S24.L2.1842","L2 QC Electrical Install-MCP1-HT TRACE CAB","2025-11-23","2025-11-25","16"
"GPS","CN-F-Z02.EYD.S14.EYD.0005","Install Cable Tray from Z2 EY-06-GEN 8-12 to GPS-2","2025-11-23","2025-12-01","32"
"DCH","CN-F-Z02.DCH.S18.TB.154","Complete Pathway to TAPBOX-39BOT in Zone 2 DCH","2025-11-23","2025-12-02","40"
"DCH","CN-F-Z02.DCH.S18.TB.158","Complete Pathway to TAPBOX-40BOT in Zone 2 DCH","2025-11-23","2025-12-02","40"
"DCH","CN-F-Z02.DCH.S18.TB.162","Complete Pathway to TAPBOX-40TOP in Zone 2 DCH","2025-11-23","2025-12-02","40"
"SSS","CN-F-Z01.EYD.S14.PRN.075","Splice & Test PRN Fiber at EY05-SSS-E","2025-11-23","2025-12-19","144"
"SSS","CN-F-Z01.EYD.S14.PRN.076","Splice & Test PRN Fiber at EY05-SSS-F","2025-11-23","2025-12-19","144"
"MCP","588326021","610 Motor Wire Pulls-MCP CTR 04,BUILDOUT","2025-11-23","2025-11-25","16"
"USS YARD","116348013","Torque PDC 1+2 to FPH-USS-02,USS 2-LV","2025-11-23","2025-11-24","8"
"MCP","588373861","610 Motor Heater Wire Pulls-MCP CTR 04,BUILDOUT","2025-11-23","2025-11-25","16"
"MCP","118310703","Install EFL / FG Fixtures-MCP CTR 06,BUILDOUT","2025-11-23","2025-12-02","40"
"GPS","CN-F-Z02.EYD.S14.GEN-2.1161","Pull & Test MV Feeder from EY06-SWGR-GPS to EY06-GEN-2","2025-11-24","2025-11-25","8"
"GPS","CN-F-Z02.EYD.S14.GEN-1.1330","Term & Torque MV Feeder from EY06-SWGR-GPS to EY06-GEN-1 at EY06-GEN-1","2025-11-24","2025-11-25","8"
"SSS","CX-F-Z02.EYD.S14.L2.1510","L2 QC Electrical Install-EY06-PNL-SSS-E-BDC","2025-11-24","2025-11-26","16"
"DCH","CN-F-Z02.DCH.S18.TB.2139","Complete Pathway to TAPBOX-42TOP in Zone 2 DCH","2025-11-24","2025-11-25","8"
"DCH","CN-F-Z02.DCH.S18.TB.2141","Complete Pathway to TAPBOX-41BOT in Zone 2 DCH","2025-11-24","2025-11-25","8"
"DCH","CN-F-Z02.DCH.S18.TB.166","Complete Pathway to TAPBOX-41TOP in Zone 2 DCH","2025-11-24","2025-12-03","40"
"DCH","CN-F-Z02.DCH.S18.TB.170","Complete Pathway to TAPBOX-42BOT in Zone 2 DCH","2025-11-24","2025-12-03","40"
"USS YARD","116308969","Test PDC 1+2 to FPH-USS-02,USS 2-LV","2025-11-24","2025-11-25","8"
"MCP","790305625","Basin Heater Wire Pulls/Terms-MCP CTR 01,BUILDOUT","2025-11-24","2025-12-01","24"
"MCP","790395245","610 Motor & Heater Terms-MCP CTR 01,BUILDOUT","2025-11-24","2025-12-01","24"
"EYD","CON-BB-5385","EYD2-S14 Gen to GPS 480 Pulls Group 6","2025-11-24","2025-12-01","24"
"GPS","CN-F-Z01.EYD.S14.GEN-14.314","Pull & Test MV Feeder from EY05-SWG-GPS to EY05-GEN-14","2025-11-25","2025-12-01","16"
"USS YARD","CX-F-Z01.EYD.S14.L2.646","L2 QC Electrical Install-EY05-SWGR-RMU-USS-MDA-E","2025-11-25","2025-12-01","16"
"USS YARD","CX-F-Z01.EYD.S14.L2.649","L2 QC Electrical Install-EY05-SWGR-RMU-USS-MDA-F","2025-11-25","2025-12-01","16"
"USS YARD","CX-F-Z01.EYD.S14.L2.652","L2 QC Electrical Install-EY05-SWGR-RMU-USS-1","2025-11-25","2025-12-01","16"
"USS YARD","CX-F-Z01.EYD.S14.L2.655","L2 QC Electrical Install-EY05-SWGR-RMU-USS-2","2025-11-25","2025-12-01","16"
"USS YARD","CX-F-Z01.EYD.S14.L2.658","L2 QC Electrical Install-EY05-SWGR-RMU-USS-3","2025-11-25","2025-12-01","16"
"USS YARD","CX-F-Z01.EYD.S14.L2.661","L2 QC Electrical Install-EY05-SWGR-RMU-USS-4","2025-11-25","2025-12-01","16"
"USS YARD","CX-F-Z01.EYD.S14.L2.664","L2 QC Electrical Install-EY05-SWGR-RMU-USS-5","2025-11-25","2025-12-01","16"
"USS YARD","CX-F-Z01.EYD.S14.L2.667","L2 QC Electrical Install-EY05-SWGR-RMU-USS-6","2025-11-25","2025-12-01","16"
"USS YARD","CX-F-Z01.EYD.S14.L2.670","L2 QC Electrical Install-EY05-SWGR-RMU-USS-7","2025-11-25","2025-12-01","16"
"USS YARD","CX-F-Z01.EYD.S14.L2.673","L2 QC Electrical Install-EY05-SWGR-RMU-USS-8","2025-11-25","2025-12-01","16"
"USS YARD","CX-F-Z01.EYD.S14.L2.676","L2 QC Electrical Install-EY05-SWGR-RMU-USS-9","2025-11-25","2025-12-01","16"
"USS YARD","CX-F-Z01.EYD.S14.L2.679","L2 QC Electrical Install-EY05-SWGR-RMU-USS-10","2025-11-25","2025-12-01","16"
"USS YARD","CX-F-Z01.EYD.S14.L2.682","L2 QC Electrical Install-EY05-SWGR-RMU-USS-11","2025-11-25","2025-12-01","16"
"USS YARD","CX-F-Z01.EYD.S14.L2.685","L2 QC Electrical Install-EY05-SWGR-RMU-USS-12","2025-11-25","2025-12-01","16"
"USS YARD","CX-F-Z01.EYD.S14.L2.688","L2 QC Electrical Install-EY05-SWGR-RMU-USS-13","2025-11-25","2025-12-01","16"
"USS YARD","CX-F-Z01.EYD.S14.L2.691","L2 QC Electrical Install-EY05-SWGR-RMU-USS-14","2025-11-25","2025-12-01","16"
"USS YARD","CX-F-Z01.EYD.S14.L2.694","L2 QC Electrical Install-EY05-SWGR-RMU-USS-15","2025-11-25","2025-12-01","16"
"USS YARD","CX-F-Z01.EYD.S14.L2.697","L2 QC Electrical Install-EY05-SWGR-RMU-USS-16","2025-11-25","2025-12-01","16"
"USS YARD","CX-F-Z01.EYD.S14.L2.700","L2 QC Electrical Install-EY05-SWGR-RMU-USS-17","2025-11-25","2025-12-01","16"
"USS YARD","CX-F-Z01.EYD.S14.L2.703","L2 QC Electrical Install-EY05-SWGR-RMU-USS-18","2025-11-25","2025-12-01","16"
"USS YARD","CX-F-Z01.EYD.S14.L2.706","L2 QC Electrical Install-EY05-SWGR-RMU-USS-19","2025-11-25","2025-12-01","16"
"USS YARD","CX-F-Z01.EYD.S14.L2.709","L2 QC Electrical Install-EY05-SWGR-RMU-USS-20","2025-11-25","2025-12-01","16"
"USS YARD","CX-F-Z01.EYD.S14.L2.712","L2 QC Electrical Install-EY05-SWGR-RMU-USS-21","2025-11-25","2025-12-01","16"
"USS YARD","CX-F-Z01.EYD.S14.L2.715","L2 QC Electrical Install-EY05-SWGR-RMU-USS-22","2025-11-25","2025-12-01","16"
"USS YARD","CX-F-Z01.EYD.S14.L2.718","L2 QC Electrical Install-EY05-SWGR-RMU-USS-23","2025-11-25","2025-12-01","16"
"USS YARD","CX-F-Z01.EYD.S14.L2.721","L2 QC Electrical Install-EY05-SWGR-RMU-USS-24","2025-11-25","2025-12-01","16"
"USS YARD","CX-F-Z01.EYD.S14.L2.727","L2 QC Electrical Install-EY05-SWGR-RMU-USS-26","2025-11-25","2025-12-01","16"
"DCH","CN-F-Z01.DCH.S39.HA-13.0002","Install VESDA Panel for Inside Hot Aisle Loop SVH HA N-13 in Room 1-500-Zone 1 DCH","2025-11-25","2025-12-01","16"
"DCH","CN-F-Z01.DCH.S39.HA-14.0002","Install VESDA Panel for Inside Hot Aisle Loop SVH HA N-14 in Room 1-500-Zone 1 DCH","2025-11-25","2025-12-01","16"
"DCH","CN-F-Z01.DCH.S39.HA-15.0002","Install VESDA Panel for Inside Hot Aisle Loop SVH HA N-15 in Room 1-500-Zone 1 DCH","2025-11-25","2025-12-01","16"
"GPS","CN-F-Z02.EYD.S14.GEN-3.1162","Pull & Test MV Feeder from EY06-SWGR-GPS to EY06-GEN-3","2025-11-25","2025-11-26","8"
"GPS","CN-F-Z02.EYD.S14.GEN-2.1331","Term & Torque MV Feeder from EY06-SWGR-GPS to EY06-GEN-2 at EY06-GEN-2","2025-11-25","2025-11-26","8"
"MCP","588335121","EFL / FG Wire Pulls-MCP CTR 04,BUILDOUT","2025-11-25","2025-12-05","48"
"MCP","588301568","Receptacles wire pulls & terms-MCP CTR 04,BUILDOUT","2025-11-25","2025-12-05","48"
"DCH","784096531","DCH2-Fire Riser/Restroom/Janitor (1-572/553/552)-Fire Riser Finishes","2025-11-30","2025-12-01","8"
"DCH","784039311","DCH2-Fire Riser/Restroom/Janitor (1-572/553/552)-Set AC/EF/EUHs","2025-11-30","2025-12-03","24"
"GPS","CN-F-Z02.EYD.S14.GEN-4.1163","Pull & Test MV Feeder from EY06-SWGR-GPS to EY06-GEN-4","2025-11-30","2025-12-01","8"
"GPS","CN-F-Z02.EYD.S14.GEN-3.1332","Term & Torque MV Feeder from EY06-SWGR-GPS to EY06-GEN-3 at EY06-GEN-3","2025-11-30","2025-12-01","8"
"SSS","CX-F-Z02.EYD.S14.L2.1512","L2 QC Electrical Install-EY06-PNL-SSS-F-BDC","2025-11-30","2025-12-02","16"
"MYD","CN-F-Z01.MYD.S39.FRR.003","Pull & Term Fire Alarm Circuits to Devices & Ctrl Panels from MYD MUP Module","2025-11-30","2025-12-12","80"
"GPS","CN-F-Z01.EYD.S14.GEN-13.313","Pull & Test MV Feeder from EY05-SWG-GPS to EY05-GEN-13","2025-12-01","2025-12-03","16"
"DCH","CN-F-Z01.DCH.S39.HA-13.0001","Install VESDA Panel for Inside Hot Aisle Loop SVH HA S-13 in Room 1-500-Zone 1 DCH","2025-12-01","2025-12-03","16"
"DCH","CN-F-Z01.DCH.S39.HA-14.0001","Install VESDA Panel for Inside Hot Aisle Loop SVH HA S-14 in Room 1-500-Zone 1 DCH","2025-12-01","2025-12-03","16"
"DCH","CN-F-Z01.DCH.S39.HA-15.0001","Install VESDA Panel for Inside Hot Aisle Loop SVH HA S-15 in Room 1-500-Zone 1 DCH","2025-12-01","2025-12-03","16"
"GPS","CN-F-Z02.EYD.S14.GEN-5.1164","Pull & Test MV Feeder from EY06-SWGR-GPS to EY06-GEN-5","2025-12-01","2025-12-02","8"
"GPS","CN-F-Z02.EYD.S14.GEN-4.1333","Term & Torque MV Feeder from EY06-SWGR-GPS to EY06-GEN-4 at EY06-GEN-4","2025-12-01","2025-12-02","8"
"USS YARD","CN-F-Z01.MYD.S24.USS-4.1740","Pull,Term,Test & Torque Feeder from MY05-SWGR-USS-CUB-4 to MCP4-Chiller","2025-12-01","2025-12-08","40"
"GPS","CN-F-Z02.EYD.S14.EYD.0006","Install Cable Tray from Z2 EY-06-GEN 13-17 to GPS-2","2025-12-01","2025-12-05","32"
"MYD","CN-F-Z01.MYD.S24.MYD.0003","Install Cable Tray at Z1 MYD USS-06","2025-12-01","2025-12-15","80"
"MYD","CN-F-Z01.MYD.S29.MYD.012","MYD1-Z1-Install & tape Heat Trace Wire for MCP-02","2025-12-01","2025-12-08","40"
"MCP","790348995","Cormaci Caulk Floor Joints-MCP CTR 01,BUILDOUT","2025-12-01","2025-12-05","32"
"USS YARD","642335309","BDC for MY-01-USS-06,USS 6-LV","2025-12-01","2025-12-08","40"
"MCP","101321387","EFL / FG Wire Pulls-MCP CTR 02,BUILDOUT","2025-12-01","2025-12-04","24"
"EYD","CX-10246","EYD1-SSS-E Module Level 3","2025-12-02","2025-12-08","32"
"DCH","019049946","DCH2-Fire Riser 1-571-Install Fire Suppression Equipment","2025-12-02","2025-12-16","80"
"DCH","470092083","DCH2-Fire Riser 1-573-Prime,1st,& Final Coat Paint","2025-12-02","2025-12-05","24"
"GPS","CN-F-Z02.EYD.S14.GEN-6.1165","Pull & Test MV Feeder from EY06-SWGR-GPS to EY06-GEN-6","2025-12-02","2025-12-03","8"
"GPS","CN-F-Z02.EYD.S14.GEN-5.1334","Term & Torque MV Feeder from EY06-SWGR-GPS to EY06-GEN-5 at EY06-GEN-5","2025-12-02","2025-12-03","8"
"DCH","CN-F-Z02.DCH.S18.TB.2138","Complete Pathway to TAPBOX-43TOP in Zone 2 DCH","2025-12-02","2025-12-03","8"
"DCH","CN-F-Z02.DCH.S18.TB.2142","Complete Pathway to TAPBOX-43BOT in Zone 2 DCH","2025-12-02","2025-12-03","8"
"DCH","CN-F-Z02.DCH.S18.TB.2143","Complete Pathway to TAPBOX-44BOT in Zone 2 DCH","2025-12-02","2025-12-03","8"
"USS YARD","CN-F-Z02.DCH.S18.TB.155","Pull,Term,Test & Torque Feeder from EY06-SWGR-USS-1 to TAPBOX-39BOT","2025-12-02","2025-12-04","16"
"DCH","CN-F-Z02.DCH.S18.TB.174","Complete Pathway to TAPBOX-44TOP in Zone 2 DCH","2025-12-02","2025-12-09","40"
"MCP","118361044","610 Motor Wire Pulls-MCP CTR 06,BUILDOUT","2025-12-02","2025-12-04","16"
"MCP","118390072","610 Motor Heater Wire Pulls-MCP CTR 06,BUILDOUT","2025-12-02","2025-12-04","16"
"MYD","CX-10509","MYD1-Battery Skid A L3","2025-12-03","2025-12-05","16"
"DCH","784071266","DCH2-Fire Riser/Restroom/Janitor (1-572/553/552)-Install Ceramic Tile","2025-12-03","2025-12-10","40"
"GPS","CN-F-Z01.EYD.S14.GEN-12.312","Pull & Test MV Feeder from EY05-SWG-GPS to EY05-GEN-12","2025-12-03","2025-12-04","8"
"GPS","CN-F-Z02.EYD.S14.GEN-7.1166","Pull & Test MV Feeder from EY06-SWGR-GPS to EY06-GEN-7","2025-12-03","2025-12-04","8"
"GPS","CN-F-Z02.EYD.S14.GEN-6.1335","Term & Torque MV Feeder from EY06-SWGR-GPS to EY06-GEN-6 at EY06-GEN-6","2025-12-03","2025-12-04","8"
"DCH","CN-F-Z02.DCH.S18.TB.2146","Complete Pathway to TAPBOX-45TOP in Zone 2 DCH","2025-12-03","2025-12-04","8"
"DCH","CN-F-Z01.DCH.S36.TEQP.004","Place,Anchor,Fit-Out & Ground IDF 1.7 in Zone 1 DCH North","2025-12-03","2025-12-05","16"
"DCH","CN-F-Z02.DCH.S18.TB.178","Complete Pathway to TAPBOX-45BOT in Zone 2 DCH","2025-12-03","2025-12-10","40"
"DCH","CN-F-Z02.DCH.S18.TB.182","Complete Pathway to TAPBOX-46BOT in Zone 2 DCH","2025-12-03","2025-12-10","40"
"DCH","CN-F-Z02.DCH.S18.TB.186","Complete Pathway to TAPBOX-46TOP in Zone 2 DCH","2025-12-03","2025-12-10","40"
"DCH","A1060","BMS-DCH1-Terminate Fiber Loop","2025-12-03","2025-12-17","80"
"DCH","A1130","BMS-DCH2-Splice Fiber Loob","2025-12-03","2025-12-17","80"
"DCH","A1150","BMS-DCH1-Leak Detection-Pull Wire-North West","2025-12-03","2025-12-10","40"
"EYD","CON-BB-5495","EYD2-S18 USS 480 Tap Box Terms & Torques Group 1","2025-12-03","2025-12-17","80"
"DCH","CON-8075","DCH2-BMS/PMS+Sec+Device install (breakout & detail) HA 20","2025-12-04","2025-12-08","16"
"GPS","CN-F-Z01.EYD.S14.GEN-11.311","Pull & Test MV Feeder from EY05-SWG-GPS to EY05-GEN-11","2025-12-04","2025-12-05","8"
"SSS","CX-F-Z01.EYD.S14.L2.643","L2 QC Electrical Install-EY05-PNL-SSS-E-BDC","2025-12-04","2025-12-08","16"
"USS YARD","CX-F-Z01.EYD.S14.L2.724","L2 QC Electrical Install-EY05-SWGR-RMU-USS-25","2025-12-04","2025-12-08","16"
"USS YARD","CX-F-Z01.EYD.S14.L2.725","L2 QC Electrical Install-EY05-XFMR-USS-25","2025-12-04","2025-12-08","16"
"SSS","CX-F-Z01.EYD.S14.L2.748","L2 QC Electrical Install-EY05-PNL-SSS-E-RP","2025-12-04","2025-12-08","16"
"USS YARD","CX-F-Z01.EYD.S14.L2.750","L2 QC Electrical Install-EY05-USS-MDA-E","2025-12-04","2025-12-08","16"
"USS YARD","CX-F-Z01.EYD.S14.L2.751","L2 QC Electrical Install-EY05-USS-MDA-F","2025-12-04","2025-12-08","16"
"SSS","CX-F-Z01.EYD.S14.L2.764","L2 QC Electrical Install-EY05-PACK-SSS-F-AC-3","2025-12-04","2025-12-08","16"
"GPS","CN-F-Z02.EYD.S14.GEN-8.1167","Pull & Test MV Feeder from EY06-SWGR-GPS to EY06-GEN-8","2025-12-04","2025-12-05","8"
"GPS","CN-F-Z02.EYD.S14.GEN-7.1336","Term & Torque MV Feeder from EY06-SWGR-GPS to EY06-GEN-7 at EY06-GEN-7","2025-12-04","2025-12-05","8"
"USS YARD","CN-F-Z01.EYD.S14.CW.3242","Pull,Term,Test & Torque Feeder from EY05-USS-3 (Control) to EY05-USS-4 (Control)","2025-12-04","2025-12-18","80"
"USS YARD","CN-F-Z01.EYD.S14.CW.3245","Pull,Term,Test & Torque Feeder from EY05-USS-6 (Control) to EY05-USS-7 (Control)","2025-12-04","2025-12-18","80"
"USS YARD","CN-F-Z01.EYD.S14.CW.3248","Pull,Term,Test & Torque Feeder from EY05-USS-9 (Control) to EY05-USS-10 (Control)","2025-12-04","2025-12-18","80"
"USS YARD","CN-F-Z01.EYD.S14.CW.3251","Pull,Term,Test & Torque Feeder from EY05-USS-12 (Control) to EY05-USS-13 (Control)","2025-12-04","2025-12-18","80"
"USS YARD","CN-F-Z01.EYD.S14.CW.3254","Pull,Term,Test & Torque Feeder from EY05-USS-15 (Control) to EY05-USS-16 (Control)","2025-12-04","2025-12-18","80"
"USS YARD","CN-F-Z01.EYD.S14.CW.3257","Pull,Term,Test & Torque Feeder from EY05-USS-18 (Control) to EY05-USS-19 (Control)","2025-12-04","2025-12-18","80"
"USS YARD","CN-F-Z01.EYD.S14.CW.3260","Pull,Term,Test & Torque Feeder from EY05-USS-21 (Control) to EY05-USS-22 (Control)","2025-12-04","2025-12-18","80"
"USS YARD","CN-F-Z01.EYD.S14.CW.3263","Pull,Term,Test & Torque Feeder from EY05-USS-24 (Control) to EY05-USS-25 (Control)","2025-12-04","2025-12-18","80"
"USS YARD","CN-F-Z01.EYD.S14.CW.3337","Pull,Term,Test & Torque Feeder from EY05-USS-2 (Control) to EY05-USS-1 (Control)","2025-12-04","2025-12-18","80"
"USS YARD","CN-F-Z01.EYD.S14.CW.3338","Pull,Term,Test & Torque Feeder from EY05-USS-5 (Control) to EY05-USS-4 (Control)","2025-12-04","2025-12-18","80"
"USS YARD","CN-F-Z01.EYD.S14.CW.3339","Pull,Term,Test & Torque Feeder from EY05-USS-8 (Control) to EY05-USS-7 (Control)","2025-12-04","2025-12-18","80"
"USS YARD","CN-F-Z01.EYD.S14.CW.3340","Pull,Term,Test & Torque Feeder from EY05-USS-11 (Control) to EY05-USS-10 (Control)","2025-12-04","2025-12-18","80"
"USS YARD","CN-F-Z01.EYD.S14.CW.3341","Pull,Term,Test & Torque Feeder from EY05-USS-14 (Control) to EY05-USS-13 (Control)","2025-12-04","2025-12-18","80"
"USS YARD","CN-F-Z01.EYD.S14.CW.3342","Pull,Term,Test & Torque Feeder from EY05-USS-17 (Control) to EY05-USS-16 (Control)","2025-12-04","2025-12-18","80"
"USS YARD","CN-F-Z01.EYD.S14.CW.3343","Pull,Term,Test & Torque Feeder from EY05-USS-20 (Control) to EY05-USS-19 (Control)","2025-12-04","2025-12-18","80"
"USS YARD","CN-F-Z01.EYD.S14.CW.3344","Pull,Term,Test & Torque Feeder from EY05-USS-23 (Control) to EY05-USS-22 (Control)","2025-12-04","2025-12-18","80"
"USS YARD","CN-F-Z01.EYD.S14.CW.3345","Pull,Term,Test & Torque Feeder from EY05-USS-26 (Control) to EY05-USS-25 (Control)","2025-12-04","2025-12-18","80"
"MCP","118385297","Receptacles wire pulls & terms-MCP CTR 06,BUILDOUT","2025-12-04","2025-12-12","48"
"MCP","101386101","Heat Trace wire pulls-MCP CTR 02,BUILDOUT","2025-12-04","2025-12-12","48"
"MCP","118391231","EFL / FG Wire Pulls-MCP CTR 06,BUILDOUT","2025-12-04","2025-12-12","48"
"EYD","CON-8475","EYD2-MV Cable Pull & Terms GEN 9-16 (A & B) to GPS2","2025-12-07","2026-01-13","200"
"DCH","470009852","DCH2-Fire Riser 1-573-Set EUH","2025-12-07","2025-12-08","8"
"GPS","CN-F-Z01.EYD.S14.GEN-10.310","Pull & Test MV Feeder from EY05-SWG-GPS to EY05-GEN-10","2025-12-07","2025-12-08","8"
"DCH","CN-F-Z02.DCH.S39.HA-35.0002","Install VESDA Panel for Inside Hot Aisle Loop SVH HA N-35 in Room 1-550-Zone 2 DCH","2025-12-07","2025-12-09","16"
"DCH","CN-F-Z02.DCH.S39.HA-36.0002","Install VESDA Panel for Inside Hot Aisle Loop SVH HA N-36 in Room 1-550-Zone 2 DCH","2025-12-07","2025-12-09","16"
"DCH","CN-F-Z02.DCH.S39.HA-37.0002","Install VESDA Panel for Inside Hot Aisle Loop SVH HA N-37 in Room 1-550-Zone 2 DCH","2025-12-07","2025-12-09","16"
"DCH","CN-F-Z02.DCH.S39.HA-38.0002","Install VESDA Panel for Inside Hot Aisle Loop SVH HA N-38 in Room 1-550-Zone 2 DCH","2025-12-07","2025-12-09","16"
"SSS","CN-F-Z02.EYD.S14.SSS-E.1078","Pull & Test MV Feeder from EY06-SWGR-SSS-E to EY06-XFMR-E","2025-12-07","2025-12-19","80"
"SSS","CN-F-Z02.EYD.S14.SSS-F.1080","Pull & Test MV Feeder from EY06-SWGR-SSS-F to EY06-XFMR-F","2025-12-07","2025-12-19","80"
"GPS","CN-F-Z02.EYD.S14.GEN-9.1168","Pull & Test MV Feeder from EY06-SWGR-GPS to EY06-GEN-9","2025-12-07","2025-12-08","8"
"GPS","CN-F-Z02.EYD.S14.GPS.1259","Pull & Test MV Feeder from EY06-SWGR-SSS-F to EY06-SWGR-GPS","2025-12-07","2025-12-19","80"
"GPS","CN-F-Z02.EYD.S14.GEN-8.1337","Term & Torque MV Feeder from EY06-SWGR-GPS to EY06-GEN-8 at EY06-GEN-8","2025-12-07","2025-12-08","8"
"DCH","CN-F-Z01.DCH.S36.TEQP.002","Place,Anchor,Fit-Out & Ground IDF 1.5 in Zone 1 DCH South","2025-12-07","2025-12-09","16"
"MCP","588327893","Roofing Membrane Install-MCP CTR 04,BUILDOUT","2025-12-07","2025-12-12","40"
"EYD","CON-BB-4795","EYD2-RMU to RMU Trays","2025-12-07","2025-12-15","48"
"DCH","CON-8140","DCH2-BMS/PMS+Sec+Device install (breakout & detail) HA 21","2025-12-08","2025-12-10","16"
"MYD","CX-10607","MYD1-PDC-CUB-1 L3","2025-12-08","2025-12-09","8"
"MYD","CX-10608","MYD1-gCUB RMU1 L3","2025-12-08","2025-12-09","8"
"EYD","CX-10480","EYD1-RMU Module MDA-E Level 3","2025-12-08","2025-12-09","8"
"EYD","CX-10260","EYD1-SSS-F Module Level 3","2025-12-08","2025-12-12","32"
"MYD","CX-10595","MYD1-XMFR-BPS 1-L3","2025-12-08","2025-12-10","16"
"DCH","470090052","DCH2-Fire Riser 1-573-Install Finishes","2025-12-08","2025-12-09","8"
"GPS","CN-F-Z01.EYD.S14.GEN-9.309","Pull & Test MV Feeder from EY05-SWG-GPS to EY05-GEN-9","2025-12-08","2025-12-09","8"
"GPS","CN-F-Z02.EYD.S14.GEN-10.1169","Pull & Test MV Feeder from EY06-SWGR-GPS to EY06-GEN-10","2025-12-08","2025-12-09","8"
"GPS","CN-F-Z02.EYD.S14.GEN-9.1338","Term & Torque MV Feeder from EY06-SWGR-GPS to EY06-GEN-9 at EY06-GEN-9","2025-12-08","2025-12-09","8"
"USS YARD","CN-F-Z01.MYD.S24.USS-4.1741","Pull,Term,Test & Torque Feeder from MY05-SWGR-USS-CUB-4 to MCP4-BDC","2025-12-08","2025-12-15","40"
"MCP","CX-F-Z01.MYD.S24.L2.1822","L2 QC Electrical Install-MCP4-Chiller","2025-12-08","2025-12-10","16"
"MCP","CX-F-Z01.MYD.S24.L2.1843","L2 QC Electrical Install-MCP2-Basin HT Panel A","2025-12-08","2025-12-10","16"
"MCP","CX-F-Z01.MYD.S24.L2.1844","L2 QC Electrical Install-MCP2-Basin HT Panel B","2025-12-08","2025-12-10","16"
"MCP","CX-F-Z01.MYD.S24.L2.1845","L2 QC Electrical Install-MCP2-HT TRACE CAB","2025-12-08","2025-12-10","16"
"MYD","CX-10661","MYD1-gCUB RMU2 L3","2025-12-09","2025-12-10","8"
"EYD","CX-10485","EYD1-RMU Module MDA-F Level 3","2025-12-09","2025-12-10","8"
"EYD","CX-10486","EYD1-USS Module MDA-E Level 3","2025-12-09","2025-12-10","8"
"MYD","CX-10662","MYD1-MCP1-BDC & Rest startup","2025-12-09","2025-12-31","120"
"GPS","CN-F-Z01.EYD.S14.GEN-8.308","Pull & Test MV Feeder from EY05-SWG-GPS to EY05-GEN-8","2025-12-09","2025-12-10","8"
"DCH","CN-F-Z02.DCH.S39.HA-35.0001","Install VESDA Panel for Inside Hot Aisle Loop SVH HA S-35 in Room 1-550-Zone 2 DCH","2025-12-09","2025-12-11","16"
"DCH","CN-F-Z02.DCH.S39.HA-36.0001","Install VESDA Panel for Inside Hot Aisle Loop SVH HA S-36 in Room 1-550-Zone 2 DCH","2025-12-09","2025-12-11","16"
"DCH","CN-F-Z02.DCH.S39.HA-37.0001","Install VESDA Panel for Inside Hot Aisle Loop SVH HA S-37 in Room 1-550-Zone 2 DCH","2025-12-09","2025-12-11","16"
"DCH","CN-F-Z02.DCH.S39.HA-38.0001","Install VESDA Panel for Inside Hot Aisle Loop SVH HA S-38 in Room 1-550-Zone 2 DCH","2025-12-09","2025-12-11","16"
"GPS","CN-F-Z02.EYD.S14.GEN-11.1170","Pull & Test MV Feeder from EY06-SWGR-GPS to EY06-GEN-11","2025-12-09","2025-12-10","8"
"GPS","CN-F-Z02.EYD.S14.GEN-10.1339","Term & Torque MV Feeder from EY06-SWGR-GPS to EY06-GEN-10 at EY06-GEN-10","2025-12-09","2025-12-10","8"
"SSS","CX-F-Z02.EYD.S14.L2.1628","L2 QC Electrical Install-EY06-PNL-SSS-F-RP","2025-12-09","2025-12-11","16"
"MCP","780803545","Set MCP-MCP CTR 07,BUILDOUT","2025-12-09","2025-12-11","16"
"DCH","CON-8200","DCH2-BMS/PMS+Sec+Device install (breakout & detail) HA 22","2025-12-10","2025-12-12","16"
"MYD","CX-10664","MYD1-gCUB RMU4 L3","2025-12-10","2025-12-11","8"
"EYD","CX-10488","EYD1-USS Module MDA-F Level 3","2025-12-10","2025-12-11","8"
"GPS","CN-F-Z01.EYD.S14.GEN-7.307","Pull & Test MV Feeder from EY05-SWG-GPS to EY05-GEN-7","2025-12-10","2025-12-11","8"
"GPS","CN-F-Z02.EYD.S14.GEN-12.1171","Pull & Test MV Feeder from EY06-SWGR-GPS to EY06-GEN-12","2025-12-10","2025-12-11","8"
"GPS","CN-F-Z02.EYD.S14.GEN-11.1340","Term & Torque MV Feeder from EY06-SWGR-GPS to EY06-GEN-11 at EY06-GEN-11","2025-12-10","2025-12-11","8"
"SSS","CN-F-Z02.EYD.S14.CW.3265","Pull,Term,Test & Torque Feeder from EY06-SWGR-SSS-E (Control) to EY06-USS-1 (Control)","2025-12-10","2025-12-11","8"
"DCH","998296503","DCH2-Fire Riser/Restroom/Janitor (1-572/553/552)-Install Bathroom Fixtures/Devices/Finishes","2025-12-10","2025-12-17","40"
"DCH","A1160","BMS-DCH1-Leak Detection-Pull Wire-South West","2025-12-10","2025-12-17","40"
"EYD","CON-8655","EYD2-MV Cable Pull & Terms Perun to SSS2","2025-12-11","2026-01-05","120"
"MYD","CX-10680","MYD1-MCP1-Cooling Tower startup","2025-12-11","2026-01-05","120"
"GPS","CN-F-Z01.EYD.S14.GEN-6.306","Pull & Test MV Feeder from EY05-SWG-GPS to EY05-GEN-6","2025-12-11","2025-12-12","8"
"GPS","CN-F-Z02.EYD.S14.GEN-13.1172","Pull & Test MV Feeder from EY06-SWGR-GPS to EY06-GEN-13","2025-12-11","2025-12-12","8"
"GPS","CN-F-Z02.EYD.S14.GEN-12.1341","Term & Torque MV Feeder from EY06-SWGR-GPS to EY06-GEN-12 at EY06-GEN-12","2025-12-11","2025-12-12","8"
"DCH","CN-F-Z02.DCH.S18.TB.2145","Complete Pathway to TAPBOX-48TOP in Zone 2 DCH","2025-12-11","2025-12-12","8"
"DCH","CN-F-Z02.DCH.S18.TB.2147","Complete Pathway to TAPBOX-47BOT in Zone 2 DCH","2025-12-11","2025-12-12","8"
"DCH","CN-F-Z02.DCH.S18.TB.190","Complete Pathway to TAPBOX-47TOP in Zone 2 DCH","2025-12-11","2025-12-18","40"
"DCH","CN-F-Z02.DCH.S18.TB.194","Complete Pathway to TAPBOX-48BOT in Zone 2 DCH","2025-12-11","2025-12-18","40"
"SSS","CN-F-Z02.EYD.S14.CW.3266","Pull,Term,Test & Torque Feeder from EY06-SWGR-SSS-F (Control) to EY06-USS-2 (Control)","2025-12-11","2025-12-12","8"
"USS YARD","CN-F-Z02.EYD.S14.L2.3389","L2 QC Electrical Install-EY06-USS-1 (Control)","2025-12-11","2025-12-15","16"
"MCP","780849788","MCP Plumbing/Mechanical Interconnects-MCP CTR 07,BUILDOUT","2025-12-11","2026-01-05","120"
"MCP","780885665","PCS+PCB Unload-MCP CTR 07,BUILDOUT","2025-12-11","2025-12-12","8"
"MCP","780895844","Roofing Seal-MCP CTR 07,BUILDOUT","2025-12-11","2025-12-12","8"
"MCP","780816814","Cormaci Outside Trim-MCP CTR 07,BUILDOUT","2025-12-11","2025-12-16","24"
"DCH","CON-8250","DCH2-BMS/PMS+Sec+Device install (breakout & detail) HA 23","2025-12-14","2025-12-16","16"
"MYD","CX-10665","MYD1-gCUB RMU6 L3","2025-12-14","2025-12-15","8"
"EYD","CX-10283","EYD1-GPS Module Level 3 (Phasing & Paralleling)","2025-12-14","2025-12-29","80"
"MYD","CX-10596","MYD1-XFMR-BPS 2-L3","2025-12-14","2025-12-16","16"
"DCH","CX-10741","DCH2-Row 43 Top L3","2025-12-14","2025-12-15","8"
"GPS","CN-F-Z01.EYD.S14.GEN-5.305","Pull & Test MV Feeder from EY05-SWG-GPS to EY05-GEN-5","2025-12-14","2025-12-15","8"
"GPS","CN-F-Z02.EYD.S14.GEN-14.1173","Pull & Test MV Feeder from EY06-SWGR-GPS to EY06-GEN-14","2025-12-14","2025-12-15","8"
"GPS","CN-F-Z02.EYD.S14.GEN-13.1342","Term & Torque MV Feeder from EY06-SWGR-GPS to EY06-GEN-13 at EY06-GEN-13","2025-12-14","2025-12-15","8"
"MYD","CN-F-Z01.MYD.S39.FRR.004","Trim & Device Fire Alarm for Circuits from MYD MUP Module","2025-12-14","2025-12-18","32"
"SSS","CN-F-Z02.EYD.S14.CW.3267","Pull,Term,Test & Torque Feeder from EY06-SWGR-SSS-E (Control) to EY06-USS-3 (Control)","2025-12-14","2025-12-15","8"
"USS YARD","CN-F-Z02.EYD.S14.L2.3390","L2 QC Electrical Install-EY06-USS-2 (Control)","2025-12-14","2025-12-16","16"
"MYD","PRO-OFE-014","MYD2-Deliver MCP-07","2025-12-14","2025-12-16","16"
"MCP","118313657","Roofing Membrane Install-MCP CTR 06,BUILDOUT","2025-12-14","2025-12-19","40"
"MCP","101340931","610 Motor & Heater Terms-MCP CTR 02,BUILDOUT","2025-12-14","2025-12-17","24"
"MCP","588389510","EFL / FG Wire Pulls-MCP CTR 04,BUILDOUT","2025-12-14","2025-12-17","24"
"MCP","101382258","Basin Heater Wire Pulls/Terms-MCP CTR 02,BUILDOUT","2025-12-14","2025-12-17","24"
"GPS","CN-F-Z01.EYD.S14.GEN-4.304","Pull & Test MV Feeder from EY05-SWG-GPS to EY05-GEN-4","2025-12-15","2025-12-16","8"
"GPS","CN-F-Z02.EYD.S14.GEN-15.1174","Pull & Test MV Feeder from EY06-SWGR-GPS to EY06-GEN-15","2025-12-15","2025-12-16","8"
"GPS","CN-F-Z02.EYD.S14.GEN-14.1343","Term & Torque MV Feeder from EY06-SWGR-GPS to EY06-GEN-14 at EY06-GEN-14","2025-12-15","2025-12-16","8"
"DCH","CN-F-Z02.DCH.S18.TB.2144","Complete Pathway to TAPBOX-49TOP in Zone 2 DCH","2025-12-15","2025-12-16","8"
"DCH","CN-F-Z02.DCH.S18.TB.2148","Complete Pathway to TAPBOX-49BOT in Zone 2 DCH","2025-12-15","2025-12-16","8"
"DCH","CN-F-Z02.DCH.S18.TB.2149","Complete Pathway to TAPBOX-50BOT in Zone 2 DCH","2025-12-15","2025-12-16","8"
"USS YARD","CN-F-Z01.MYD.S24.USS-6.1745","Pull,Term,Test & Torque Feeder from MY05-USS-CUB-6 to MCP6-Chiller","2025-12-15","2025-12-22","40"
"MCP","CX-F-Z01.MYD.S24.L2.1823","L2 QC Electrical Install-MCP4-BDC","2025-12-15","2025-12-17","16"
"DCH","CN-F-Z02.DCH.S18.TB.198","Complete Pathway to TAPBOX-50TOP in Zone 2 DCH","2025-12-15","2025-12-22","40"
"USS YARD","CN-F-Z02.EYD.S14.L2.3391","L2 QC Electrical Install-EY06-USS-3 (Control)","2025-12-15","2025-12-17","16"
"MCP","780879667","Set PCS+PCB-MCP CTR 07,BUILDOUT","2025-12-15","2025-12-17","16"
"EYD","CON-BB-4805","EYD2-RMU to RMU MV Pulls","2025-12-15","2025-12-22","40"
"DCH","CON-8300","DCH2-BMS/PMS+Sec+Device install (breakout & detail) HA 24","2025-12-16","2025-12-18","16"
"MYD","CX-10663","MYD1-BPS-ATS L3","2025-12-16","2025-12-23","40"
"MYD","CON-114115","MYD2-Set MCP-07","2025-12-16","2025-12-18","16"
"GPS","CN-F-Z01.EYD.S14.GEN-3.303","Pull & Test MV Feeder from EY05-SWG-GPS to EY05-GEN-3","2025-12-16","2025-12-17","8"
"GPS","CN-F-Z02.EYD.S14.GEN-16.1175","Pull & Test MV Feeder from EY06-SWGR-GPS to EY06-GEN-16","2025-12-16","2025-12-17","8"
"GPS","CN-F-Z02.EYD.S14.GEN-15.1344","Term & Torque MV Feeder from EY06-SWGR-GPS to EY06-GEN-15 at EY06-GEN-15","2025-12-16","2025-12-17","8"
"SSS","CN-F-Z02.EYD.S14.CW.3269","Pull,Term,Test & Torque Feeder from EY06-SWGR-SSS-F (Control) to EY06-USS-5 (Control)","2025-12-16","2025-12-17","8"
"MCP","813893111","Set MCP-MCP CTR 09,BUILDOUT","2025-12-16","2025-12-18","16"
"DCH","998296493","DCH2-Fire Riser/Restroom/Janitor (1-572/553/552)-Install Fire Suppression Equipment","2025-12-16","2025-12-31","80"
"GPS","CN-F-Z01.EYD.S14.GEN-2.302","Pull & Test MV Feeder from EY05-SWG-GPS to EY05-GEN-2","2025-12-17","2025-12-18","8"
"GPS","CN-F-Z02.EYD.S14.GEN-17.1176","Pull & Test MV Feeder from EY06-SWGR-GPS to EY06-GEN-17","2025-12-17","2025-12-18","8"
"GPS","CN-F-Z02.EYD.S14.GEN-16.1345","Term & Torque MV Feeder from EY06-SWGR-GPS to EY06-GEN-16 at EY06-GEN-16","2025-12-17","2025-12-18","8"
"SSS","CN-F-Z02.EYD.S14.CW.3270","Pull,Term,Test & Torque Feeder from EY06-SWGR-SSS-E (Control) to EY06-USS-6 (Control)","2025-12-17","2025-12-18","8"
"USS YARD","CN-F-Z02.EYD.S14.L2.3393","L2 QC Electrical Install-EY06-USS-5 (Control)","2025-12-17","2025-12-19","16"
"MCP","588360952","Heat Trace wire pulls-MCP CTR 04,BUILDOUT","2025-12-17","2025-12-26","48"
"MCP","101342221","Cormaci Caulk Floor Joints-MCP CTR 02,BUILDOUT","2025-12-17","2025-12-23","32"
"MCP","780892778","PCS Install-MCP CTR 07,BUILDOUT","2025-12-17","2025-12-19","16"
"DCH","A1140","BMS-DCH2-Terminate Fiber Loop","2025-12-17","2026-01-02","80"
"DCH","A1170","BMS-DCH1-Leak Detection-Pull Wire-North Central","2025-12-17","2025-12-24","40"
"DCH","CON-8350","DCH2-BMS/PMS+Sec+Device install (breakout & detail) HA 25","2025-12-18","2025-12-22","16"
"GPS","CN-F-Z01.EYD.S14.GEN-1.301","Pull & Test MV Feeder from EY05-SWG-GPS to EY05-GEN-1","2025-12-18","2025-12-19","8"
"GPS","CN-F-Z02.EYD.S14.GEN-17.1346","Term & Torque MV Feeder from EY06-SWGR-GPS to EY06-GEN-17 at EY06-GEN-17","2025-12-18","2025-12-19","8"
"SSS","CN-F-Z01.EYD.S14.CW.3291","Pull,Term,Test & Torque Feeder from EY05-SWGR-SSS-E (Control) to MY05-PDC-1 (Control)","2025-12-18","2025-12-26","40"
"USS YARD","CN-F-Z01.EYD.S14.L2.3363","L2 QC Electrical Install-EY05-USS-1 (Control)","2025-12-18","2025-12-22","16"
"USS YARD","CN-F-Z01.EYD.S14.L2.3364","L2 QC Electrical Install-EY05-USS-2 (Control)","2025-12-18","2025-12-22","16"
"USS YARD","CN-F-Z01.EYD.S14.L2.3365","L2 QC Electrical Install-EY05-USS-3 (Control)","2025-12-18","2025-12-22","16"
"USS YARD","CN-F-Z01.EYD.S14.L2.3366","L2 QC Electrical Install-EY05-USS-4 (Control)","2025-12-18","2025-12-22","16"
"USS YARD","CN-F-Z01.EYD.S14.L2.3367","L2 QC Electrical Install-EY05-USS-5 (Control)","2025-12-18","2025-12-22","16"
"USS YARD","CN-F-Z01.EYD.S14.L2.3368","L2 QC Electrical Install-EY05-USS-6 (Control)","2025-12-18","2025-12-22","16"
"USS YARD","CN-F-Z01.EYD.S14.L2.3369","L2 QC Electrical Install-EY05-USS-7 (Control)","2025-12-18","2025-12-22","16"
"USS YARD","CN-F-Z01.EYD.S14.L2.3370","L2 QC Electrical Install-EY05-USS-8 (Control)","2025-12-18","2025-12-22","16"
"USS YARD","CN-F-Z01.EYD.S14.L2.3371","L2 QC Electrical Install-EY05-USS-9 (Control)","2025-12-18","2025-12-22","16"
"USS YARD","CN-F-Z01.EYD.S14.L2.3372","L2 QC Electrical Install-EY05-USS-10 (Control)","2025-12-18","2025-12-22","16"
"USS YARD","CN-F-Z01.EYD.S14.L2.3374","L2 QC Electrical Install-EY05-USS-12 (Control)","2025-12-18","2025-12-22","16"
"USS YARD","CN-F-Z01.EYD.S14.L2.3375","L2 QC Electrical Install-EY05-USS-13 (Control)","2025-12-18","2025-12-22","16"
"USS YARD","CN-F-Z01.EYD.S14.L2.3376","L2 QC Electrical Install-EY05-USS-14 (Control)","2025-12-18","2025-12-22","16"
"USS YARD","CN-F-Z01.EYD.S14.L2.3377","L2 QC Electrical Install-EY05-USS-15 (Control)","2025-12-18","2025-12-22","16"
"USS YARD","CN-F-Z01.EYD.S14.L2.3378","L2 QC Electrical Install-EY05-USS-16 (Control)","2025-12-18","2025-12-22","16"
"USS YARD","CN-F-Z01.EYD.S14.L2.3379","L2 QC Electrical Install-EY05-USS-17 (Control)","2025-12-18","2025-12-22","16"
"USS YARD","CN-F-Z01.EYD.S14.L2.3380","L2 QC Electrical Install-EY05-USS-18 (Control)","2025-12-18","2025-12-22","16"
"USS YARD","CN-F-Z01.EYD.S14.L2.3381","L2 QC Electrical Install-EY05-USS-19 (Control)","2025-12-18","2025-12-22","16"
"USS YARD","CN-F-Z01.EYD.S14.L2.3382","L2 QC Electrical Install-EY05-USS-20 (Control)","2025-12-18","2025-12-22","16"
"USS YARD","CN-F-Z01.EYD.S14.L2.3383","L2 QC Electrical Install-EY05-USS-21 (Control)","2025-12-18","2025-12-22","16"
"USS YARD","CN-F-Z01.EYD.S14.L2.3384","L2 QC Electrical Install-EY05-USS-22 (Control)","2025-12-18","2025-12-22","16"
"USS YARD","CN-F-Z01.EYD.S14.L2.3385","L2 QC Electrical Install-EY05-USS-23 (Control)","2025-12-18","2025-12-22","16"
"USS YARD","CN-F-Z01.EYD.S14.L2.3386","L2 QC Electrical Install-EY05-USS-24 (Control)","2025-12-18","2025-12-22","16"
"USS YARD","CN-F-Z01.EYD.S14.L2.3387","L2 QC Electrical Install-EY05-USS-25 (Control)","2025-12-18","2025-12-22","16"
"USS YARD","CN-F-Z01.EYD.S14.L2.3388","L2 QC Electrical Install-EY05-USS-26 (Control)","2025-12-18","2025-12-22","16"
"USS YARD","CN-F-Z02.EYD.S14.L2.3394","L2 QC Electrical Install-EY06-USS-6 (Control)","2025-12-18","2025-12-22","16"
"MCP","813833821","Cormaci Outside Trim-MCP CTR 09,BUILDOUT","2025-12-18","2025-12-23","24"
"MCP","813870370","Roofing Seal-MCP CTR 09,BUILDOUT","2025-12-18","2025-12-19","8"
"MCP","813883826","PCS+PCB Unload-MCP CTR 09,BUILDOUT","2025-12-18","2025-12-19","8"
"MCP","813832329","MCP Plumbing/Mechanical Interconnects-MCP CTR 09,BUILDOUT","2025-12-18","2026-01-12","120"
"SSS","CN-F-Z01.EYD.S14.SUBE.296","Pull & Test MV Feeder from SUBE-BUS-E to EY05-SWGR-SSS-E","2025-12-21","2026-01-06","80"
"SSS","CN-F-Z01.EYD.S14.SUBE.298","Pull & Test MV Feeder from SUBE-BUS-E to EY05-SWGR-SSS-F","2025-12-21","2026-01-06","80"
"SSS","CN-F-Z01.EYD.S14.SUBF.398","Pull & Test MV Feeder from SUBF-BUS-F to EY05-SWGR-SSS-E","2025-12-21","2026-01-06","80"
"SSS","CN-F-Z01.EYD.S14.SUBF.400","Pull & Test MV Feeder from SUBF-BUS-F to EY05-SWGR-SSS-F","2025-12-21","2026-01-06","80"
"GPS","CN-F-Z01.EYD.S14.GEN-1.497","Term & Torque MV Feeder from EY05-SWG-GPS to EY05-GEN-1 at EY05-GEN-1","2025-12-21","2025-12-22","8"
"DCH","CN-F-Z01.DCH.S39.HA-16.0002","Install VESDA Panel for Inside Hot Aisle Loop SVH HA N-16 in Room 1-500-Zone 1 DCH","2025-12-21","2025-12-23","16"
"DCH","CN-F-Z01.DCH.S39.HA-17.0002","Install VESDA Panel for Inside Hot Aisle Loop SVH HA N-17 in Room 1-500-Zone 1 DCH","2025-12-21","2025-12-23","16"
"DCH","CN-F-Z01.DCH.S39.HA-18.0002","Install VESDA Panel for Inside Hot Aisle Loop SVH HA N-18 in Room 1-500-Zone 1 DCH","2025-12-21","2025-12-23","16"
"DCH","CN-F-Z01.DCH.S39.HA-19.0002","Install VESDA Panel for Inside Hot Aisle Loop SVH HA N-19 in Room 1-500-Zone 1 DCH","2025-12-21","2025-12-23","16"
"SSS","CN-F-Z02.EYD.S14.SSS-E.1276","Term & Torque MV Feeder from EY06-SWGR-SSS-E to EY06-XFMR-E at EY06-XFMR-E","2025-12-21","2025-12-24","24"
"SSS","CN-F-Z02.EYD.S14.SSS-F.1277","Term & Torque MV Feeder from EY06-SWGR-SSS-F to EY06-XFMR-F at EY06-XFMR-F","2025-12-21","2025-12-24","24"
"SSS","CN-F-Z02.EYD.S14.SSS-E.1351","Term & Torque MV Feeder from EY06-SWGR-SSS-E to EY06-XFMR-E at EY06-SWGR-SSS-E","2025-12-21","2025-12-24","24"
"SSS","CN-F-Z02.EYD.S14.SSS-F.1352","Term & Torque MV Feeder from EY06-SWGR-SSS-F to EY06-XFMR-F at EY06-SWGR-SSS-F","2025-12-21","2025-12-24","24"
"GPS","CN-F-Z02.EYD.S14.GEN-1.1405","Term & Torque MV Feeder from EY06-SWGR-GPS to EY06-GEN-1 at EY06-SWGR-GPS","2025-12-21","2025-12-22","8"
"GPS","CN-F-Z02.EYD.S14.GPS.1424","Term & Torque MV Feeder from EY06-SWGR-SSS-F to EY06-SWGR-GPS at EY06-SWGR-GPS","2025-12-21","2025-12-24","24"
"GPS","CN-F-Z02.EYD.S14.GPS.1437","Term & Torque MV Feeder from EY06-SWGR-SSS-F to EY06-SWGR-GPS at EY06-SWGR-SSS-F","2025-12-21","2025-12-24","24"
"SSS","CN-F-Z02.EYD.S14.CW.3272","Pull,Term,Test & Torque Feeder from EY06-SWGR-SSS-F (Control) to EY06-USS-8 (Control)","2025-12-21","2025-12-22","8"
"MCP","118347444","EFL / FG Wire Pulls-MCP CTR 06,BUILDOUT","2025-12-21","2025-12-24","24"
"MCP","780875113","CTS Assembly-MCP CTR 07,BUILDOUT","2025-12-21","2025-12-31","56"
"GPS","CN-F-Z01.EYD.S14.GEN-2.498","Term & Torque MV Feeder from EY05-SWG-GPS to EY05-GEN-2 at EY05-GEN-2","2025-12-22","2025-12-23","8"
"GPS","CN-F-Z02.EYD.S14.GEN-2.1406","Term & Torque MV Feeder from EY06-SWGR-GPS to EY06-GEN-2 at EY06-SWGR-GPS","2025-12-22","2025-12-23","8"
"DCH","CN-F-Z02.DCH.S18.TB.2152","Complete Pathway to TAPBOX-51TOP in Zone 2 DCH","2025-12-22","2025-12-23","8"
"USS YARD","CN-F-Z01.MYD.S24.USS-6.1746","Pull,Term,Test & Torque Feeder from MY05-USS-CUB-6 to MCP6-BDC","2025-12-22","2025-12-30","40"
"MCP","CX-F-Z01.MYD.S24.L2.1827","L2 QC Electrical Install-MCP6-Chiller","2025-12-22","2025-12-24","16"
"DCH","CN-F-Z02.DCH.S18.TB.202","Complete Pathway to TAPBOX-51BOT in Zone 2 DCH","2025-12-22","2025-12-30","40"
"DCH","CN-F-Z02.DCH.S18.TB.206","Complete Pathway to TAPBOX-52BOT in Zone 2 DCH","2025-12-22","2025-12-30","40"
"DCH","CN-F-Z02.DCH.S18.TB.210","Complete Pathway to TAPBOX-52TOP in Zone 2 DCH","2025-12-22","2025-12-30","40"
"SSS","CN-F-Z02.EYD.S14.CW.3290","Pull,Term,Test & Torque Feeder from EY06-SWGR-SSS-F (Control) to EY06-USS-26 (Control)","2025-12-22","2025-12-23","8"
"USS YARD","CN-F-Z02.EYD.S14.L2.3396","L2 QC Electrical Install-EY06-USS-8 (Control)","2025-12-22","2025-12-24","16"
"MCP","813874811","Set PCS+PCB-MCP CTR 09,BUILDOUT","2025-12-22","2025-12-24","16"
"DCH","A1400","PMS-DCH2-Shiraz Bus Plugs-Pull Wire @ SPD7","2025-12-22","2025-12-30","40"
"EYD","CON-BB-4815","EYD2-RMU to RMU MV Terms & Torques","2025-12-22","2026-01-14","120"
"DCH","CX-10549","DCH2-Skidded Load Center E 06 L3","2025-12-23","2025-12-31","40"
"DCH","CX-10550","DCH2-Skidded Load Center E 07 L3","2025-12-23","2025-12-31","40"
"DCH","CX-10551","DCH2-Skidded Load Center E 08 L3","2025-12-23","2025-12-31","40"
"MYD","CX-10689","MYD1-Booster Pump House L3 & FIll","2025-12-23","2025-12-31","40"
"MYD","CON-114375","MYD2-Set MCP-09","2025-12-23","2025-12-26","16"
"GPS","CN-F-Z01.EYD.S14.GEN-3.499","Term & Torque MV Feeder from EY05-SWG-GPS to EY05-GEN-3 at EY05-GEN-3","2025-12-23","2025-12-24","8"
"DCH","CN-F-Z01.DCH.S39.HA-16.0001","Install VESDA Panel for Inside Hot Aisle Loop SVH HA S-16 in Room 1-500-Zone 1 DCH","2025-12-23","2025-12-26","16"
"DCH","CN-F-Z01.DCH.S39.HA-17.0001","Install VESDA Panel for Inside Hot Aisle Loop SVH HA S-17 in Room 1-500-Zone 1 DCH","2025-12-23","2025-12-26","16"
"DCH","CN-F-Z01.DCH.S39.HA-18.0001","Install VESDA Panel for Inside Hot Aisle Loop SVH HA S-18 in Room 1-500-Zone 1 DCH","2025-12-23","2025-12-26","16"
"DCH","CN-F-Z01.DCH.S39.HA-19.0001","Install VESDA Panel for Inside Hot Aisle Loop SVH HA S-19 in Room 1-500-Zone 1 DCH","2025-12-23","2025-12-26","16"
"GPS","CN-F-Z02.EYD.S14.GEN-3.1407","Term & Torque MV Feeder from EY06-SWGR-GPS to EY06-GEN-3 at EY06-SWGR-GPS","2025-12-23","2025-12-24","8"
"DCH","CN-F-Z02.DCH.S18.TB.2151","Complete Pathway to TAPBOX-54TOP in Zone 2 DCH","2025-12-23","2025-12-24","8"
"DCH","CN-F-Z02.DCH.S18.TB.2153","Complete Pathway to TAPBOX-53BOT in Zone 2 DCH","2025-12-23","2025-12-24","8"
"DCH","CN-F-Z02.DCH.S18.TB.214","Complete Pathway to TAPBOX-53TOP in Zone 2 DCH","2025-12-23","2025-12-31","40"
"DCH","CN-F-Z02.DCH.S18.TB.218","Complete Pathway to TAPBOX-54BOT in Zone 2 DCH","2025-12-23","2025-12-31","40"
"USS YARD","CN-F-Z02.EYD.S14.L2.3414","L2 QC Electrical Install-EY06-USS-26 (Control)","2025-12-23","2025-12-26","16"
"MYD","PRO-OFE-015","MYD2-Deliver MCP-09","2025-12-23","2025-12-24","8"
"EYD","CON-BB-5505","EYD2-S18 USS 480 Tap Box Terms & Torques Group 2","2025-12-23","2026-01-08","80"
"DCH","CON-8390","DCH2-BMS/PMS+Sec+Device install (breakout & detail) HA 26","2025-12-25","2025-12-29","16"
"MYD","CX-10757","MYD1-MCP1-Chiller Startup","2025-12-25","2026-01-09","80"
"GPS","CN-F-Z01.EYD.S14.GEN-4.500","Term & Torque MV Feeder from EY05-SWG-GPS to EY05-GEN-4 at EY05-GEN-4","2025-12-25","2025-12-26","8"
"GPS","CN-F-Z02.EYD.S14.GEN-4.1408","Term & Torque MV Feeder from EY06-SWGR-GPS to EY06-GEN-4 at EY06-SWGR-GPS","2025-12-25","2025-12-26","8"
"SSS","CN-F-Z02.EYD.S14.CW.3288","Pull,Term,Test & Torque Feeder from EY06-SWGR-SSS-E (Control) to EY06-USS-24 (Control)","2025-12-25","2025-12-26","8"
"MCP","118344471","Heat Trace wire pulls-MCP CTR 06,BUILDOUT","2025-12-25","2026-01-05","48"
"MCP","813851685","PCS Install-MCP CTR 09,BUILDOUT","2025-12-25","2025-12-29","16"
"DCH","A1180","BMS-DCH1-Leak Detection-Pull Wire-South Central","2025-12-25","2026-01-02","40"
"EYD","CON-8710","EYD2-LV Cable Pull & Terms to Fuel & All","2025-12-28","2026-02-03","200"
"GPS","CN-F-Z01.EYD.S14.GEN-5.501","Term & Torque MV Feeder from EY05-SWG-GPS to EY05-GEN-5 at EY05-GEN-5","2025-12-28","2025-12-29","8"
"GPS","CN-F-Z02.EYD.S14.GEN-5.1409","Term & Torque MV Feeder from EY06-SWGR-GPS to EY06-GEN-5 at EY06-SWGR-GPS","2025-12-28","2025-12-29","8"
"MCP","CN-F-Z02.MYD.S24.MCP9.1897","Pull,Term,Test & Torque Feeder from MCP-09-BDC to MCP-09-Basin HT Panel A","2025-12-28","2025-12-31","24"
"SSS","CN-F-Z02.EYD.S14.CW.3287","Pull,Term,Test & Torque Feeder from EY06-SWGR-SSS-F (Control) to EY06-USS-23 (Control)","2025-12-28","2025-12-29","8"
"USS YARD","CN-F-Z02.EYD.S14.L2.3412","L2 QC Electrical Install-EY06-USS-24 (Control)","2025-12-28","2025-12-30","16"
"MYD","CN-F-Z01.MYD.S29.MYD.013","MYD1-Z1-Install & tape Heat Trace Wire for MCP-04","2025-12-28","2026-01-05","40"
"MCP","588360872","610 Motor & Heater Terms-MCP CTR 04,BUILDOUT","2025-12-28","2025-12-31","24"
"MCP","588340379","Basin Heater Wire Pulls/Terms-MCP CTR 04,BUILDOUT","2025-12-28","2025-12-31","24"
"DCH","CON-8435","DCH2-BMS/PMS+Sec+Device install (breakout & detail) HA 27","2025-12-29","2025-12-31","16"
"MYD","CX-10690","MYD1-PDC-CUB-2 L3","2025-12-29","2025-12-30","8"
"MYD","CX-10694","MYD1-Battery Skid B L3","2025-12-29","2025-12-31","16"
"GPS","CN-F-Z01.EYD.S14.GEN-6.502","Term & Torque MV Feeder from EY05-SWG-GPS to EY05-GEN-6 at EY05-GEN-6","2025-12-29","2025-12-30","8"
"GPS","CN-F-Z01.EYD.S14.GEN-7.503","Term & Torque MV Feeder from EY05-SWG-GPS to EY05-GEN-7 at EY05-GEN-7","2025-12-29","2025-12-30","8"
"GPS","CN-F-Z02.EYD.S14.GEN-6.1410","Term & Torque MV Feeder from EY06-SWGR-GPS to EY06-GEN-6 at EY06-SWGR-GPS","2025-12-29","2025-12-30","8"
"DCH","CN-F-Z02.DCH.S18.TB.2150","Complete Pathway to TAPBOX-55TOP in Zone 2 DCH","2025-12-29","2025-12-30","8"
"DCH","CN-F-Z02.DCH.S18.TB.2154","Complete Pathway to TAPBOX-55BOT in Zone 2 DCH","2025-12-29","2025-12-30","8"
"DCH","CN-F-Z02.DCH.S18.TB.2155","Complete Pathway to TAPBOX-56BOT in Zone 2 DCH","2025-12-29","2025-12-30","8"
"DCH","CN-F-Z02.DCH.S18.TB.222","Complete Pathway to TAPBOX-56TOP in Zone 2 DCH","2025-12-29","2026-01-06","40"
"USS YARD","CN-F-Z02.EYD.S14.L2.3411","L2 QC Electrical Install-EY06-USS-23 (Control)","2025-12-29","2025-12-31","16"
"MCP","813879610","CTS Assembly-MCP CTR 09,BUILDOUT","2025-12-29","2026-01-08","56"
"GPS","CN-F-Z01.EYD.S14.GEN-8.504","Term & Torque MV Feeder from EY05-SWG-GPS to EY05-GEN-8 at EY05-GEN-8","2025-12-30","2025-12-31","8"
"GPS","CN-F-Z01.EYD.S14.GEN-9.505","Term & Torque MV Feeder from EY05-SWG-GPS to EY05-GEN-9 at EY05-GEN-9","2025-12-30","2025-12-31","8"
"GPS","CN-F-Z01.EYD.S14.GEN-10.506","Term & Torque MV Feeder from EY05-SWG-GPS to EY05-GEN-10 at EY05-GEN-10","2025-12-30","2025-12-31","8"
"GPS","CN-F-Z01.EYD.S14.GEN-11.507","Term & Torque MV Feeder from EY05-SWG-GPS to EY05-GEN-11 at EY05-GEN-11","2025-12-30","2025-12-31","8"
"GPS","CN-F-Z01.EYD.S14.GEN-12.508","Term & Torque MV Feeder from EY05-SWG-GPS to EY05-GEN-12 at EY05-GEN-12","2025-12-30","2025-12-31","8"
"GPS","CN-F-Z01.EYD.S14.GEN-13.509","Term & Torque MV Feeder from EY05-SWG-GPS to EY05-GEN-13 at EY05-GEN-13","2025-12-30","2025-12-31","8"
"GPS","CN-F-Z02.EYD.S14.GEN-7.1411","Term & Torque MV Feeder from EY06-SWGR-GPS to EY06-GEN-7 at EY06-SWGR-GPS","2025-12-30","2025-12-31","8"
"DCH","CN-F-Z02.DCH.S18.TB.2158","Complete Pathway to TAPBOX-57TOP in Zone 2 DCH","2025-12-30","2025-12-31","8"
"USS YARD","CX-F-Z01.MYD.S24.L2.1826","L2 QC Electrical Install-MY05-SWGR-USS-CUB-6","2025-12-30","2026-01-07","40"
"MCP","CX-F-Z01.MYD.S24.L2.1828","L2 QC Electrical Install-MCP6-BDC","2025-12-30","2026-01-02","16"
"DCH","CN-F-Z02.DCH.S18.TB.226","Complete Pathway to TAPBOX-57BOT in Zone 2 DCH","2025-12-30","2026-01-07","40"
"DCH","CN-F-Z02.DCH.S18.TB.230","Complete Pathway to TAPBOX-58BOT in Zone 2 DCH","2025-12-30","2026-01-07","40"
"DCH","CN-F-Z02.DCH.S18.TB.234","Complete Pathway to TAPBOX-58TOP in Zone 2 DCH","2025-12-30","2026-01-07","40"
"SSS","CN-F-Z02.EYD.S14.CW.3285","Pull,Term,Test & Torque Feeder from EY06-SWGR-SSS-E (Control) to EY06-USS-21 (Control)","2025-12-30","2025-12-31","8"
"DCH","A1430","PMS-DCH2-Shiraz Bus Plugs-Pull Wire @ SPD10","2025-12-30","2026-01-07","40"
"DCH","CON-8460","DCH2-BMS/PMS+Sec+Device install (breakout & detail) HA 28","2026-01-01","2026-01-05","16"
"MYD","CX-10810","MYD1-MUP L3","2026-01-01","2026-01-15","80"
"DCH","470002401","DCH2-Fire Riser 1-573-Install Fire Suppression Equipment","2026-01-01","2026-01-15","80"
"GPS","CN-F-Z01.EYD.S14.GEN-14.510","Term & Torque MV Feeder from EY05-SWG-GPS to EY05-GEN-14 at EY05-GEN-14","2026-01-01","2026-01-02","8"
"GPS","CN-F-Z02.EYD.S14.GEN-8.1412","Term & Torque MV Feeder from EY06-SWGR-GPS to EY06-GEN-8 at EY06-SWGR-GPS","2026-01-01","2026-01-02","8"
"MCP","CN-F-Z02.MYD.S24.MCP9.1898","Pull,Term,Test & Torque Feeder from MCP-09-BDC to MCP-09-Basin HT Panel B","2026-01-01","2026-01-06","24"
"SSS","CN-F-Z02.EYD.S14.CW.3284","Pull,Term,Test & Torque Feeder from EY06-SWGR-SSS-F (Control) to EY06-USS-20 (Control)","2026-01-01","2026-01-02","8"
"USS YARD","CN-F-Z02.EYD.S14.L2.3409","L2 QC Electrical Install-EY06-USS-21 (Control)","2026-01-01","2026-01-05","16"
"MCP","588368537","Cormaci Caulk Floor Joints-MCP CTR 04,BUILDOUT","2026-01-01","2026-01-07","32"
"MCP","780801243","SSC Steel unload-MCP CTR 07,BUILDOUT","2026-01-01","2026-01-02","8"
"MCP","780874673","CTS Piping,grading,handrail-MCP CTR 07,BUILDOUT","2026-01-01","2026-01-13","64"
"MCP","780875265","CTS Electrical Conduit-MCP CTR 07,BUILDOUT","2026-01-01","2026-01-02","8"
"DCH","CON-6845","DCH1-Install/Terminate Security Devices/IDFs,Pull Cable/Terminate Panel","2026-01-04","2026-02-09","200"
"MYD","CON-114135","MYD2-Set Cooling Tower Structure (CTS)-CTR 07","2026-01-04","2026-01-06","16"
"GPS","CN-F-Z01.EYD.S14.GEN-15.511","Term & Torque MV Feeder from EY05-SWG-GPS to EY05-GEN-15 at EY05-GEN-15","2026-01-04","2026-01-05","8"
"GPS","CN-F-Z01.EYD.S14.GEN-16.512","Term & Torque MV Feeder from EY05-SWG-GPS to EY05-GEN-16 at EY05-GEN-16","2026-01-04","2026-01-05","8"
"GPS","CN-F-Z02.EYD.S14.GEN-9.1413","Term & Torque MV Feeder from EY06-SWGR-GPS to EY06-GEN-9 at EY06-SWGR-GPS","2026-01-04","2026-01-05","8"
"USS YARD","CN-F-Z02.EYD.S14.L2.3408","L2 QC Electrical Install-EY06-USS-20 (Control)","2026-01-04","2026-01-06","16"
"MCP","934804565","Set MCP-MCP CTR 11,BUILDOUT","2026-01-04","2026-01-06","16"
"DCH","A1190","BMS-DCH1-Leak Detection-Pull Wire-North East","2026-01-04","2026-01-09","40"
"DCH","CON-8505","DCH2-BMS/PMS+Sec+Device install (breakout & detail) HA 29","2026-01-05","2026-01-07","16"
"MYD","CX-10697","MYD1-USS-CUB-4 L3","2026-01-05","2026-01-06","8"
"MYD","CON-114545","MYD2-Set MCP-11","2026-01-05","2026-01-07","16"
"MYD","PRO-306022","MYD2-Deliver MCP-11","2026-01-05","2026-01-06","8"
"GPS","CN-F-Z01.EYD.S14.GEN-17.513","Term & Torque MV Feeder from EY05-SWG-GPS to EY05-GEN-17 at EY05-GEN-17","2026-01-05","2026-01-06","8"
"GPS","CN-F-Z01.EYD.S14.GPS.576","Term & Torque MV Feeder from EY05-SWG-GPS to EY05-GEN-1 at EY05-SWG-GPS","2026-01-05","2026-01-06","8"
"GPS","CN-F-Z01.EYD.S14.GPS.577","Term & Torque MV Feeder from EY05-SWG-GPS to EY05-GEN-2 at EY05-SWG-GPS","2026-01-05","2026-01-06","8"
"GPS","CN-F-Z01.EYD.S14.GPS.578","Term & Torque MV Feeder from EY05-SWG-GPS to EY05-GEN-3 at EY05-SWG-GPS","2026-01-05","2026-01-06","8"
"GPS","CN-F-Z02.EYD.S14.GEN-10.1414","Term & Torque MV Feeder from EY06-SWGR-GPS to EY06-GEN-10 at EY06-SWGR-GPS","2026-01-05","2026-01-06","8"
"DCH","CN-F-Z02.DCH.S18.TB.2157","Complete Pathway to TAPBOX-60TOP in Zone 2 DCH","2026-01-05","2026-01-06","8"
"DCH","CN-F-Z02.DCH.S18.TB.2159","Complete Pathway to TAPBOX-59BOT in Zone 2 DCH","2026-01-05","2026-01-06","8"
"MCP","CX-F-Z01.MYD.S24.L2.1846","L2 QC Electrical Install-MCP4-Basin HT Panel A","2026-01-05","2026-01-07","16"
"MCP","CX-F-Z01.MYD.S24.L2.1847","L2 QC Electrical Install-MCP4-Basin HT Panel B","2026-01-05","2026-01-07","16"
"MCP","CX-F-Z01.MYD.S24.L2.1848","L2 QC Electrical Install-MCP4-HT TRACE CAB","2026-01-05","2026-01-07","16"
"DCH","CN-F-Z02.DCH.S18.TB.238","Complete Pathway to TAPBOX-59TOP in Zone 2 DCH","2026-01-05","2026-01-12","40"
"DCH","CN-F-Z02.DCH.S18.TB.242","Complete Pathway to TAPBOX-60BOT in Zone 2 DCH","2026-01-05","2026-01-12","40"
"SSS","CN-F-Z02.EYD.S14.CW.3282","Pull,Term,Test & Torque Feeder from EY06-SWGR-SSS-E (Control) to EY06-USS-18 (Control)","2026-01-05","2026-01-06","8"
"MCP","118325133","610 Motor & Heater Terms-MCP CTR 06,BUILDOUT","2026-01-05","2026-01-08","24"
"MCP","118398759","Basin Heater Wire Pulls/Terms-MCP CTR 06,BUILDOUT","2026-01-05","2026-01-08","24"
"MCP","780806635","PCS Piping Connects MUWT & Chem Lines-MCP CTR 07,BUILDOUT","2026-01-05","2026-01-13","48"
"MYD","CON-114145","MYD2-Set MCP-07 Pipe Conveyance Structure/Install Grating & Handrail/Set Lower CT Access Stairs","2026-01-06","2026-01-13","40"
"MYD","CON-114395","MYD2-Set Cooling Tower Structure (CTS)-CTR 09","2026-01-06","2026-01-08","16"
"GPS","CN-F-Z01.EYD.S14.GPS.579","Term & Torque MV Feeder from EY05-SWG-GPS to EY05-GEN-4 at EY05-SWG-GPS","2026-01-06","2026-01-07","8"
"GPS","CN-F-Z01.EYD.S14.GPS.580","Term & Torque MV Feeder from EY05-SWG-GPS to EY05-GEN-5 at EY05-SWG-GPS","2026-01-06","2026-01-07","8"
"GPS","CN-F-Z01.EYD.S14.GPS.581","Term & Torque MV Feeder from EY05-SWG-GPS to EY05-GEN-6 at EY05-SWG-GPS","2026-01-06","2026-01-07","8"
"GPS","CN-F-Z02.EYD.S14.GEN-11.1415","Term & Torque MV Feeder from EY06-SWGR-GPS to EY06-GEN-11 at EY06-SWGR-GPS","2026-01-06","2026-01-07","8"
"DCH","CN-F-Z02.DCH.S18.TB.2156","Complete Pathway to TAPBOX-61TOP in Zone 2 DCH","2026-01-06","2026-01-07","8"
"DCH","CN-F-Z02.DCH.S18.TB.2160","Complete Pathway to TAPBOX-61BOT in Zone 2 DCH","2026-01-06","2026-01-07","8"
"DCH","CN-F-Z02.DCH.S18.TB.2161","Complete Pathway to TAPBOX-62BOT in Zone 2 DCH","2026-01-06","2026-01-07","8"
"MCP","CN-F-Z02.MYD.S24.MCP9.1899","Pull,Term,Test & Torque Feeder from MCP-09-BDC to MCP-09-HT TRACE CAB","2026-01-06","2026-01-09","24"
"DCH","CN-F-Z02.DCH.S18.TB.246","Complete Pathway to TAPBOX-62TOP in Zone 2 DCH","2026-01-06","2026-01-13","40"
"SSS","CN-F-Z02.EYD.S14.CW.3281","Pull,Term,Test & Torque Feeder from EY06-SWGR-SSS-F (Control) to EY06-USS-17 (Control)","2026-01-06","2026-01-07","8"
"SSS","CN-F-Z01.EYD.S14.CW.3332","Pull,Term,Test & Torque Feeder from SUB01-BUS-A (Control) to EY05-SWGR-SSS-E (Control)","2026-01-06","2026-01-13","40"
"SSS","CN-F-Z01.EYD.S14.CW.3333","Pull,Term,Test & Torque Feeder from SUB01-BUS-A (Control) to EY05-SWGR-SSS-F (Control)","2026-01-06","2026-01-13","40"
"USS YARD","CN-F-Z02.EYD.S14.L2.3406","L2 QC Electrical Install-EY06-USS-18 (Control)","2026-01-06","2026-01-08","16"
"MCP","934844659","PCS+PCB Unload-MCP CTR 11,BUILDOUT","2026-01-06","2026-01-07","8"
"MCP","934809714","Cormaci Outside Trim-MCP CTR 11,BUILDOUT","2026-01-06","2026-01-09","24"
"MCP","934811179","Roofing Seal-MCP CTR 11,BUILDOUT","2026-01-06","2026-01-07","8"
"MCP","934829353","MCP Final Plumbing/Mechanical Interconnects-MCP CTR 11,BUILDOUT","2026-01-06","2026-01-07","8"
"DCH","CON-8530","DCH2-BMS/PMS+Sec+Device install (breakout & detail) HA 30","2026-01-07","2026-01-09","16"
"GPS","CN-F-Z01.EYD.S14.GPS.582","Term & Torque MV Feeder from EY05-SWG-GPS to EY05-GEN-7 at EY05-SWG-GPS","2026-01-07","2026-01-08","8"
"GPS","CN-F-Z01.EYD.S14.GPS.583","Term & Torque MV Feeder from EY05-SWG-GPS to EY05-GEN-8 at EY05-SWG-GPS","2026-01-07","2026-01-08","8"
"GPS","CN-F-Z01.EYD.S14.GPS.584","Term & Torque MV Feeder from EY05-SWG-GPS to EY05-GEN-9 at EY05-SWG-GPS","2026-01-07","2026-01-08","8"
"GPS","CN-F-Z02.EYD.S14.GEN-12.1416","Term & Torque MV Feeder from EY06-SWGR-GPS to EY06-GEN-12 at EY06-SWGR-GPS","2026-01-07","2026-01-08","8"
"MCP","CN-F-Z02.MYD.S24.MCP11.1900","Pull,Term,Test & Torque Feeder from MCP-11-BDC to MCP-11-Basin HT Panel A","2026-01-07","2026-01-12","24"
"USS YARD","CN-F-Z01.EYD.S14.CW.3336","Pull,Term,Test & Torque Feeder from EY05-USS-MDA-F (Control) to EY05-USS-MDA-E (Control)","2026-01-07","2026-01-22","80"
"USS YARD","CN-F-Z02.EYD.S14.L2.3405","L2 QC Electrical Install-EY06-USS-17 (Control)","2026-01-07","2026-01-09","16"
"MCP","934857259","PCS Piping Connects MUWT & Chem Lines-MCP CTR 11,BUILDOUT","2026-01-07","2026-01-15","48"
"MYD","CON-114405","MYD2-Set MCP-09 Pipe Conveyance Structure/Install Grating & Handrail/Set Lower CT Access Stairs","2026-01-08","2026-01-15","40"
"GPS","CN-F-Z01.EYD.S14.GPS.585","Term & Torque MV Feeder from EY05-SWG-GPS to EY05-GEN-10 at EY05-SWG-GPS","2026-01-08","2026-01-09","8"
"GPS","CN-F-Z01.EYD.S14.GPS.586","Term & Torque MV Feeder from EY05-SWG-GPS to EY05-GEN-11 at EY05-SWG-GPS","2026-01-08","2026-01-09","8"
"GPS","CN-F-Z01.EYD.S14.GPS.587","Term & Torque MV Feeder from EY05-SWG-GPS to EY05-GEN-12 at EY05-SWG-GPS","2026-01-08","2026-01-09","8"
"GPS","CN-F-Z02.EYD.S14.GEN-13.1417","Term & Torque MV Feeder from EY06-SWGR-GPS to EY06-GEN-13 at EY06-SWGR-GPS","2026-01-08","2026-01-09","8"
"SSS","CN-F-Z02.EYD.S14.CW.3279","Pull,Term,Test & Torque Feeder from EY06-SWGR-SSS-E (Control) to EY06-USS-15 (Control)","2026-01-08","2026-01-09","8"
"MCP","118392474","Cormaci Caulk Floor Joints-MCP CTR 06,BUILDOUT","2026-01-08","2026-01-14","32"
"MCP","813851042","CTS Electrical Conduit-MCP CTR 09,BUILDOUT","2026-01-08","2026-01-09","8"
"MCP","934828879","Set PCS+PCB-MCP CTR 11,BUILDOUT","2026-01-08","2026-01-12","16"
"MCP","813882510","CTS Piping,grading,handrail-MCP CTR 09,BUILDOUT","2026-01-08","2026-01-21","64"
"MCP","813850413","SSC Steel unload-MCP CTR 09,BUILDOUT","2026-01-08","2026-01-09","8"
"DCH","CON-8550","DCH2-BMS/PMS+Sec+Device install (breakout & detail) HA 31","2026-01-11","2026-01-13","16"
"MYD","CON-114565","MYD2-Set Cooling Tower Structure (CTS)-CTR 11","2026-01-11","2026-01-13","16"
"GPS","CN-F-Z01.EYD.S14.GPS.588","Term & Torque MV Feeder from EY05-SWG-GPS to EY05-GEN-13 at EY05-SWG-GPS","2026-01-11","2026-01-12","8"
"GPS","CN-F-Z01.EYD.S14.GPS.589","Term & Torque MV Feeder from EY05-SWG-GPS to EY05-GEN-14 at EY05-SWG-GPS","2026-01-11","2026-01-12","8"
"GPS","CN-F-Z01.EYD.S14.GPS.590","Term & Torque MV Feeder from EY05-SWG-GPS to EY05-GEN-15 at EY05-SWG-GPS","2026-01-11","2026-01-12","8"
"GPS","CN-F-Z02.EYD.S14.GEN-14.1418","Term & Torque MV Feeder from EY06-SWGR-GPS to EY06-GEN-14 at EY06-SWGR-GPS","2026-01-11","2026-01-12","8"
"DCH","CN-F-Z02.DCH.S18.TB.2164","Complete Pathway to TAPBOX-63TOP in Zone 2 DCH","2026-01-11","2026-01-12","8"
"DCH","CN-F-Z02.DCH.S18.TB.250","Complete Pathway to TAPBOX-63BOT in Zone 2 DCH","2026-01-11","2026-01-16","40"
"DCH","CN-F-Z02.DCH.S18.TB.254","Complete Pathway to TAPBOX-64BOT in Zone 2 DCH","2026-01-11","2026-01-16","40"
"DCH","CN-F-Z02.DCH.S18.TB.258","Complete Pathway to TAPBOX-64TOP in Zone 2 DCH","2026-01-11","2026-01-16","40"
"SSS","CN-F-Z02.EYD.S14.CW.3278","Pull,Term,Test & Torque Feeder from EY06-SWGR-SSS-F (Control) to EY06-USS-14 (Control)","2026-01-11","2026-01-12","8"
"USS YARD","CN-F-Z02.EYD.S14.L2.3403","L2 QC Electrical Install-EY06-USS-15 (Control)","2026-01-11","2026-01-13","16"
"DCH","A1200","BMS-DCH1-Leak Detection-Pull Wire-South East","2026-01-11","2026-01-16","40"
"DCH","A1410","PMS-DCH2-Shiraz Bus Plugs-Pull Wire @ SPD8","2026-01-11","2026-01-16","40"
"EYD","CON-BB-5515","EYD2-S18 USS 480 Tap Box Terms & Torques Group 3","2026-01-11","2026-01-26","80"
"GPS","CN-F-Z01.EYD.S14.GPS.591","Term & Torque MV Feeder from EY05-SWG-GPS to EY05-GEN-16 at EY05-SWG-GPS","2026-01-12","2026-01-13","8"
"GPS","CN-F-Z01.EYD.S14.GPS.592","Term & Torque MV Feeder from EY05-SWG-GPS to EY05-GEN-17 at EY05-SWG-GPS","2026-01-12","2026-01-13","8"
"GPS","CN-F-Z02.EYD.S14.GEN-15.1419","Term & Torque MV Feeder from EY06-SWGR-GPS to EY06-GEN-15 at EY06-SWGR-GPS","2026-01-12","2026-01-13","8"
"DCH","CN-F-Z02.DCH.S18.TB.2163","Complete Pathway to TAPBOX-66TOP in Zone 2 DCH","2026-01-12","2026-01-13","8"
"DCH","CN-F-Z02.DCH.S18.TB.2165","Complete Pathway to TAPBOX-65BOT in Zone 2 DCH","2026-01-12","2026-01-13","8"
"MCP","CN-F-Z02.MYD.S24.MCP11.1901","Pull,Term,Test & Torque Feeder from MCP-11-BDC to MCP-11-Basin HT Panel B","2026-01-12","2026-01-15","24"
"DCH","CN-F-Z02.DCH.S18.TB.262","Complete Pathway to TAPBOX-65TOP in Zone 2 DCH","2026-01-12","2026-01-20","40"
"DCH","CN-F-Z02.DCH.S18.TB.266","Complete Pathway to TAPBOX-66BOT in Zone 2 DCH","2026-01-12","2026-01-20","40"
"USS YARD","CN-F-Z02.EYD.S14.L2.3402","L2 QC Electrical Install-EY06-USS-14 (Control)","2026-01-12","2026-01-14","16"
"MCP","934861306","PCS Install-MCP CTR 11,BUILDOUT","2026-01-12","2026-01-14","16"
"MCP","813852569","PCS Piping Connects MUWT & Chem Lines-MCP CTR 09,BUILDOUT","2026-01-12","2026-01-21","48"
"EYD","CON-8675-BB","EYD2-MV Cable Pull & Terms GPS2 to SSS2","2026-01-13","2026-01-22","48"
"DCH","CON-8570","DCH2-BMS/PMS+Sec+Device install (breakout & detail) HA 32","2026-01-13","2026-01-15","16"
"MYD","CON-114155","MYD2-Mobilize (Crane B) &Stage Cooling Tower/Set & Anchor Cooling Tower-CTR 07","2026-01-13","2026-01-22","48"
"SSS","CN-F-Z01.EYD.S14.SUBE.435","Term & Torque MV Feeder from SUBE-BUS-E to EY05-SWGR-SSS-E at EY05-SWGR-SSS-E","2026-01-13","2026-01-30","96"
"SSS","CN-F-Z01.EYD.S14.SSS-E.437","Term & Torque MV Feeder from SUBE-BUS-E to EY05-SWGR-SSS-F at EY05-SWGR-SSS-F","2026-01-13","2026-01-30","96"
"SSS","CN-F-Z01.EYD.S14.SSS-E.514","Term & Torque MV Feeder from SUBE-BUS-E to EY05-SWGR-SSS-E at SUBE-BUS-E","2026-01-13","2026-01-30","96"
"SSS","CN-F-Z01.EYD.S14.SUBE.516","Term & Torque MV Feeder from SUBE-BUS-E to EY05-SWGR-SSS-F at SUBE-BUS-E","2026-01-13","2026-01-30","96"
"SSS","CN-F-Z01.EYD.S14.SUBF.593","Term & Torque MV Feeder from SUBF-BUS-F to EY05-SWGR-SSS-E at EY05-SWGR-SSS-E","2026-01-13","2026-01-30","96"
"SSS","CN-F-Z01.EYD.S14.SUBF.595","Term & Torque MV Feeder from SUBF-BUS-F to EY05-SWGR-SSS-F at EY05-SWGR-SSS-F","2026-01-13","2026-01-30","96"
"SSS","CN-F-Z01.EYD.S14.SUBF.606","Term & Torque MV Feeder from SUBF-BUS-F to EY05-SWGR-SSS-E at SUBF-BUS-F","2026-01-13","2026-01-30","96"
"SSS","CN-F-Z01.EYD.S14.SUBF.608","Term & Torque MV Feeder from SUBF-BUS-F to EY05-SWGR-SSS-F at SUBF-BUS-F","2026-01-13","2026-01-30","96"
"GPS","CN-F-Z02.EYD.S14.GEN-16.1420","Term & Torque MV Feeder from EY06-SWGR-GPS to EY06-GEN-16 at EY06-SWGR-GPS","2026-01-13","2026-01-14","8"
"SSS","CN-F-Z02.EYD.S14.CW.3276","Pull,Term,Test & Torque Feeder from EY06-SWGR-SSS-E (Control) to EY06-USS-12 (Control)","2026-01-13","2026-01-14","8"
"SSS","CN-F-Z01.EYD.S14.L2.3456","L2 QC Electrical Install-EY05-SWGR-SSS-E (Control)","2026-01-13","2026-01-15","16"
"SSS","CN-F-Z01.EYD.S14.L2.3457","L2 QC Electrical Install-EY05-SWGR-SSS-F (Control)","2026-01-13","2026-01-15","16"
"MCP","780863887","Domestic Water Tie In-MCP CTR 07,BUILDOUT","2026-01-13","2026-01-15","16"
"MCP","780829028","CT Drains & Blowdowns-MCP CTR 07,BUILDOUT","2026-01-13","2026-01-26","64"
"MCP","780813151","PCS Chemical Piping-MCP CTR 07,BUILDOUT","2026-01-13","2026-01-16","24"
"MCP","780842706","CT Unload-MCP CTR 07,BUILDOUT","2026-01-13","2026-01-14","8"
"MCP","780887660","CTS Electrical Conduit-MCP CTR 07,BUILDOUT","2026-01-13","2026-01-14","8"
"GPS","CN-F-Z02.EYD.S14.GEN-17.1421","Term & Torque MV Feeder from EY06-SWGR-GPS to EY06-GEN-17 at EY06-SWGR-GPS","2026-01-14","2026-01-22","40"
"SSS","CN-F-Z02.EYD.S14.CW.3275","Pull,Term,Test & Torque Feeder from EY06-SWGR-SSS-F (Control) to EY06-USS-11 (Control)","2026-01-14","2026-01-15","8"
"USS YARD","CN-F-Z02.EYD.S14.L2.3400","L2 QC Electrical Install-EY06-USS-12 (Control)","2026-01-14","2026-01-16","16"
"MCP","780818115","CT Build an Install-MCP CTR 07,BUILDOUT","2026-01-14","2026-01-22","40"
"MCP","780876539","CT Mount Panel Skid-MCP CTR 07,BUILDOUT","2026-01-14","2026-01-16","16"
"MCP","934823269","CTS Assembly-MCP CTR 11,BUILDOUT","2026-01-14","2026-01-26","56"
"EYD","CON-BB-4825","EYD2-Perun to SSS-E MV Pulls","2026-01-14","2026-01-29","80"
"EYD","CON-BB-4835","EYD2-Perun to SSS-F MV Pulls","2026-01-14","2026-01-29","80"
"DCH","CON-8595","DCH2-BMS/PMS+Sec+Device install (breakout & detail) HA 33","2026-01-15","2026-01-20","16"
"MYD","CX-10882","MYD1-CTB L3","2026-01-15","2026-01-30","80"
"MYD","CX-10885","MYD1-MUP L4","2026-01-15","2026-01-21","24"
"MYD","CON-114415","MYD2-Mobilize (Crane B) &Stage Cooling Tower/Set & Anchor Cooling Tower-CTR 09","2026-01-15","2026-01-26","48"
"MYD","CON-114575","MYD2-Set MCP-11 Pipe Conveyance Structure/Install Grating & Handrail/Set Lower CT Access Stairs","2026-01-15","2026-01-23","40"
"DCH","CN-F-Z02.DCH.S18.TB.2162","Complete Pathway to TAPBOX-67TOP in Zone 2 DCH","2026-01-15","2026-01-16","8"
"DCH","CN-F-Z02.DCH.S18.TB.2166","Complete Pathway to TAPBOX-67BOT in Zone 2 DCH","2026-01-15","2026-01-16","8"
"DCH","CN-F-Z02.DCH.S18.TB.2167","Complete Pathway to TAPBOX-68BOT in Zone 2 DCH","2026-01-15","2026-01-16","8"
"MCP","CN-F-Z02.MYD.S24.MCP11.1902","Pull,Term,Test & Torque Feeder from MCP-11-BDC to MCP-11-HT TRACE CAB","2026-01-15","2026-01-21","24"
"DCH","CN-F-Z02.DCH.S18.TB.270","Complete Pathway to TAPBOX-68TOP in Zone 2 DCH","2026-01-15","2026-01-23","40"
"GPS","CN-F-Z01.EYD.S14.PRN.074","Splice & Test PRN Fiber at EY05-GPS","2026-01-15","2026-02-11","144"
"MCP","CN-F-Z02.MYD.S29.MYD.004","Z2-Install & tape Heat Trace Wire for MCP-09","2026-01-15","2026-01-23","40"
"USS YARD","CN-F-Z02.EYD.S14.L2.3399","L2 QC Electrical Install-EY06-USS-11 (Control)","2026-01-15","2026-01-20","16"
"SSS","CN-F-Z02.EYD.S14.L2.3459","L2 QC Electrical Install-EY06-SWGR-SSS-F (Control)","2026-01-15","2026-01-20","16"
"MCP","934888827","PCS Chemical Piping-MCP CTR 11,BUILDOUT","2026-01-15","2026-01-21","24"
"MCP","934818790","Domestic Water Tie In-MCP CTR 11,BUILDOUT","2026-01-15","2026-01-20","16"
"DCH","CN-F-Z02.DCH.S18.TB.2170","Complete Pathway to TAPBOX-69TOP in Zone 2 DCH","2026-01-19","2026-01-20","8"
"DCH","CN-F-Z02.DCH.S18.TB.274","Complete Pathway to TAPBOX-69BOT in Zone 2 DCH","2026-01-19","2026-01-26","40"
"DCH","CN-F-Z02.DCH.S18.TB.278","Complete Pathway to TAPBOX-70BOT in Zone 2 DCH","2026-01-19","2026-01-26","40"
"DCH","CN-F-Z02.DCH.S18.TB.282","Complete Pathway to TAPBOX-70TOP in Zone 2 DCH","2026-01-19","2026-01-26","40"
"SSS","CN-F-Z02.EYD.S14.CW.3273","Pull,Term,Test & Torque Feeder from EY06-SWGR-SSS-E (Control) to EY06-USS-9 (Control)","2026-01-19","2026-01-20","8"
"MCP","780815476","CTS Stair install-MCP CTR 07,BUILDOUT","2026-01-19","2026-01-23","32"
"MYD","029823645","CN-F-Z01.MYD.S21.PDC-1.1728-USS-07,USS 7-RMU","2026-01-19","2026-01-20","8"
"DCH","A1230","BMS-DCH2-Leak Detection-Pull Wire-North West","2026-01-19","2026-01-26","40"
"DCH","A1440","PMS-DCH2-Shiraz Bus Plugs-Pull Wire @ SPD11","2026-01-19","2026-01-26","40"
"DCH","CON-8605","DCH2-BMS/PMS+Sec+Device install (breakout & detail) HA 34","2026-01-20","2026-01-22","16"
"MYD","CX-10703","MYD1-USS-CUB-6 L3","2026-01-20","2026-01-21","8"
"DCH","CN-F-Z02.DCH.S18.TB.2169","Complete Pathway to TAPBOX-72TOP in Zone 2 DCH","2026-01-20","2026-01-21","8"
"DCH","CN-F-Z02.DCH.S18.TB.2171","Complete Pathway to TAPBOX-71BOT in Zone 2 DCH","2026-01-20","2026-01-21","8"
"DCH","CN-F-Z02.DCH.S18.TB.286","Complete Pathway to TAPBOX-71TOP in Zone 2 DCH","2026-01-20","2026-01-27","40"
"DCH","CN-F-Z02.DCH.S18.TB.290","Complete Pathway to TAPBOX-72BOT in Zone 2 DCH","2026-01-20","2026-01-27","40"
"USS YARD","CN-F-Z02.EYD.S14.L2.3397","L2 QC Electrical Install-EY06-USS-9 (Control)","2026-01-20","2026-01-22","16"
"SSS","CN-F-Z02.EYD.S14.L2.3458","L2 QC Electrical Install-EY06-SWGR-SSS-E (Control)","2026-01-20","2026-01-22","16"
"DCH","CX-10738","DCH2-Skidded Load Center F 06 L3","2026-01-21","2026-01-28","40"
"DCH","CX-10739","DCH2-Skidded Load Center F 07 L3","2026-01-21","2026-01-28","40"
"DCH","CX-10740","DCH2-Skidded Load Center F 08 L3","2026-01-21","2026-01-28","40"
"MCP","813861219","CTS Electrical Conduit-MCP CTR 09,BUILDOUT","2026-01-21","2026-01-22","8"
"MCP","813854556","CT Drains & Blowdowns-MCP CTR 09,BUILDOUT","2026-01-21","2026-02-02","64"
"MCP","813891439","PCS Chemical Piping-MCP CTR 09,BUILDOUT","2026-01-21","2026-01-26","24"
"MCP","813867432","Domestic Water Tie In-MCP CTR 09,BUILDOUT","2026-01-21","2026-01-23","16"
"MCP","813832980","CT Unload-MCP CTR 09,BUILDOUT","2026-01-21","2026-01-22","8"
"DCH","CON-8610","DCH2-BMS/PMS+Sec+Device install (breakout & detail) HA 35","2026-01-22","2026-01-26","16"
"EYD","CX-10981","EYD2-GPS Module Level 3 (Phasing & Paralleling)","2026-01-22","2026-01-29","40"
"MYD","CON-114165","MYD2-Fitout MCP-07","2026-01-22","2026-01-29","40"
"DCH","CN-F-Z02.DCH.S18.TB.2168","Complete Pathway to TAPBOX-73TOP in Zone 2 DCH","2026-01-22","2026-01-23","8"
"DCH","CN-F-Z02.DCH.S18.TB.2172","Complete Pathway to TAPBOX-73BOT in Zone 2 DCH","2026-01-22","2026-01-23","8"
"DCH","CN-F-Z02.DCH.S18.TB.2173","Complete Pathway to TAPBOX-74BOT in Zone 2 DCH","2026-01-22","2026-01-23","8"
"MCP","CN-F-Z02.MYD.S24.MCP7.1894","Pull,Term,Test & Torque Feeder from MCP-07-BDC to MCP-07-Basin HT Panel A","2026-01-22","2026-01-27","24"
"DCH","CN-F-Z02.DCH.S18.TB.294","Complete Pathway to TAPBOX-74TOP in Zone 2 DCH","2026-01-22","2026-01-29","40"
"GPS","CN-F-Z01.EYD.S14.CW.3298","Pull,Term,Test & Torque Feeder from EY05-SWGR-GPS (Control) to EY05-GEN 1 (Control)","2026-01-22","2026-01-23","8"
"USS YARD","CN-F-Z01.EYD.S14.L2.3361","L2 QC Electrical Install-EY05-USS-MDA-E (Control)","2026-01-22","2026-01-26","16"
"USS YARD","CN-F-Z01.EYD.S14.L2.3362","L2 QC Electrical Install-EY05-USS-MDA-F (Control)","2026-01-22","2026-01-26","16"
"MCP","813854625","CT Mount Panel Skid-MCP CTR 09,BUILDOUT","2026-01-22","2026-01-26","16"
"MCP","813810443","CT Build an Install-MCP CTR 09,BUILDOUT","2026-01-22","2026-01-29","40"
"MCP","780813427","Final Cooling Tower Connections-Condenser / Sweeper Piping Install-MCP CTR 07,BUILDOUT","2026-01-22","2026-01-26","16"
"MCP","780887325","CT Stair Install-MCP CTR 07,BUILDOUT","2026-01-22","2026-01-28","32"
"USS YARD","382803174","Cable Tray Rack Loose Set-USS-07,USS 7-LV","2026-01-22","2026-01-23","8"
"MYD","CON-8635","MYD2-Cable Pull-Term USS H-L (From MV Trench)","2026-01-25","2026-03-03","216"
"DCH","CN-F-Z02.DCH.S18.TB.2174","Complete Pathway to TAPBOX-75TOP in Zone 2 DCH","2026-01-25","2026-01-26","8"
"DCH","CN-F-Z02.DCH.S18.TB.2175","Complete Pathway to TAPBOX-76BOT in Zone 2 DCH","2026-01-25","2026-01-26","8"
"MCP","CX-F-Z02.MYD.S24.L2.1942","L2 QC Electrical Install-MCP9-Basin HT Panel A","2026-01-25","2026-01-27","16"
"MCP","CX-F-Z02.MYD.S24.L2.1943","L2 QC Electrical Install-MCP9-Basin HT Panel B","2026-01-25","2026-01-27","16"
"MCP","CX-F-Z02.MYD.S24.L2.1944","L2 QC Electrical Install-MCP9-HT TRACE CAB","2026-01-25","2026-01-27","16"
"DCH","CN-F-Z02.DCH.S18.TB.298","Complete Pathway to TAPBOX-75BOT in Zone 2 DCH","2026-01-25","2026-01-30","40"
"DCH","CN-F-Z02.DCH.S18.TB.302","Complete Pathway to TAPBOX-76TOP in Zone 2 DCH","2026-01-25","2026-01-30","40"
"MCP","CN-F-Z02.MYD.S29.MYD.005","Z2-Install & tape Heat Trace Wire for MCP-11","2026-01-25","2026-01-30","40"
"GPS","CN-F-Z01.EYD.S14.CW.3299","Pull,Term,Test & Torque Feeder from EY05-SWGR-GPS (Control) to EY05-GEN 2 (Control)","2026-01-25","2026-01-26","8"
"USS YARD","382834150","Set PDC-USS-07,USS 7-LV","2026-01-25","2026-01-26","8"
"DCH","CON-8615","DCH2-BMS/PMS+Sec+Device install (breakout & detail) HA 36","2026-01-26","2026-01-28","16"
"MYD","CX-10906","MYD1-MCP1 L4","2026-01-26","2026-02-05","64"
"MYD","CON-114425","MYD2-Fitout MCP-09","2026-01-26","2026-02-02","40"
"MYD","CON-114585","MYD2-Mobilize (Crane B) &Stage Cooling Tower/Set & Anchor Cooling Tower-CTR 11","2026-01-26","2026-02-03","48"
"MYD","CN-F-Z02.MYD.S24.USS-7.1859","Ground MY06-XFMR-USS-CUB-7 in Zone 2 MYD","2026-01-26","2026-01-27","8"
"MYD","CN-F-Z02.MYD.S24.USS-7.1860","Ground MY06-SWGR-USS-CUB-7 in Zone 2 MYD","2026-01-26","2026-01-27","8"
"MYD","CN-F-Z02.MYD.S24.USS-7.1868","Complete Pathway to MY06-XFMR-USS-CUB-7 in Zone 2 MYD","2026-01-26","2026-01-27","8"
"MYD","CN-F-Z02.MYD.S24.USS-7.1869","Complete Pathway to MY06-SWGR-USS-CUB-7 in Zone 2 MYD","2026-01-26","2026-01-27","8"
"GPS","CN-F-Z01.EYD.S14.CW.3300","Pull,Term,Test & Torque Feeder from EY05-SWGR-GPS (Control) to EY05-GEN 3 (Control)","2026-01-26","2026-01-27","8"
"MCP","934833339","SSC Steel unload-MCP CTR 11,BUILDOUT","2026-01-26","2026-01-27","8"
"MCP","934817950","CTS Piping,grading,handrail-MCP CTR 11,BUILDOUT","2026-01-26","2026-02-05","64"
"MCP","934810825","CTS Electrical Conduit-MCP CTR 11,BUILDOUT","2026-01-26","2026-01-27","8"
"USS YARD","382898591","Set LV-01-USS-07,USS 7-LV","2026-01-26","2026-01-27","8"
"MCP","813874547","CTS Stair install-MCP CTR 09,BUILDOUT","2026-01-26","2026-01-30","32"
"DCH","A1260","BMS-DCH2-Leak Detection-Pull Wire-South West","2026-01-26","2026-02-02","40"
"DCH","A1420","PMS-DCH2-Shiraz Bus Plugs-Pull Wire @ SPD9","2026-01-26","2026-02-02","40"
"EYD","CON-BB-5525","EYD2-S18 USS 480 Tap Box Terms & Torques Group 4","2026-01-26","2026-02-09","80"
"DCH","CON-8705-BB","EYD2-MV Cable Pull & Terms USS to DCH2","2026-01-27","2026-03-03","200"
"EYD","CX-10503","EYD1-Generator 01 Endurance Run","2026-01-27","2026-01-30","24"
"USS YARD","CN-F-Z02.MYD.S24.USS-7.1881","Pull,Term,Test & Torque Feeder from MY06-XFMR-USS-CUB-7 to MY06-SWGR-USS-CUB-7","2026-01-27","2026-01-30","24"
"MCP","CN-F-Z02.MYD.S24.MCP7.1895","Pull,Term,Test & Torque Feeder from MCP-07-BDC to MCP-07-Basin HT Panel B","2026-01-27","2026-01-30","24"
"GPS","CN-F-Z01.EYD.S14.CW.3301","Pull,Term,Test & Torque Feeder from EY05-SWGR-GPS (Control) to EY05-GEN 4 (Control)","2026-01-27","2026-01-28","8"
"USS YARD","810800583","Set XFMR-USS-07,USS 7-XMFR","2026-01-27","2026-01-28","8"
"MYD","817895814","CN-F-Z01.MYD.S21.PDC-1.1728-USS-09,USS 9-RMU","2026-01-27","2026-01-28","8"
"DCH","CON-8640","DCH2-BMS/PMS+Sec+Device install (breakout & detail) HA 37","2026-01-28","2026-01-30","16"
"GPS","CN-F-Z01.EYD.S14.CW.3302","Pull,Term,Test & Torque Feeder from EY05-SWGR-GPS (Control) to EY05-GEN 5 (Control)","2026-01-28","2026-01-29","8"
"MCP","780872077","610 Motor Conduit-MCP CTR 07,BUILDOUT","2026-01-28","2026-02-03","32"
"USS YARD","029882704","Set RMU-USS-07,USS 7-RMU","2026-01-28","2026-01-29","8"
"MCP","780891394","610 Motor Heater Conduit-MCP CTR 07,BUILDOUT","2026-01-28","2026-02-03","32"
"MCP","780815388","MCP Electrical Interconnects-MCP CTR 07,BUILDOUT","2026-01-28","2026-02-18","120"
"EYD","CX-10996","EYD2-Generator 01 Endurance Run","2026-01-29","2026-01-30","8"
"MYD","CON-114175","MYD2-Mobilize Crane C/Dance Floor-MCP-07","2026-01-29","2026-01-30","8"
"MYD","CN-F-Z02.MYD.S21.USS-7.1858","Ground MY06-SWGR-RMU-USS-CUB-7 in Zone 2 MYD","2026-01-29","2026-01-30","8"
"MYD","CN-F-Z02.MYD.S21.USS-7.1867","Complete Pathway to MY06-SWGR-RMU-USS-CUB-7 in Zone 2 MYD","2026-01-29","2026-01-30","8"
"GPS","CN-F-Z01.EYD.S14.CW.3303","Pull,Term,Test & Torque Feeder from EY05-SWGR-GPS (Control) to EY05-GEN 6 (Control)","2026-01-29","2026-01-30","8"
"USS YARD","382833128","Hard set rack & cable tray-USS-07,USS 7-LV","2026-01-29","2026-02-09","56"
"MCP","813889776","CT Stair Install-MCP CTR 09,BUILDOUT","2026-01-29","2026-02-04","32"
"MCP","813818120","Final Cooling Tower Connections-Condenser / Sweeper Piping Install-MCP CTR 09,BUILDOUT","2026-01-29","2026-02-02","16"
"USS YARD","653846414","Cable Tray Rack Loose Set-USS-09,USS 9-LV","2026-01-29","2026-01-30","8"
"USS YARD","810823074","Grounding 1858,1859,1860-USS-07,USS 7-XMFR","2026-01-29","2026-02-03","24"
"EYD","CON-BB-4845","EYD2-Perun to SSS-E MV Terms & Torques","2026-01-29","2026-02-04","32"
"EYD","CON-BB-4855","EYD2-Perun to SSS-F MV Terms & Torques","2026-01-29","2026-02-04","32"
"EYD","CON-81087","EYD2-Set Equipment USS-51-XFMR (Hitachi)","2026-01-31","2026-02-05","40"
"EYD","CON-8367","EYD2-Set Equipment USS-27-XFMR (Hitachi)","2026-01-31","2026-02-05","40"
"EYD","CON-8397","EYD2-Set Equipment USS-28-XFMR (Hitachi)","2026-01-31","2026-02-05","40"
"EYD","CON-8427","EYD2-Set Equipment USS-29-XFMR (Hitachi)","2026-01-31","2026-02-05","40"
"EYD","CON-8457","EYD2-Set Equipment USS-30-XFMR (Hitachi)","2026-01-31","2026-02-05","40"
"EYD","CON-8487","EYD2-Set Equipment USS-31-XFMR (Hitachi)","2026-01-31","2026-02-05","40"
"EYD","CON-8517","EYD2-Set Equipment USS-32-XFMR (Hitachi)","2026-01-31","2026-02-05","40"
"EYD","CON-8547","EYD2-Set Equipment USS-33-XFMR (Hitachi)","2026-01-31","2026-02-05","40"
"EYD","CON-8577","EYD2-Set Equipment USS-34-XFMR (Hitachi)","2026-01-31","2026-02-05","40"
"EYD","CON-8607","EYD2-Set Equipment USS-35-XFMR (Hitachi)","2026-01-31","2026-02-05","40"
"EYD","CON-8637","EYD2-Set Equipment USS-36-XFMR (Hitachi)","2026-01-31","2026-02-05","40"
"EYD","CON-8667","EYD2-Set Equipment USS-37-XFMR (Hitachi)","2026-01-31","2026-02-05","40"
"EYD","CON-8697","EYD2-Set Equipment USS-38-XFMR (Hitachi)","2026-01-31","2026-02-05","40"
"EYD","CON-8727","EYD2-Set Equipment USS-39-XFMR (Hitachi)","2026-01-31","2026-02-05","40"
"EYD","CON-8757","EYD2-Set Equipment USS-40-XFMR (Hitachi)","2026-01-31","2026-02-05","40"
"EYD","CON-8787","EYD2-Set Equipment USS-41-XFMR (Hitachi)","2026-01-31","2026-02-05","40"
"EYD","CON-8817","EYD2-Set Equipment USS-42-XFMR (Hitachi)","2026-01-31","2026-02-05","40"
"EYD","CON-8847","EYD2-Set Equipment USS-43-XFMR (Hitachi)","2026-01-31","2026-02-05","40"
"EYD","CON-8877","EYD2-Set Equipment USS-44-XFMR (Hitachi)","2026-01-31","2026-02-05","40"
"EYD","CON-8907","EYD2-Set Equipment USS-45-XFMR (Hitachi)","2026-01-31","2026-02-05","40"
"EYD","CON-8937","EYD2-Set Equipment USS-46-XFMR (Hitachi)","2026-01-31","2026-02-05","40"
"EYD","CON-8967","EYD2-Set Equipment USS-47-XFMR (Hitachi)","2026-01-31","2026-02-05","40"
"EYD","CON-8997","EYD2-Set Equipment USS-48-XFMR (Hitachi)","2026-01-31","2026-02-05","40"
"EYD","CON-81027","EYD2-Set Equipment USS-49-XFMR (Hitachi)","2026-01-31","2026-02-05","40"
"EYD","CON-81057","EYD2-Set Equipment USS-50-XFMR (Hitachi)","2026-01-31","2026-02-05","40"
"EYD","CON-81117","EYD2-Set Equipment USS-52-XFMR (Hitachi)","2026-01-31","2026-02-05","40"
"DCH","CON-8645","DCH2-BMS/PMS+Sec+Device install (breakout & detail) HA 38","2026-02-01","2026-02-03","16"
"MYD","CX-10959","MYD1-CTB L4","2026-02-01","2026-02-03","16"
"EYD","CX-10511","EYD1-Generator 01 L3","2026-02-01","2026-02-02","8"
"EYD","CX-10512","EYD1-Generator 02 Endurance Run","2026-02-01","2026-02-02","8"
"EYD","CX-10513","EYD1-Generator 03 Endurance Run","2026-02-01","2026-02-02","8"
"EYD","CX-10514","EYD1-Generator 04 Endurance Run","2026-02-01","2026-02-02","8"
"EYD","CX-11005","EYD2-Generator 02 Endurance Run","2026-02-01","2026-02-02","8"
"MYD","CON-114185","MYD2-Mobilize/Set & Anchor (Chiller)/(Heat Exchanger)/(Pump)/Install Chiller Skid Roof Bump/Set Exp.Tank-MCP-07","2026-02-01","2026-02-03","16"
"SSS","CX-F-Z01.EYD.S14.L2.638","L2 QC Electrical Install-EY05-SWGR-SSS-E","2026-02-01","2026-02-03","16"
"SSS","CX-F-Z01.EYD.S14.L2.640","L2 QC Electrical Install-EY05-SWGR-SSS-F","2026-02-01","2026-02-03","16"
"GPS","CX-F-Z02.EYD.S14.L2.1645","L2 QC Electrical Install-EY06-PNL-GPS-BDC","2026-02-01","2026-02-03","16"
"SSS","CN-F-Z02.MYD.S10.USS-7.1879","Pull & Test MV Feeder from EY06-SWGR-SSS-E to MY06-SWGR-RMU-USS-CUB-7","2026-02-01","2026-02-04","24"
"USS YARD","CN-F-Z02.MYD.S24.USS-7.1880","Pull & Test MV Feeder from MY06-SWGR-RMU-USS-CUB-7 to MY06-XFMR-USS-CUB-7","2026-02-01","2026-02-03","16"
"MCP","CN-F-Z02.MYD.S24.MCP7.1896","Pull,Term,Test & Torque Feeder from MCP-07-BDC to MCP-07-HT TRACE CAB","2026-02-01","2026-02-04","24"
"MCP","CX-F-Z02.MYD.S24.L2.1945","L2 QC Electrical Install-MCP11-Basin HT Panel A","2026-02-01","2026-02-03","16"
"MCP","CX-F-Z02.MYD.S24.L2.1946","L2 QC Electrical Install-MCP11-Basin HT Panel B","2026-02-01","2026-02-03","16"
"MCP","CX-F-Z02.MYD.S24.L2.1947","L2 QC Electrical Install-MCP11-HT TRACE CAB","2026-02-01","2026-02-03","16"
"GPS","CN-F-Z01.EYD.S14.CW.3304","Pull,Term,Test & Torque Feeder from EY05-SWGR-GPS (Control) to EY05-GEN 7 (Control)","2026-02-01","2026-02-02","8"
"GPS","CN-F-Z02.EYD.S14.CW.3315","Pull,Term,Test & Torque Feeder from EY06-SWGR-GPS (Control) to EY06-GEN 1 (Control)","2026-02-01","2026-02-02","8"
"USS YARD","653888430","Set PDC-USS-09,USS 9-LV","2026-02-01","2026-02-02","8"
"EYD","CX-10520","EYD1-Generator 02 L3","2026-02-02","2026-02-03","8"
"EYD","CX-10521","EYD1-Generator 05 Endurance Run","2026-02-02","2026-02-03","8"
"EYD","CX-11007","EYD2-Generator 03 Endurance Run","2026-02-02","2026-02-03","8"
"EYD","CX-11008","EYD2-Generator 04 Endurance Run","2026-02-02","2026-02-03","8"
"MYD","CON-114435","MYD2-Mobilize Crane C/Dance Floor-MCP-09","2026-02-02","2026-02-03","8"
"MYD","CN-F-Z02.MYD.S24.USS-9.1862","Ground MY06-XFMR-USS-CUB-9 in Zone 2 MYD","2026-02-02","2026-02-03","8"
"MYD","CN-F-Z02.MYD.S24.USS-9.1863","Ground MY06-SWGR-USS-CUB-9 in Zone 2 MYD","2026-02-02","2026-02-03","8"
"MYD","CN-F-Z02.MYD.S24.USS-9.1871","Complete Pathway to MY06-XFMR-USS-CUB-9 in Zone 2 MYD","2026-02-02","2026-02-03","8"
"MYD","CN-F-Z02.MYD.S24.USS-9.1872","Complete Pathway to MY06-SWGR-USS-CUB-9 in Zone 2 MYD","2026-02-02","2026-02-03","8"
"GPS","CN-F-Z01.EYD.S14.CW.3305","Pull,Term,Test & Torque Feeder from EY05-SWGR-GPS (Control) to EY05-GEN 8 (Control)","2026-02-02","2026-02-03","8"
"GPS","CN-F-Z02.EYD.S14.CW.3316","Pull,Term,Test & Torque Feeder from EY06-SWGR-GPS (Control) to EY06-GEN 2 (Control)","2026-02-02","2026-02-03","8"
"MYD","CN-F-Z02.MYD.USS.07","MYD Zone 2 USS 07 Install Trestle Steel","2026-02-02","2026-02-09","40"
"USS YARD","653811507","Set LV-01-USS-09,USS 9-LV","2026-02-02","2026-02-03","8"
"DCH","A1210","BMS-DCH2-Leak Detection-Pull Wire-North Central","2026-02-02","2026-02-09","40"
"DCH","A1450","PMS-DCH2-Shiraz Bus Plugs-Pull Wire @ SPD12","2026-02-02","2026-02-09","40"
"EYD","CON-8685-BB","EYD2-MV Cable Pull & Terms SSS2 to USS (27-52)","2026-02-03","2026-03-03","160"
"EYD","CX-10530","EYD1-Generator 03 L3","2026-02-03","2026-02-04","8"
"EYD","CX-10531","EYD1-Generator 04 L3","2026-02-03","2026-02-04","8"
"EYD","CX-10522","EYD1-Generator 06 Endurance Run","2026-02-03","2026-02-04","8"
"EYD","CX-11009","EYD2-Generator 05 Endurance Run","2026-02-03","2026-02-04","8"
"MYD","CON-114195","MYD2-Set Upper Cooling Tower Stairs (CTS)-MCP-07","2026-02-03","2026-02-06","24"
"MYD","CON-114445","MYD2-Mobilize/Set & Anchor (Chiller)/(Heat Exchanger)/(Pump)/Install Chiller Skid Roof Bump/Set Exp.Tank-MCP-09","2026-02-03","2026-02-05","16"
"MYD","CON-114595","MYD2-Fitout MCP-11","2026-02-03","2026-02-10","40"
"USS YARD","CN-F-Z02.MYD.S24.USS-9.1886","Pull,Term,Test & Torque Feeder from MY06-XFMR-USS-CUB-9 to MY06-SWGR-USS-CUB-9","2026-02-03","2026-02-05","16"
"USS YARD","CN-F-Z02.MYD.S24.USS-7.1908","Term & Torque MV Feeder from MY06-SWGR-RMU-USS-CUB-7 to MY06-XFMR-USS-CUB-7 at MY06-XFMR-USS-CUB-7","2026-02-03","2026-02-06","24"
"USS YARD","CN-F-Z02.MYD.S24.USS-7.1914","Term & Torque MV Feeder from MY06-SWGR-RMU-USS-CUB-7 to MY06-XFMR-USS-CUB-7 at MY06-SWGR-RMU-USS-CUB-7","2026-02-03","2026-02-06","24"
"GPS","CN-F-Z01.EYD.S14.CW.3306","Pull,Term,Test & Torque Feeder from EY05-SWGR-GPS (Control) to EY05-GEN 9 (Control)","2026-02-03","2026-02-04","8"
"GPS","CN-F-Z02.EYD.S14.CW.3317","Pull,Term,Test & Torque Feeder from EY06-SWGR-GPS (Control) to EY06-GEN 3 (Control)","2026-02-03","2026-02-04","8"
"MCP","780846216","Basin Heater Conduits-MCP CTR 07,BUILDOUT","2026-02-03","2026-02-09","32"
"USS YARD","989852267","Set XFMR-USS-09,USS 9-XMFR","2026-02-03","2026-02-04","8"
"MCP","780852334","Install EFL / F-MCP CTR 07,BUILDOUT","2026-02-03","2026-02-09","32"
"MYD","153824223","CN-F-Z01.MYD.S21.PDC-1.1728-USS-011,USS-11 RMU","2026-02-03","2026-02-04","8"
"EYD","CX-10541","EYD1-Generator 05 L3","2026-02-04","2026-02-05","8"
"EYD","CX-10542","EYD1-Generator 06 L3","2026-02-04","2026-02-05","8"
"EYD","CX-10523","EYD1-Generator 07 Endurance Run","2026-02-04","2026-02-05","8"
"EYD","CX-11004","EYD2-Generator 01 L3","2026-02-04","2026-02-10","32"
"EYD","CX-11010","EYD2-Generator 06 Endurance Run","2026-02-04","2026-02-05","8"
"SSS","CN-F-Z02.MYD.S10.SSS-E.1907","Term & Torque MV Feeder from EY06-SWGR-SSS-E to MY06-SWGR-RMU-USS-CUB-7 at MY06-SWGR-RMU-USS-CUB-7","2026-02-04","2026-02-09","24"
"SSS","CN-F-Z02.MYD.S10.SSS-E.1913","Term & Torque MV Feeder from EY06-SWGR-SSS-E to MY06-SWGR-RMU-USS-CUB-7 at EY06-SWGR-SSS-E","2026-02-04","2026-02-09","24"
"MCP","CN-F-Z02.MYD.S29.MYD.003","Z2-Install & tape Heat Trace Wire for MCP-07","2026-02-04","2026-02-11","40"
"GPS","CN-F-Z01.EYD.S14.CW.3307","Pull,Term,Test & Torque Feeder from EY05-SWGR-GPS (Control) to EY05-GEN 10 (Control)","2026-02-04","2026-02-05","8"
"GPS","CN-F-Z02.EYD.S14.CW.3318","Pull,Term,Test & Torque Feeder from EY06-SWGR-GPS (Control) to EY06-GEN 4 (Control)","2026-02-04","2026-02-05","8"
"MCP","813844192","MCP Electrical Interconnects-MCP CTR 09,BUILDOUT","2026-02-04","2026-02-25","120"
"MCP","813809619","610 Motor Heater Conduit-MCP CTR 09,BUILDOUT","2026-02-04","2026-02-10","32"
"USS YARD","817894837","Set RMU-USS-09,USS 9-RMU","2026-02-04","2026-02-05","8"
"MCP","813839781","610 Motor Conduit-MCP CTR 09,BUILDOUT","2026-02-04","2026-02-10","32"
"EYD","CON-BB-4865","EYD2-SSS-E&F L2 CX","2026-02-04","2026-02-11","40"
"EYD","CX-10559","EYD1-Generator 07 L3","2026-02-05","2026-02-06","8"
"EYD","CX-10532","EYD1-Generator 08 Endurance Run","2026-02-05","2026-02-06","8"
"EYD","CX-11012","EYD2-Generator 07 Endurance Run","2026-02-05","2026-02-06","8"
"MYD","CX-10970","MYD1-MCP2-BDC & Rest-L3","2026-02-05","2026-02-25","112"
"MYD","CX-10971","MYD1-MCP6-BDC & Rest-L3","2026-02-05","2026-02-24","104"
"MYD","CON-114455","MYD2-Set Upper Cooling Tower Stairs (CTS)-MCP-09","2026-02-05","2026-02-10","24"
"EYD","CN-F-Z02.EYD.S14.USS-1.878","Ground EY06-XFMR-USS-1 in Zone 2 EYD","2026-02-05","2026-02-09","16"
"EYD","CN-F-Z02.EYD.S14.USS-2.881","Ground EY06-XFMR-USS-2 in Zone 2 EYD","2026-02-05","2026-02-09","16"
"EYD","CN-F-Z02.EYD.S14.USS-3.884","Ground EY06-XFMR-USS-3 in Zone 2 EYD","2026-02-05","2026-02-09","16"
"EYD","CN-F-Z02.EYD.S14.USS-4.887","Ground EY06-XFMR-USS-4 in Zone 2 EYD","2026-02-05","2026-02-09","16"
"EYD","CN-F-Z02.EYD.S14.USS-5.890","Ground EY06-XFMR-USS-5 in Zone 2 EYD","2026-02-05","2026-02-09","16"
"EYD","CN-F-Z02.EYD.S14.USS-6.893","Ground EY06-XFMR-USS-6 in Zone 2 EYD","2026-02-05","2026-02-09","16"
"EYD","CN-F-Z02.EYD.S14.USS-7.896","Ground EY06-XFMR-USS-7 in Zone 2 EYD","2026-02-05","2026-02-09","16"
"EYD","CN-F-Z02.EYD.S14.USS-8.899","Ground EY06-XFMR-USS-8 in Zone 2 EYD","2026-02-05","2026-02-09","16"
"EYD","CN-F-Z02.EYD.S14.USS-9.902","Ground EY06-XFMR-USS-9 in Zone 2 EYD","2026-02-05","2026-02-09","16"
"EYD","CN-F-Z02.EYD.S14.USS-10.905","Ground EY06-XFMR-USS-10 in Zone 2 EYD","2026-02-05","2026-02-09","16"
"EYD","CN-F-Z02.EYD.S14.USS-11.908","Ground EY06-XFMR-USS-11 in Zone 2 EYD","2026-02-05","2026-02-09","16"
"EYD","CN-F-Z02.EYD.S14.USS-12.911","Ground EY06-XFMR-USS-12 in Zone 2 EYD","2026-02-05","2026-02-09","16"
"EYD","CN-F-Z02.EYD.S14.USS-13.914","Ground EY06-XFMR-USS-13 in Zone 2 EYD","2026-02-05","2026-02-09","16"
"EYD","CN-F-Z02.EYD.S14.USS-14.917","Ground EY06-XFMR-USS-14 in Zone 2 EYD","2026-02-05","2026-02-09","16"
"EYD","CN-F-Z02.EYD.S14.USS-15.920","Ground EY06-XFMR-USS-15 in Zone 2 EYD","2026-02-05","2026-02-09","16"
"EYD","CN-F-Z02.EYD.S14.USS-16.923","Ground EY06-XFMR-USS-16 in Zone 2 EYD","2026-02-05","2026-02-09","16"
"EYD","CN-F-Z02.EYD.S14.USS-17.926","Ground EY06-XFMR-USS-17 in Zone 2 EYD","2026-02-05","2026-02-09","16"
"EYD","CN-F-Z02.EYD.S14.USS-18.929","Ground EY06-XFMR-USS-18 in Zone 2 EYD","2026-02-05","2026-02-09","16"
"EYD","CN-F-Z02.EYD.S14.USS-19.932","Ground EY06-XFMR-USS-19 in Zone 2 EYD","2026-02-05","2026-02-09","16"
"EYD","CN-F-Z02.EYD.S14.USS-20.935","Ground EY06-XFMR-USS-20 in Zone 2 EYD","2026-02-05","2026-02-09","16"
"EYD","CN-F-Z02.EYD.S14.USS-21.938","Ground EY06-XFMR-USS-21 in Zone 2 EYD","2026-02-05","2026-02-09","16"
"EYD","CN-F-Z02.EYD.S14.USS-22.941","Ground EY06-XFMR-USS-22 in Zone 2 EYD","2026-02-05","2026-02-09","16"
"EYD","CN-F-Z02.EYD.S14.USS-23.944","Ground EY06-XFMR-USS-23 in Zone 2 EYD","2026-02-05","2026-02-09","16"
"EYD","CN-F-Z02.EYD.S14.USS-24.947","Ground EY06-XFMR-USS-24 in Zone 2 EYD","2026-02-05","2026-02-09","16"
"EYD","CN-F-Z02.EYD.S14.USS-25.950","Ground EY06-XFMR-USS-25 in Zone 2 EYD","2026-02-05","2026-02-09","16"
"EYD","CN-F-Z02.EYD.S14.USS-26.953","Ground EY06-XFMR-USS-26 in Zone 2 EYD","2026-02-05","2026-02-09","16"
"EYD","CN-F-Z02.EYD.S14.USS-1.963","Complete Pathway to EY06-XFMR-USS-27 in Zone 2 EYD","2026-02-05","2026-02-06","8"
"EYD","CN-F-Z02.EYD.S14.USS-2.966","Complete Pathway to EY06-XFMR-USS-28 in Zone 2 EYD","2026-02-05","2026-02-06","8"
"EYD","CN-F-Z02.EYD.S14.USS-3.969","Complete Pathway to EY06-XFMR-USS-29 in Zone 2 EYD","2026-02-05","2026-02-06","8"
"EYD","CN-F-Z02.EYD.S14.USS-4.972","Complete Pathway to EY06-XFMR-USS-30 in Zone 2 EYD","2026-02-05","2026-02-06","8"
"EYD","CN-F-Z02.EYD.S14.USS-5.975","Complete Pathway to EY06-XFMR-USS-31 in Zone 2 EYD","2026-02-05","2026-02-06","8"
"EYD","CN-F-Z02.EYD.S14.USS-6.978","Complete Pathway to EY06-XFMR-USS-32 in Zone 2 EYD","2026-02-05","2026-02-06","8"
"EYD","CN-F-Z02.EYD.S14.USS-7.981","Complete Pathway to EY06-XFMR-USS-33 in Zone 2 EYD","2026-02-05","2026-02-06","8"
"EYD","CN-F-Z02.EYD.S14.USS-8.984","Complete Pathway to EY06-XFMR-USS-34 in Zone 2 EYD","2026-02-05","2026-02-06","8"
"EYD","CN-F-Z02.EYD.S14.USS-9.987","Complete Pathway to EY06-XFMR-USS-35 in Zone 2 EYD","2026-02-05","2026-02-06","8"
"EYD","CN-F-Z02.EYD.S14.USS-10.990","Complete Pathway to EY06-XFMR-USS-36 in Zone 2 EYD","2026-02-05","2026-02-06","8"
"EYD","CN-F-Z02.EYD.S14.USS-11.993","Complete Pathway to EY06-XFMR-USS-37 in Zone 2 EYD","2026-02-05","2026-02-06","8"
"EYD","CN-F-Z02.EYD.S14.USS-12.996","Complete Pathway to EY06-XFMR-USS-38 in Zone 2 EYD","2026-02-05","2026-02-06","8"
"EYD","CN-F-Z02.EYD.S14.USS-13.999","Complete Pathway to EY06-XFMR-USS-39 in Zone 2 EYD","2026-02-05","2026-02-06","8"
"EYD","CN-F-Z02.EYD.S14.USS-14.1002","Complete Pathway to EY06-XFMR-USS-40 in Zone 2 EYD","2026-02-05","2026-02-06","8"
"EYD","CN-F-Z02.EYD.S14.USS-15.1005","Complete Pathway to EY06-XFMR-USS-41 in Zone 2 EYD","2026-02-05","2026-02-06","8"
"EYD","CN-F-Z02.EYD.S14.USS-16.1008","Complete Pathway to EY06-XFMR-USS-42 in Zone 2 EYD","2026-02-05","2026-02-06","8"
"EYD","CN-F-Z02.EYD.S14.USS-17.1011","Complete Pathway to EY06-XFMR-USS-43 in Zone 2 EYD","2026-02-05","2026-02-06","8"
"EYD","CN-F-Z02.EYD.S14.USS-18.1014","Complete Pathway to EY06-XFMR-USS-44 in Zone 2 EYD","2026-02-05","2026-02-06","8"
"EYD","CN-F-Z02.EYD.S14.USS-19.1017","Complete Pathway to EY06-XFMR-USS-45 in Zone 2 EYD","2026-02-05","2026-02-06","8"
"EYD","CN-F-Z02.EYD.S14.USS-20.1020","Complete Pathway to EY06-XFMR-USS-46 in Zone 2 EYD","2026-02-05","2026-02-06","8"
"EYD","CN-F-Z02.EYD.S14.USS-21.1023","Complete Pathway to EY06-XFMR-USS-47 in Zone 2 EYD","2026-02-05","2026-02-06","8"
"EYD","CN-F-Z02.EYD.S14.USS-22.1026","Complete Pathway to EY06-XFMR-USS-48 in Zone 2 EYD","2026-02-05","2026-02-06","8"
"EYD","CN-F-Z02.EYD.S14.USS-23.1029","Complete Pathway to EY06-XFMR-USS-49 in Zone 2 EYD","2026-02-05","2026-02-06","8"
"EYD","CN-F-Z02.EYD.S14.USS-24.1032","Complete Pathway to EY06-XFMR-USS-50 in Zone 2 EYD","2026-02-05","2026-02-06","8"
"EYD","CN-F-Z02.EYD.S14.USS-25.1035","Complete Pathway to EY06-XFMR-USS-51 in Zone 2 EYD","2026-02-05","2026-02-06","8"
"EYD","CN-F-Z02.EYD.S14.USS-26.1038","Complete Pathway to EY06-XFMR-USS-52 in Zone 2 EYD","2026-02-05","2026-02-06","8"
"MYD","CN-F-Z02.MYD.S21.USS-9.1861","Ground MY06-SWGR-RMU-USS-CUB-9 in Zone 2 MYD","2026-02-05","2026-02-06","8"
"MYD","CN-F-Z02.MYD.S21.USS-9.1870","Complete Pathway to MY06-SWGR-RMU-USS-CUB-9 in Zone 2 MYD","2026-02-05","2026-02-06","8"
"GPS","CN-F-Z01.EYD.S14.CW.3308","Pull,Term,Test & Torque Feeder from EY05-SWGR-GPS (Control) to EY05-GEN 11 (Control)","2026-02-05","2026-02-06","8"
"GPS","CN-F-Z02.EYD.S14.CW.3319","Pull,Term,Test & Torque Feeder from EY06-SWGR-GPS (Control) to EY06-GEN 5 (Control)","2026-02-05","2026-02-06","8"
"MCP","934896016","CT Drains & Blowdowns-MCP CTR 11,BUILDOUT","2026-02-05","2026-02-17","64"
"MCP","934828747","CTS Electrical Conduit-MCP CTR 11,BUILDOUT","2026-02-05","2026-02-06","8"
"MCP","934803793","CT Unload-MCP CTR 11,BUILDOUT","2026-02-05","2026-02-06","8"
"USS YARD","653896289","Hard set rack & cable tray-USS-09,USS 9-LV","2026-02-05","2026-02-16","56"
"USS YARD","989879589","Grounding 1861,1862,1863-USS-09,USS 9-XMFR","2026-02-05","2026-02-10","24"
"EYD","CX-10560","EYD1-Generator 08 L3","2026-02-08","2026-02-09","8"
"EYD","CX-10533","EYD1-Generator 09 Endurance Run","2026-02-08","2026-02-09","8"
"EYD","CX-11016","EYD2-Generator 08 Endurance Run","2026-02-08","2026-02-09","8"
"USS YARD","CN-F-Z02.EYD.S14.USS-1.1083","Pull & Test MV Feeder from EY06-SWGR-RMU-USS-1 to EY06-XFMR-USS-1","2026-02-08","2026-02-09","8"
"USS YARD","CN-F-Z02.EYD.S14.USS-1.1084","Pull,Term,Test & Torque Feeder from EY06-XFMR-USS-1 to EY06-SWGR-USS-1","2026-02-08","2026-02-09","8"
"USS YARD","CN-F-Z02.EYD.S14.USS-2.1086","Pull & Test MV Feeder from EY06-SWGR-RMU-USS-2 to EY06-XFMR-USS-2","2026-02-08","2026-02-09","8"
"USS YARD","CN-F-Z02.EYD.S14.USS-3.1089","Pull & Test MV Feeder from EY06-SWGR-RMU-USS-3 to EY06-XFMR-USS-3","2026-02-08","2026-02-09","8"
"USS YARD","CN-F-Z02.EYD.S14.USS-4.1092","Pull & Test MV Feeder from EY06-SWGR-RMU-USS-4 to EY06-XFMR-USS-4","2026-02-08","2026-02-09","8"
"USS YARD","CN-F-Z02.EYD.S14.USS-5.1095","Pull & Test MV Feeder from EY06-SWGR-RMU-USS-5 to EY06-XFMR-USS-5","2026-02-08","2026-02-09","8"
"USS YARD","CN-F-Z02.EYD.S14.USS-6.1098","Pull & Test MV Feeder from EY06-SWGR-RMU-USS-6 to EY06-XFMR-USS-6","2026-02-08","2026-02-09","8"
"USS YARD","CN-F-Z02.EYD.S14.USS-7.1101","Pull & Test MV Feeder from EY06-SWGR-RMU-USS-7 to EY06-XFMR-USS-7","2026-02-08","2026-02-09","8"
"USS YARD","CN-F-Z02.EYD.S14.USS-8.1104","Pull & Test MV Feeder from EY06-SWGR-RMU-USS-8 to EY06-XFMR-USS-8","2026-02-08","2026-02-09","8"
"USS YARD","CN-F-Z02.EYD.S14.USS-9.1107","Pull & Test MV Feeder from EY06-SWGR-RMU-USS-9 to EY06-XFMR-USS-9","2026-02-08","2026-02-09","8"
"USS YARD","CN-F-Z02.EYD.S14.USS-10.1110","Pull & Test MV Feeder from EY06-SWGR-RMU-USS-10 to EY06-XFMR-USS-10","2026-02-08","2026-02-09","8"
"USS YARD","CN-F-Z02.EYD.S14.USS-11.1113","Pull & Test MV Feeder from EY06-SWGR-RMU-USS-11 to EY06-XFMR-USS-11","2026-02-08","2026-02-09","8"
"USS YARD","CN-F-Z02.EYD.S14.USS-12.1116","Pull & Test MV Feeder from EY06-SWGR-RMU-USS-12 to EY06-XFMR-USS-12","2026-02-08","2026-02-09","8"
"USS YARD","CN-F-Z02.EYD.S14.USS-13.1119","Pull & Test MV Feeder from EY06-SWGR-RMU-USS-13 to EY06-XFMR-USS-13","2026-02-08","2026-02-09","8"
"USS YARD","CN-F-Z02.EYD.S14.USS-14.1122","Pull & Test MV Feeder from EY06-SWGR-RMU-USS-14 to EY06-XFMR-USS-14","2026-02-08","2026-02-09","8"
"USS YARD","CN-F-Z02.EYD.S14.USS-15.1125","Pull & Test MV Feeder from EY06-SWGR-RMU-USS-15 to EY06-XFMR-USS-15","2026-02-08","2026-02-09","8"
"USS YARD","CN-F-Z02.EYD.S14.USS-16.1128","Pull & Test MV Feeder from EY06-SWGR-RMU-USS-16 to EY06-XFMR-USS-16","2026-02-08","2026-02-09","8"
"USS YARD","CN-F-Z02.EYD.S14.USS-17.1131","Pull & Test MV Feeder from EY06-SWGR-RMU-USS-17 to EY06-XFMR-USS-17","2026-02-08","2026-02-09","8"
"USS YARD","CN-F-Z02.EYD.S14.USS-18.1134","Pull & Test MV Feeder from EY06-SWGR-RMU-USS-18 to EY06-XFMR-USS-18","2026-02-08","2026-02-09","8"
"USS YARD","CN-F-Z02.EYD.S14.USS-19.1137","Pull & Test MV Feeder from EY06-SWGR-RMU-USS-19 to EY06-XFMR-USS-19","2026-02-08","2026-02-09","8"
"USS YARD","CN-F-Z02.EYD.S14.USS-20.1140","Pull & Test MV Feeder from EY06-SWGR-RMU-USS-20 to EY06-XFMR-USS-20","2026-02-08","2026-02-09","8"
"USS YARD","CN-F-Z02.EYD.S14.USS-21.1143","Pull & Test MV Feeder from EY06-SWGR-RMU-USS-21 to EY06-XFMR-USS-21","2026-02-08","2026-02-09","8"
"USS YARD","CN-F-Z02.EYD.S14.USS-22.1146","Pull & Test MV Feeder from EY06-SWGR-RMU-USS-22 to EY06-XFMR-USS-22","2026-02-08","2026-02-09","8"
"USS YARD","CN-F-Z02.EYD.S14.USS-23.1149","Pull & Test MV Feeder from EY06-SWGR-RMU-USS-23 to EY06-XFMR-USS-23","2026-02-08","2026-02-09","8"
"USS YARD","CN-F-Z02.EYD.S14.USS-24.1152","Pull & Test MV Feeder from EY06-SWGR-RMU-USS-24 to EY06-XFMR-USS-24","2026-02-08","2026-02-09","8"
"USS YARD","CN-F-Z02.EYD.S14.USS-25.1155","Pull & Test MV Feeder from EY06-SWGR-RMU-USS-25 to EY06-XFMR-USS-25","2026-02-08","2026-02-09","8"
"USS YARD","CN-F-Z02.EYD.S14.USS-26.1158","Pull & Test MV Feeder from EY06-SWGR-RMU-USS-26 to EY06-XFMR-USS-26","2026-02-08","2026-02-09","8"
"USS YARD","CN-F-Z02.EYD.S14.USS-11.1299","Term & Torque MV Feeder from EY06-SWGR-RMU-USS-11 to EY06-XFMR-USS-11 at EY06-XFMR-USS-11","2026-02-08","2026-02-09","8"
"USS YARD","CN-F-Z02.EYD.S14.USS-12.1301","Term & Torque MV Feeder from EY06-SWGR-RMU-USS-12 to EY06-XFMR-USS-12 at EY06-XFMR-USS-12","2026-02-08","2026-02-09","8"
"USS YARD","CN-F-Z02.EYD.S14.USS-13.1303","Term & Torque MV Feeder from EY06-SWGR-RMU-USS-13 to EY06-XFMR-USS-13 at EY06-XFMR-USS-13","2026-02-08","2026-02-09","8"
"USS YARD","CN-F-Z02.EYD.S14.USS-14.1305","Term & Torque MV Feeder from EY06-SWGR-RMU-USS-14 to EY06-XFMR-USS-14 at EY06-XFMR-USS-14","2026-02-08","2026-02-09","8"
"USS YARD","CN-F-Z02.EYD.S14.USS-15.1307","Term & Torque MV Feeder from EY06-SWGR-RMU-USS-15 to EY06-XFMR-USS-15 at EY06-XFMR-USS-15","2026-02-08","2026-02-09","8"
"USS YARD","CN-F-Z02.EYD.S14.USS-16.1309","Term & Torque MV Feeder from EY06-SWGR-RMU-USS-16 to EY06-XFMR-USS-16 at EY06-XFMR-USS-16","2026-02-08","2026-02-09","8"
"USS YARD","CN-F-Z02.EYD.S14.USS-17.1311","Term & Torque MV Feeder from EY06-SWGR-RMU-USS-17 to EY06-XFMR-USS-17 at EY06-XFMR-USS-17","2026-02-08","2026-02-09","8"
"USS YARD","CN-F-Z02.EYD.S14.USS-18.1313","Term & Torque MV Feeder from EY06-SWGR-RMU-USS-18 to EY06-XFMR-USS-18 at EY06-XFMR-USS-18","2026-02-08","2026-02-09","8"
"USS YARD","CN-F-Z02.EYD.S14.USS-19.1315","Term & Torque MV Feeder from EY06-SWGR-RMU-USS-19 to EY06-XFMR-USS-19 at EY06-XFMR-USS-19","2026-02-08","2026-02-09","8"
"USS YARD","CN-F-Z02.EYD.S14.USS-20.1317","Term & Torque MV Feeder from EY06-SWGR-RMU-USS-20 to EY06-XFMR-USS-20 at EY06-XFMR-USS-20","2026-02-08","2026-02-09","8"
"USS YARD","CN-F-Z02.EYD.S14.USS-21.1319","Term & Torque MV Feeder from EY06-SWGR-RMU-USS-21 to EY06-XFMR-USS-21 at EY06-XFMR-USS-21","2026-02-08","2026-02-09","8"
"USS YARD","CN-F-Z02.EYD.S14.USS-22.1321","Term & Torque MV Feeder from EY06-SWGR-RMU-USS-22 to EY06-XFMR-USS-22 at EY06-XFMR-USS-22","2026-02-08","2026-02-09","8"
"USS YARD","CN-F-Z02.EYD.S14.USS-23.1323","Term & Torque MV Feeder from EY06-SWGR-RMU-USS-23 to EY06-XFMR-USS-23 at EY06-XFMR-USS-23","2026-02-08","2026-02-09","8"
"USS YARD","CN-F-Z02.EYD.S14.USS-24.1325","Term & Torque MV Feeder from EY06-SWGR-RMU-USS-24 to EY06-XFMR-USS-24 at EY06-XFMR-USS-24","2026-02-08","2026-02-09","8"
"USS YARD","CN-F-Z02.EYD.S14.USS-25.1327","Term & Torque MV Feeder from EY06-SWGR-RMU-USS-25 to EY06-XFMR-USS-25 at EY06-XFMR-USS-25","2026-02-08","2026-02-09","8"
"USS YARD","CN-F-Z02.EYD.S14.USS-26.1329","Term & Torque MV Feeder from EY06-SWGR-RMU-USS-26 to EY06-XFMR-USS-26 at EY06-XFMR-USS-26","2026-02-08","2026-02-09","8"
"USS YARD","CN-F-Z02.EYD.S14.USS-11.1374","Term & Torque MV Feeder from EY06-SWGR-RMU-USS-11 to EY06-XFMR-USS-11 at EY06-SWGR-RMU-USS-11","2026-02-08","2026-02-09","8"
"USS YARD","CN-F-Z02.EYD.S14.USS-12.1376","Term & Torque MV Feeder from EY06-SWGR-RMU-USS-12 to EY06-XFMR-USS-12 at EY06-SWGR-RMU-USS-12","2026-02-08","2026-02-09","8"
"USS YARD","CN-F-Z02.EYD.S14.USS-13.1378","Term & Torque MV Feeder from EY06-SWGR-RMU-USS-13 to EY06-XFMR-USS-13 at EY06-SWGR-RMU-USS-13","2026-02-08","2026-02-09","8"
"USS YARD","CN-F-Z02.EYD.S14.USS-14.1380","Term & Torque MV Feeder from EY06-SWGR-RMU-USS-14 to EY06-XFMR-USS-14 at EY06-SWGR-RMU-USS-14","2026-02-08","2026-02-09","8"
"USS YARD","CN-F-Z02.EYD.S14.USS-15.1382","Term & Torque MV Feeder from EY06-SWGR-RMU-USS-15 to EY06-XFMR-USS-15 at EY06-SWGR-RMU-USS-15","2026-02-08","2026-02-09","8"
"USS YARD","CN-F-Z02.EYD.S14.USS-16.1384","Term & Torque MV Feeder from EY06-SWGR-RMU-USS-16 to EY06-XFMR-USS-16 at EY06-SWGR-RMU-USS-16","2026-02-08","2026-02-09","8"
"USS YARD","CN-F-Z02.EYD.S14.USS-17.1386","Term & Torque MV Feeder from EY06-SWGR-RMU-USS-17 to EY06-XFMR-USS-17 at EY06-SWGR-RMU-USS-17","2026-02-08","2026-02-09","8"
"USS YARD","CN-F-Z02.EYD.S14.USS-18.1388","Term & Torque MV Feeder from EY06-SWGR-RMU-USS-18 to EY06-XFMR-USS-18 at EY06-SWGR-RMU-USS-18","2026-02-08","2026-02-09","8"
"USS YARD","CN-F-Z02.EYD.S14.USS-19.1390","Term & Torque MV Feeder from EY06-SWGR-RMU-USS-19 to EY06-XFMR-USS-19 at EY06-SWGR-RMU-USS-19","2026-02-08","2026-02-09","8"
"USS YARD","CN-F-Z02.EYD.S14.USS-20.1392","Term & Torque MV Feeder from EY06-SWGR-RMU-USS-20 to EY06-XFMR-USS-20 at EY06-SWGR-RMU-USS-20","2026-02-08","2026-02-09","8"
"USS YARD","CN-F-Z02.EYD.S14.USS-21.1394","Term & Torque MV Feeder from EY06-SWGR-RMU-USS-21 to EY06-XFMR-USS-21 at EY06-SWGR-RMU-USS-21","2026-02-08","2026-02-09","8"
"USS YARD","CN-F-Z02.EYD.S14.USS-22.1396","Term & Torque MV Feeder from EY06-SWGR-RMU-USS-22 to EY06-XFMR-USS-22 at EY06-SWGR-RMU-USS-22","2026-02-08","2026-02-09","8"
"USS YARD","CN-F-Z02.EYD.S14.USS-23.1398","Term & Torque MV Feeder from EY06-SWGR-RMU-USS-23 to EY06-XFMR-USS-23 at EY06-SWGR-RMU-USS-23","2026-02-08","2026-02-09","8"
"USS YARD","CN-F-Z02.EYD.S14.USS-24.1400","Term & Torque MV Feeder from EY06-SWGR-RMU-USS-24 to EY06-XFMR-USS-24 at EY06-SWGR-RMU-USS-24","2026-02-08","2026-02-09","8"
"USS YARD","CN-F-Z02.EYD.S14.USS-25.1402","Term & Torque MV Feeder from EY06-SWGR-RMU-USS-25 to EY06-XFMR-USS-25 at EY06-SWGR-RMU-USS-25","2026-02-08","2026-02-09","8"
"USS YARD","CN-F-Z02.EYD.S14.USS-26.1404","Term & Torque MV Feeder from EY06-SWGR-RMU-USS-26 to EY06-XFMR-USS-26 at EY06-SWGR-RMU-USS-26","2026-02-08","2026-02-09","8"
"USS YARD","CN-F-Z02.MYD.S24.USS-7.1885","Pull & Test MV Feeder from MY06-SWGR-RMU-USS-CUB-9 to MY06-XFMR-USS-CUB-9","2026-02-08","2026-02-10","16"
"USS YARD","CX-F-Z02.MYD.S24.L2.1925","L2 QC Electrical Install-MY06-XFMR-USS-CUB-7","2026-02-08","2026-02-10","16"
"GPS","CN-F-Z01.EYD.S14.CW.3309","Pull,Term,Test & Torque Feeder from EY05-SWGR-GPS (Control) to EY05-GEN 12 (Control)","2026-02-08","2026-02-09","8"
"GPS","CN-F-Z02.EYD.S14.CW.3320","Pull,Term,Test & Torque Feeder from EY06-SWGR-GPS (Control) to EY06-GEN 6 (Control)","2026-02-08","2026-02-09","8"
"MCP","934808408","CT Mount Panel Skid-MCP CTR 11,BUILDOUT","2026-02-08","2026-02-10","16"
"MCP","934855454","CT Build an Install-MCP CTR 11,BUILDOUT","2026-02-08","2026-02-13","40"
"EYD","CX-10574","EYD1-Generator 09 L3","2026-02-09","2026-02-10","8"
"EYD","CX-10534","EYD1-Generator 10 Endurance Run","2026-02-09","2026-02-10","8"
"EYD","CX-11020","EYD2-Generator 09 Endurance Run","2026-02-09","2026-02-10","8"
"USS YARD","CN-F-Z02.EYD.S14.USS-2.1087","Pull,Term,Test & Torque Feeder from EY06-XFMR-USS-2 to EY06-SWGR-USS-2","2026-02-09","2026-02-10","8"
"USS YARD","CN-F-Z02.EYD.S14.USS-1.1279","Term & Torque MV Feeder from EY06-SWGR-RMU-USS-1 to EY06-XFMR-USS-1 at EY06-XFMR-USS-1","2026-02-09","2026-02-10","8"
"USS YARD","CN-F-Z02.EYD.S14.USS-2.1281","Term & Torque MV Feeder from EY06-SWGR-RMU-USS-2 to EY06-XFMR-USS-2 at EY06-XFMR-USS-2","2026-02-09","2026-02-10","8"
"USS YARD","CN-F-Z02.EYD.S14.USS-3.1283","Term & Torque MV Feeder from EY06-SWGR-RMU-USS-3 to EY06-XFMR-USS-3 at EY06-XFMR-USS-3","2026-02-09","2026-02-10","8"
"USS YARD","CN-F-Z02.EYD.S14.USS-4.1285","Term & Torque MV Feeder from EY06-SWGR-RMU-USS-4 to EY06-XFMR-USS-4 at EY06-XFMR-USS-4","2026-02-09","2026-02-10","8"
"USS YARD","CN-F-Z02.EYD.S14.USS-5.1287","Term & Torque MV Feeder from EY06-SWGR-RMU-USS-5 to EY06-XFMR-USS-5 at EY06-XFMR-USS-5","2026-02-09","2026-02-10","8"
"USS YARD","CN-F-Z02.EYD.S14.USS-6.1289","Term & Torque MV Feeder from EY06-SWGR-RMU-USS-6 to EY06-XFMR-USS-6 at EY06-XFMR-USS-6","2026-02-09","2026-02-10","8"
"USS YARD","CN-F-Z02.EYD.S14.USS-7.1291","Term & Torque MV Feeder from EY06-SWGR-RMU-USS-7 to EY06-XFMR-USS-7 at EY06-XFMR-USS-7","2026-02-09","2026-02-10","8"
"USS YARD","CN-F-Z02.EYD.S14.USS-8.1293","Term & Torque MV Feeder from EY06-SWGR-RMU-USS-8 to EY06-XFMR-USS-8 at EY06-XFMR-USS-8","2026-02-09","2026-02-10","8"
"USS YARD","CN-F-Z02.EYD.S14.USS-9.1295","Term & Torque MV Feeder from EY06-SWGR-RMU-USS-9 to EY06-XFMR-USS-9 at EY06-XFMR-USS-9","2026-02-09","2026-02-10","8"
"USS YARD","CN-F-Z02.EYD.S14.USS-10.1297","Term & Torque MV Feeder from EY06-SWGR-RMU-USS-10 to EY06-XFMR-USS-10 at EY06-XFMR-USS-10","2026-02-09","2026-02-10","8"
"USS YARD","CN-F-Z02.EYD.S14.USS-1.1354","Term & Torque MV Feeder from EY06-SWGR-RMU-USS-1 to EY06-XFMR-USS-1 at EY06-SWGR-RMU-USS-1","2026-02-09","2026-02-10","8"
"USS YARD","CN-F-Z02.EYD.S14.USS-2.1356","Term & Torque MV Feeder from EY06-SWGR-RMU-USS-2 to EY06-XFMR-USS-2 at EY06-SWGR-RMU-USS-2","2026-02-09","2026-02-10","8"
"USS YARD","CN-F-Z02.EYD.S14.USS-3.1358","Term & Torque MV Feeder from EY06-SWGR-RMU-USS-3 to EY06-XFMR-USS-3 at EY06-SWGR-RMU-USS-3","2026-02-09","2026-02-10","8"
"USS YARD","CN-F-Z02.EYD.S14.USS-4.1360","Term & Torque MV Feeder from EY06-SWGR-RMU-USS-4 to EY06-XFMR-USS-4 at EY06-SWGR-RMU-USS-4","2026-02-09","2026-02-10","8"
"USS YARD","CN-F-Z02.EYD.S14.USS-5.1362","Term & Torque MV Feeder from EY06-SWGR-RMU-USS-5 to EY06-XFMR-USS-5 at EY06-SWGR-RMU-USS-5","2026-02-09","2026-02-10","8"
"USS YARD","CN-F-Z02.EYD.S14.USS-6.1364","Term & Torque MV Feeder from EY06-SWGR-RMU-USS-6 to EY06-XFMR-USS-6 at EY06-SWGR-RMU-USS-6","2026-02-09","2026-02-10","8"
"USS YARD","CN-F-Z02.EYD.S14.USS-7.1366","Term & Torque MV Feeder from EY06-SWGR-RMU-USS-7 to EY06-XFMR-USS-7 at EY06-SWGR-RMU-USS-7","2026-02-09","2026-02-10","8"
"USS YARD","CN-F-Z02.EYD.S14.USS-8.1368","Term & Torque MV Feeder from EY06-SWGR-RMU-USS-8 to EY06-XFMR-USS-8 at EY06-SWGR-RMU-USS-8","2026-02-09","2026-02-10","8"
"USS YARD","CN-F-Z02.EYD.S14.USS-9.1370","Term & Torque MV Feeder from EY06-SWGR-RMU-USS-9 to EY06-XFMR-USS-9 at EY06-SWGR-RMU-USS-9","2026-02-09","2026-02-10","8"
"USS YARD","CN-F-Z02.EYD.S14.USS-10.1372","Term & Torque MV Feeder from EY06-SWGR-RMU-USS-10 to EY06-XFMR-USS-10 at EY06-SWGR-RMU-USS-10","2026-02-09","2026-02-10","8"
"SSS","CX-F-Z02.EYD.S14.L2.1506","L2 QC Electrical Install-EY06-SWGR-SSS-E","2026-02-09","2026-02-11","16"
"USS YARD","CX-F-Z02.EYD.S14.L2.1543","L2 QC Electrical Install-EY06-SWGR-RMU-USS-11","2026-02-09","2026-02-11","16"
"USS YARD","CX-F-Z02.EYD.S14.L2.1546","L2 QC Electrical Install-EY06-SWGR-RMU-USS-12","2026-02-09","2026-02-11","16"
"USS YARD","CX-F-Z02.EYD.S14.L2.1549","L2 QC Electrical Install-EY06-SWGR-RMU-USS-13","2026-02-09","2026-02-11","16"
"USS YARD","CX-F-Z02.EYD.S14.L2.1552","L2 QC Electrical Install-EY06-SWGR-RMU-USS-14","2026-02-09","2026-02-11","16"
"USS YARD","CX-F-Z02.EYD.S14.L2.1555","L2 QC Electrical Install-EY06-SWGR-RMU-USS-15","2026-02-09","2026-02-11","16"
"USS YARD","CX-F-Z02.EYD.S14.L2.1558","L2 QC Electrical Install-EY06-SWGR-RMU-USS-16","2026-02-09","2026-02-11","16"
"USS YARD","CX-F-Z02.EYD.S14.L2.1561","L2 QC Electrical Install-EY06-SWGR-RMU-USS-17","2026-02-09","2026-02-11","16"
"USS YARD","CX-F-Z02.EYD.S14.L2.1564","L2 QC Electrical Install-EY06-SWGR-RMU-USS-18","2026-02-09","2026-02-11","16"
"USS YARD","CX-F-Z02.EYD.S14.L2.1567","L2 QC Electrical Install-EY06-SWGR-RMU-USS-19","2026-02-09","2026-02-11","16"
"USS YARD","CX-F-Z02.EYD.S14.L2.1570","L2 QC Electrical Install-EY06-SWGR-RMU-USS-20","2026-02-09","2026-02-11","16"
"USS YARD","CX-F-Z02.EYD.S14.L2.1573","L2 QC Electrical Install-EY06-SWGR-RMU-USS-21","2026-02-09","2026-02-11","16"
"USS YARD","CX-F-Z02.EYD.S14.L2.1576","L2 QC Electrical Install-EY06-SWGR-RMU-USS-22","2026-02-09","2026-02-11","16"
"USS YARD","CX-F-Z02.EYD.S14.L2.1579","L2 QC Electrical Install-EY06-SWGR-RMU-USS-23","2026-02-09","2026-02-11","16"
"USS YARD","CX-F-Z02.EYD.S14.L2.1582","L2 QC Electrical Install-EY06-SWGR-RMU-USS-24","2026-02-09","2026-02-11","16"
"USS YARD","CX-F-Z02.EYD.S14.L2.1585","L2 QC Electrical Install-EY06-SWGR-RMU-USS-25","2026-02-09","2026-02-11","16"
"USS YARD","CX-F-Z02.EYD.S14.L2.1588","L2 QC Electrical Install-EY06-SWGR-RMU-USS-26","2026-02-09","2026-02-11","16"
"MYD","CN-F-Z02.MYD.S24.MYD.0001","Install Cable Tray at Z2 MYD USS-07","2026-02-09","2026-02-23","80"
"GPS","CN-F-Z01.EYD.S14.CW.3310","Pull,Term,Test & Torque Feeder from EY05-SWGR-GPS (Control) to EY05-GEN 13 (Control)","2026-02-09","2026-02-10","8"
"GPS","CN-F-Z02.EYD.S14.CW.3321","Pull,Term,Test & Torque Feeder from EY06-SWGR-GPS (Control) to EY06-GEN 7 (Control)","2026-02-09","2026-02-10","8"
"MYD","CN-F-Z02.MYD.USS.09","MYD Zone 2 USS 09 Install Trestle Steel","2026-02-09","2026-02-16","40"
"USS YARD","382876265","Feeder Chiller (term,test,torque)-USS-07,USS 7-LV","2026-02-09","2026-02-16","40"
"MCP","780888042","Install Conduit & CT Receptacles Conduit-MCP CTR 07,BUILDOUT","2026-02-09","2026-02-17","48"
"DCH","A1240","BMS-DCH2-Leak Detection-Pull Wire-South Central","2026-02-09","2026-02-16","40"
"DCH","A1460","PMS-DCH2-Shiraz Bus Plugs-Terminate @ SPD Cabinets","2026-02-09","2026-02-16","40"
"EYD","CX-10575","EYD1-Generator 10 L3","2026-02-10","2026-02-11","8"
"EYD","CX-10543","EYD1-Generator 11 Endurance Run","2026-02-10","2026-02-11","8"
"EYD","CX-11011","EYD2-Generator 02 L3","2026-02-10","2026-02-16","32"
"EYD","CX-11021","EYD2-Generator 10 Endurance Run","2026-02-10","2026-02-11","8"
"MYD","CX-10984","MYD1-MCP2-Cooling Tower Startup","2026-02-10","2026-03-03","120"
"MYD","CX-10985","MYD1-MCP6-Cooling Tower Startup","2026-02-10","2026-03-03","120"
"EYD","CX-11019","EYD2-BDC/DCP/DCOP Energization","2026-02-10","2026-02-12","16"
"MYD","CON-114605","MYD2-Mobilize Crane C/Dance Floor-MCP-11","2026-02-10","2026-02-11","8"
"USS YARD","CN-F-Z02.EYD.S14.USS-3.1090","Pull,Term,Test & Torque Feeder from EY06-XFMR-USS-3 to EY06-SWGR-USS-3","2026-02-10","2026-02-11","8"
"USS YARD","CX-F-Z02.EYD.S14.L2.1513","L2 QC Electrical Install-EY06-SWGR-RMU-USS-1","2026-02-10","2026-02-12","16"
"USS YARD","CX-F-Z02.EYD.S14.L2.1514","L2 QC Electrical Install-EY06-XFMR-USS-1","2026-02-10","2026-02-12","16"
"USS YARD","CX-F-Z02.EYD.S14.L2.1516","L2 QC Electrical Install-EY06-SWGR-RMU-USS-2","2026-02-10","2026-02-12","16"
"USS YARD","CX-F-Z02.EYD.S14.L2.1517","L2 QC Electrical Install-EY06-XFMR-USS-2","2026-02-10","2026-02-12","16"
"USS YARD","CX-F-Z02.EYD.S14.L2.1519","L2 QC Electrical Install-EY06-SWGR-RMU-USS-3","2026-02-10","2026-02-12","16"
"USS YARD","CX-F-Z02.EYD.S14.L2.1522","L2 QC Electrical Install-EY06-SWGR-RMU-USS-4","2026-02-10","2026-02-12","16"
"USS YARD","CX-F-Z02.EYD.S14.L2.1525","L2 QC Electrical Install-EY06-SWGR-RMU-USS-5","2026-02-10","2026-02-12","16"
"USS YARD","CX-F-Z02.EYD.S14.L2.1528","L2 QC Electrical Install-EY06-SWGR-RMU-USS-6","2026-02-10","2026-02-12","16"
"USS YARD","CX-F-Z02.EYD.S14.L2.1531","L2 QC Electrical Install-EY06-SWGR-RMU-USS-7","2026-02-10","2026-02-12","16"
"USS YARD","CX-F-Z02.EYD.S14.L2.1534","L2 QC Electrical Install-EY06-SWGR-RMU-USS-8","2026-02-10","2026-02-12","16"
"USS YARD","CX-F-Z02.EYD.S14.L2.1537","L2 QC Electrical Install-EY06-SWGR-RMU-USS-9","2026-02-10","2026-02-12","16"
"USS YARD","CX-F-Z02.EYD.S14.L2.1540","L2 QC Electrical Install-EY06-SWGR-RMU-USS-10","2026-02-10","2026-02-12","16"
"USS YARD","CN-F-Z02.MYD.S24.USS-9.1910","Term & Torque MV Feeder from MY06-SWGR-RMU-USS-CUB-9 to MY06-XFMR-USS-CUB-9 at MY06-XFMR-USS-CUB-9","2026-02-10","2026-02-13","24"
"USS YARD","CN-F-Z02.MYD.S24.USS-9.1916","Term & Torque MV Feeder from MY06-SWGR-RMU-USS-CUB-9 to MY06-XFMR-USS-CUB-9 at MY06-SWGR-RMU-USS-CUB-9","2026-02-10","2026-02-13","24"
"GPS","CN-F-Z01.EYD.S14.CW.3311","Pull,Term,Test & Torque Feeder from EY05-SWGR-GPS (Control) to EY05-GEN 14 (Control)","2026-02-10","2026-02-11","8"
"GPS","CN-F-Z02.EYD.S14.CW.3322","Pull,Term,Test & Torque Feeder from EY06-SWGR-GPS (Control) to EY06-GEN 8 (Control)","2026-02-10","2026-02-11","8"
"MCP","813852583","Basin Heater Conduits-MCP CTR 09,BUILDOUT","2026-02-10","2026-02-16","32"
"MCP","813828960","Install EFL / F-MCP CTR 09,BUILDOUT","2026-02-10","2026-02-16","32"
"MCP","934829094","CTS Stair install-MCP CTR 11,BUILDOUT","2026-02-10","2026-02-16","32"
"EYD","CX-10580","EYD1-Generator 11 L3","2026-02-11","2026-02-12","8"
"EYD","CX-10544","EYD1-Generator 12 Endurance Run","2026-02-11","2026-02-12","8"
"EYD","CX-11024","EYD2-Generator 11 Endurance Run","2026-02-11","2026-02-12","8"
"MYD","CON-114615","MYD2-Mobilize/Set & Anchor (Chiller)/(Heat Exchanger)/(Pump)/Install Chiller Skid Roof Bump/Set Exp.Tank-MCP-11","2026-02-11","2026-02-13","16"
"USS YARD","CN-F-Z02.EYD.S14.USS-4.1093","Pull,Term,Test & Torque Feeder from EY06-XFMR-USS-4 to EY06-SWGR-USS-4","2026-02-11","2026-02-12","8"
"USS YARD","CX-F-Z02.EYD.S14.L2.1520","L2 QC Electrical Install-EY06-XFMR-USS-3","2026-02-11","2026-02-13","16"
"MCP","CX-F-Z02.MYD.S24.L2.1939","L2 QC Electrical Install-MCP-07-Basin HT Panel A","2026-02-11","2026-02-13","16"
"MCP","CX-F-Z02.MYD.S24.L2.1940","L2 QC Electrical Install-MCP-07-Basin HT Panel B","2026-02-11","2026-02-13","16"
"MCP","CX-F-Z02.MYD.S24.L2.1941","L2 QC Electrical Install-MCP-07-HT TRACE CAB","2026-02-11","2026-02-13","16"
"GPS","CN-F-Z01.EYD.S14.CW.3312","Pull,Term,Test & Torque Feeder from EY05-SWGR-GPS (Control) to EY05-GEN 15 (Control)","2026-02-11","2026-02-12","8"
"GPS","CN-F-Z02.EYD.S14.CW.3323","Pull,Term,Test & Torque Feeder from EY06-SWGR-GPS (Control) to EY06-GEN 9 (Control)","2026-02-11","2026-02-12","8"
"EYD","CX-10581","EYD1-Generator 12 L3","2026-02-12","2026-02-13","8"
"EYD","CX-10545","EYD1-Generator 13 Endurance Run","2026-02-12","2026-02-13","8"
"EYD","CX-11026","EYD2-Generator 12 Endurance Run","2026-02-12","2026-02-13","8"
"USS YARD","CN-F-Z02.EYD.S14.USS-5.1096","Pull,Term,Test & Torque Feeder from EY06-XFMR-USS-5 to EY06-SWGR-USS-5","2026-02-12","2026-02-13","8"
"USS YARD","CX-F-Z02.EYD.S14.L2.1523","L2 QC Electrical Install-EY06-XFMR-USS-4","2026-02-12","2026-02-16","16"
"GPS","CN-F-Z01.EYD.S14.CW.3313","Pull,Term,Test & Torque Feeder from EY05-SWGR-GPS (Control) to EY05-GEN 16 (Control)","2026-02-12","2026-02-13","8"
"GPS","CN-F-Z02.EYD.S14.CW.3324","Pull,Term,Test & Torque Feeder from EY06-SWGR-GPS (Control) to EY06-GEN 10 (Control)","2026-02-12","2026-02-13","8"
"EYD","CX-10583","EYD1-Generator 13 L3","2026-02-15","2026-02-16","8"
"EYD","CX-10561","EYD1-Generator 14 Endurance Run","2026-02-15","2026-02-16","8"
"EYD","CX-11029","EYD2-Generator 13 Endurance Run","2026-02-15","2026-02-16","8"
"MYD","CX-10285","MYD2-MCP07-L2 Yellow Tag","2026-02-15","2026-02-20","40"
"MYD","CON-114625","MYD2-Set Upper Cooling Tower Stairs (CTS)-MCP-11","2026-02-15","2026-02-18","24"
"USS YARD","CN-F-Z02.EYD.S14.USS-6.1099","Pull,Term,Test & Torque Feeder from EY06-XFMR-USS-6 to EY06-SWGR-USS-6","2026-02-15","2026-02-16","8"
"USS YARD","CX-F-Z02.EYD.S14.L2.1526","L2 QC Electrical Install-EY06-XFMR-USS-5","2026-02-15","2026-02-17","16"
"USS YARD","CX-F-Z02.MYD.S24.L2.1930","L2 QC Electrical Install-MY06-XFMR-USS-CUB-9","2026-02-15","2026-02-17","16"
"GPS","CN-F-Z01.EYD.S14.CW.3314","Pull,Term,Test & Torque Feeder from EY05-SWGR-GPS (Control) to EY05-GEN 17 (Control)","2026-02-15","2026-02-16","8"
"GPS","CN-F-Z02.EYD.S14.CW.3325","Pull,Term,Test & Torque Feeder from EY06-SWGR-GPS (Control) to EY06-GEN 11 (Control)","2026-02-15","2026-02-16","8"
"USS YARD","028864517","Cable Tray Rack Loose Set-USS-011,USS 11-LV","2026-02-15","2026-02-16","8"
"MCP","934802789","CT Stair Install-MCP CTR 11,BUILDOUT","2026-02-15","2026-02-19","32"
"MCP","934820867","Final Cooling Tower Connections-Condenser / Sweeper Piping Install-MCP CTR 11,BUILDOUT","2026-02-15","2026-02-17","16"
"EYD","CX-10584","EYD1-Generator 14 L3","2026-02-16","2026-02-17","8"
"EYD","CX-10562","EYD1-Generator 15 Endurance Run","2026-02-16","2026-02-17","8"
"EYD","CX-11023","EYD2-Generator 03 L3","2026-02-16","2026-02-20","32"
"EYD","CX-11033","EYD2-Generator 14 Endurance Run","2026-02-16","2026-02-17","8"
"GPS","CX-F-Z01.EYD.S14.L2.639","L2 QC Electrical Install-EY05-SWGR-GPS","2026-02-16","2026-02-18","16"
"GPS","CX-F-Z01.EYD.S14.L2.783","L2 QC Electrical Install-EY05-PNL-GPS-BDC","2026-02-16","2026-02-18","16"
"USS YARD","CN-F-Z02.EYD.S14.USS-7.1102","Pull,Term,Test & Torque Feeder from EY06-XFMR-USS-7 to EY06-SWGR-USS-7","2026-02-16","2026-02-17","8"
"USS YARD","CX-F-Z02.EYD.S14.L2.1529","L2 QC Electrical Install-EY06-XFMR-USS-6","2026-02-16","2026-02-18","16"
"GPS","CN-F-Z02.EYD.S14.CW.3326","Pull,Term,Test & Torque Feeder from EY06-SWGR-GPS (Control) to EY06-GEN 12 (Control)","2026-02-16","2026-02-17","8"
"MCP","813879162","Install Conduit & CT Receptacles Conduit-MCP CTR 09,BUILDOUT","2026-02-16","2026-02-24","48"
"USS YARD","382851344","BDC for MY-01-USS-07,USS 7-LV","2026-02-16","2026-02-23","40"
"USS YARD","653883784","Feeder Chiller (term,test,torque)-USS-09,USS 9-LV","2026-02-16","2026-02-23","40"
"USS YARD","028883088","Set PDC-USS-011,USS 11-LV","2026-02-16","2026-02-17","8"
"DCH","A1220","BMS-DCH2-Leak Detection-Pull Wire-North East","2026-02-16","2026-02-23","40"
"EYD","CX-10591","EYD1-Generator 15 L3","2026-02-17","2026-02-18","8"
"EYD","CX-10563","EYD1-Generator 16 Endurance Run","2026-02-17","2026-02-18","8"
"EYD","CX-11035","EYD2-Generator 15 Endurance Run","2026-02-17","2026-02-18","8"
"MYD","CX-11018","MYD1-MCP4-BDC & Rest-L3","2026-02-17","2026-03-06","104"
"USS YARD","CN-F-Z02.EYD.S14.USS-8.1105","Pull,Term,Test & Torque Feeder from EY06-XFMR-USS-8 to EY06-SWGR-USS-8","2026-02-17","2026-02-18","8"
"USS YARD","CX-F-Z02.EYD.S14.L2.1532","L2 QC Electrical Install-EY06-XFMR-USS-7","2026-02-17","2026-02-19","16"
"MYD","CN-F-Z02.MYD.S24.USS-11.1865","Ground MY06-XFMR-USS-CUB-11 in Zone 2 MYD","2026-02-17","2026-02-18","8"
"MYD","CN-F-Z02.MYD.S24.USS-11.1866","Ground MY06-SWGR-USS-CUB-11 in Zone 2 MYD","2026-02-17","2026-02-18","8"
"MYD","CN-F-Z02.MYD.S24.USS-11.1874","Complete Pathway to MY06-XFMR-USS-CUB-11 in Zone 2 MYD","2026-02-17","2026-02-18","8"
"MYD","CN-F-Z02.MYD.S24.USS-11.1875","Complete Pathway to MY06-SWGR-USS-CUB-11 in Zone 2 MYD","2026-02-17","2026-02-18","8"
"GPS","CN-F-Z02.EYD.S14.CW.3327","Pull,Term,Test & Torque Feeder from EY06-SWGR-GPS (Control) to EY06-GEN 13 (Control)","2026-02-17","2026-02-18","8"
"MCP","780844654","Install EFL / FG Fixtures-MCP CTR 07,BUILDOUT","2026-02-17","2026-02-24","40"
"MCP","780881807","610 Motor Wire Pulls-MCP CTR 07,BUILDOUT","2026-02-17","2026-02-19","16"
"USS YARD","028811080","Set LV-01-USS-011,USS 11-LV","2026-02-17","2026-02-18","8"
"EYD","CX-10592","EYD1-Generator 16 L3","2026-02-18","2026-02-19","8"
"EYD","CX-10564","EYD1-Generator 17 Endurance Run","2026-02-18","2026-02-19","8"
"EYD","CX-10666","EYD1-RMU Module 01 Level 3","2026-02-18","2026-02-19","8"
"EYD","CX-11036","EYD2-Generator 16 Endurance Run","2026-02-18","2026-02-19","8"
"EYD","CX-11037","EYD2-Generator 17 Endurance Run","2026-02-18","2026-02-19","8"
"MYD","CX-11025","MYD1-MCP4-Cooling Tower Startup","2026-02-18","2026-03-12","128"
"USS YARD","CN-F-Z02.EYD.S14.USS-9.1108","Pull,Term,Test & Torque Feeder from EY06-XFMR-USS-9 to EY06-SWGR-USS-9","2026-02-18","2026-02-19","8"
"USS YARD","CX-F-Z02.EYD.S14.L2.1535","L2 QC Electrical Install-EY06-XFMR-USS-8","2026-02-18","2026-02-20","16"
"USS YARD","CN-F-Z02.MYD.S24.USS-11.1891","Pull,Term,Test & Torque Feeder from MY06-XFMR-USS-CUB-11 to MY06-SWGR-USS-CUB-11","2026-02-18","2026-02-20","16"
"GPS","CN-F-Z02.EYD.S14.CW.3328","Pull,Term,Test & Torque Feeder from EY06-SWGR-GPS (Control) to EY06-GEN 14 (Control)","2026-02-18","2026-02-19","8"
"USS YARD","084820071","Set XFMR-USS-011,USS-11 XMFR","2026-02-18","2026-02-19","8"
"EYD","CX-10593","EYD1-Generator 17 L3","2026-02-19","2026-02-20","8"
"EYD","CX-10674","EYD1-RMU Module 02 Level 3","2026-02-19","2026-02-20","8"
"EYD","CX-10675","EYD1-USS Module 01 Level 3","2026-02-19","2026-02-20","8"
"MYD","CON-114225","MYD2-Install PCW Building Risers-MCP-07","2026-02-19","2026-02-20","8"
"USS YARD","CN-F-Z02.EYD.S14.USS-10.1111","Pull,Term,Test & Torque Feeder from EY06-XFMR-USS-10 to EY06-SWGR-USS-10","2026-02-19","2026-02-20","8"
"USS YARD","CX-F-Z02.EYD.S14.L2.1538","L2 QC Electrical Install-EY06-XFMR-USS-9","2026-02-19","2026-02-23","16"
"GPS","CN-F-Z02.EYD.S14.CW.3329","Pull,Term,Test & Torque Feeder from EY06-SWGR-GPS (Control) to EY06-GEN 15 (Control)","2026-02-19","2026-02-20","8"
"USS YARD","153899203","Set RMU-USS-011,USS-11 RMU","2026-02-19","2026-02-20","8"
"MCP","780809536","EFL / FG Wire Pulls-MCP CTR 07,BUILDOUT","2026-02-19","2026-02-27","48"
"MCP","934819653","MCP Electrical Interconnects-MCP CTR 11,BUILDOUT","2026-02-19","2026-03-12","120"
"MCP","934875766","610 Motor Conduit-MCP CTR 11,BUILDOUT","2026-02-19","2026-02-25","32"
"MCP","934876227","610 Motor Heater Conduit-MCP CTR 11,BUILDOUT","2026-02-19","2026-02-25","32"
"EYD","CX-10681","EYD1-RMU Module 03 Level 3","2026-02-22","2026-02-23","8"
"EYD","CX-10682","EYD1-USS Module 02 Level 3","2026-02-22","2026-02-23","8"
"EYD","CX-11034","EYD2-Generator 04 L3","2026-02-22","2026-02-26","32"
"USS YARD","CN-F-Z02.EYD.S14.USS-11.1114","Pull,Term,Test & Torque Feeder from EY06-XFMR-USS-11 to EY06-SWGR-USS-11","2026-02-22","2026-02-23","8"
"USS YARD","CX-F-Z02.EYD.S14.L2.1541","L2 QC Electrical Install-EY06-XFMR-USS-10","2026-02-22","2026-02-24","16"
"MYD","CN-F-Z02.MYD.S21.USS-11.1864","Ground MY06-SWGR-RMU-USS-CUB-11 in Zone 2 MYD","2026-02-22","2026-02-23","8"
"MYD","CN-F-Z02.MYD.S21.USS-11.1873","Complete Pathway to MY06-SWGR-RMU-USS-CUB-11 in Zone 2 MYD","2026-02-22","2026-02-23","8"
"MYD","CN-F-Z02.MYD.S24.MYD.0002","Install Trench Cable Tray at Z2 MYD MV Ring FDR Crossover Tray","2026-02-22","2026-02-24","16"
"GPS","CN-F-Z02.EYD.S14.CW.3330","Pull,Term,Test & Torque Feeder from EY06-SWGR-GPS (Control) to EY06-GEN 16 (Control)","2026-02-22","2026-02-23","8"
"USS YARD","028876062","Hard set rack & cable tray-USS-011,USS 11-LV","2026-02-22","2026-03-03","56"
"USS YARD","084897757","Grounding 1864,1865,1866-USS-011,USS-11 XMFR","2026-02-22","2026-02-25","24"
"EYD","CX-10684","EYD1-RMU Module 04 Level 3","2026-02-23","2026-02-24","8"
"EYD","CX-10685","EYD1-USS Module 03 Level 3","2026-02-23","2026-02-24","8"
"MYD","CON-114485","MYD2-Install PCW Building Risers-MCP-09","2026-02-23","2026-02-24","8"
"USS YARD","CN-F-Z02.EYD.S14.USS-12.1117","Pull,Term,Test & Torque Feeder from EY06-XFMR-USS-12 to EY06-SWGR-USS-12","2026-02-23","2026-02-24","8"
"USS YARD","CX-F-Z02.EYD.S14.L2.1544","L2 QC Electrical Install-EY06-XFMR-USS-11","2026-02-23","2026-02-25","16"
"USS YARD","CN-F-Z02.MYD.S24.USS-7.1882","Pull,Term,Test & Torque Feeder from MY06-SWGR-USS-CUB-7 to MCP-07-Chiller","2026-02-23","2026-03-02","40"
"USS YARD","CN-F-Z02.MYD.S24.USS-11.1890","Pull & Test MV Feeder from MY06-SWGR-RMU-USS-CUB-11 to MY06-XFMR-USS-CUB-11","2026-02-23","2026-02-25","16"
"SSS","CN-F-Z02.MYD.S10.USS-11.1906","Pull & Test MV Feeder from EY06-SWGR-SSS-F to MY06-SWGR-RMU-USS-CUB-11","2026-02-23","2026-02-26","24"
"MYD","CN-F-Z02.MYD.S24.MYD.0003","Install Cable Tray at Z2 MYD USS-09","2026-02-23","2026-03-09","80"
"GPS","CN-F-Z02.EYD.S14.CW.3331","Pull,Term,Test & Torque Feeder from EY06-SWGR-GPS (Control) to EY06-GEN 17 (Control)","2026-02-23","2026-02-24","8"
"USS YARD","653873483","BDC for MY-01-USS-09,USS 9-LV","2026-02-23","2026-03-02","40"
"USS YARD","382820015","Pull PDC 1+2 to FPH-USS-07,USS 7-LV","2026-02-23","2026-02-26","24"
"DCH","A1250","BMS-DCH2-Leak Detection-Pull Wire-South East","2026-02-23","2026-03-02","40"
"EYD","CX-10691","EYD1-RMU Module 05 Level 3","2026-02-24","2026-02-25","8"
"EYD","CX-10692","EYD1-USS Module 04 Level 3","2026-02-24","2026-02-25","8"
"MYD","CX-11017","MYD1-MCP2-Chiller Startup","2026-02-24","2026-03-10","80"
"USS YARD","CN-F-Z02.EYD.S14.USS-13.1120","Pull,Term,Test & Torque Feeder from EY06-XFMR-USS-13 to EY06-SWGR-USS-13","2026-02-24","2026-02-25","8"
"USS YARD","CX-F-Z02.EYD.S14.L2.1547","L2 QC Electrical Install-EY06-XFMR-USS-12","2026-02-24","2026-02-26","16"
"USS YARD","CN-F-Z02.MYD.S10.USS-7.1884","Pull & Test MV Feeder from MY06-SWGR-RMU-USS-CUB-7 to MY06-SWGR-RMU-USS-CUB-9","2026-02-24","2026-02-27","24"
"USS YARD","CN-F-Z02.MYD.S10.USS-11.1889","Pull & Test MV Feeder from MY06-SWGR-RMU-USS-CUB-9 to MY06-SWGR-RMU-USS-CUB-11","2026-02-24","2026-02-27","24"
"USS YARD","CN-F-Z02.EYD.S14.CW.3296","Pull,Term,Test & Torque Feeder from MY06-USS-CUB-7 (Control) to MY06-USS-CUB-9 (Control)","2026-02-24","2026-03-03","40"
"USS YARD","CN-F-Z02.EYD.S14.CW.3356","Pull,Term,Test & Torque Feeder from MY06-USS-CUB-11 (Control) to MY06-USS-CUB-9 (Control)","2026-02-24","2026-03-03","40"
"MYD","CN-F-Z02.MYD.USS.11","MYD Zone 2 USS 11 Install Trestle Steel","2026-02-24","2026-03-03","40"
"MCP","780872417","610 Motor Heater Wire Pulls-MCP CTR 07,BUILDOUT","2026-02-24","2026-02-26","16"
"MCP","813892429","Install EFL / FG Fixtures-MCP CTR 09,BUILDOUT","2026-02-24","2026-03-03","40"
"MCP","813885939","610 Motor Wire Pulls-MCP CTR 09,BUILDOUT","2026-02-24","2026-02-26","16"
"EYD","CX-10698","EYD1-RMU Module 06 Level 3","2026-02-25","2026-02-26","8"
"EYD","CX-10699","EYD1-USS Module 05 Level 3","2026-02-25","2026-02-26","8"
"USS YARD","CN-F-Z02.EYD.S14.USS-14.1123","Pull,Term,Test & Torque Feeder from EY06-XFMR-USS-14 to EY06-SWGR-USS-14","2026-02-25","2026-02-26","8"
"USS YARD","CX-F-Z02.EYD.S14.L2.1550","L2 QC Electrical Install-EY06-XFMR-USS-13","2026-02-25","2026-02-27","16"
"USS YARD","CN-F-Z02.MYD.S24.USS-11.1912","Term & Torque MV Feeder from MY06-SWGR-RMU-USS-CUB-11 to MY06-XFMR-USS-CUB-11 at MY06-XFMR-USS-CUB-11","2026-02-25","2026-03-02","24"
"USS YARD","CN-F-Z02.MYD.S24.USS-11.1918","Term & Torque MV Feeder from MY06-SWGR-RMU-USS-CUB-11 to MY06-XFMR-USS-CUB-11 at MY06-SWGR-RMU-USS-CUB-11","2026-02-25","2026-03-02","24"
"MCP","934898538","Install EFL / F-MCP CTR 11,BUILDOUT","2026-02-25","2026-03-03","32"
"MCP","934873530","Basin Heater Conduits-MCP CTR 11,BUILDOUT","2026-02-25","2026-03-03","32"
"EYD","CX-10704","EYD1-RMU Module 07 Level 3","2026-02-26","2026-02-27","8"
"EYD","CX-10705","EYD1-USS Module 06 Level 3","2026-02-26","2026-02-27","8"
"EYD","CX-11039","EYD2-Generator 05 L3","2026-02-26","2026-03-04","32"
"USS YARD","CN-F-Z02.EYD.S14.USS-15.1126","Pull,Term,Test & Torque Feeder from EY06-XFMR-USS-15 to EY06-SWGR-USS-15","2026-02-26","2026-02-27","8"
"USS YARD","CX-F-Z02.EYD.S14.L2.1553","L2 QC Electrical Install-EY06-XFMR-USS-14","2026-02-26","2026-03-02","16"
"SSS","CN-F-Z02.MYD.S10.SSS-F.1919","Term & Torque MV Feeder from EY06-SWGR-SSS-F to MY06-SWGR-RMU-USS-CUB-11 at MY06-SWGR-RMU-USS-CUB-11","2026-02-26","2026-03-03","24"
"SSS","CN-F-Z02.MYD.S10.SSS-F.1920","Term & Torque MV Feeder from EY06-SWGR-SSS-F to MY06-SWGR-RMU-USS-CUB-11 at EY06-SWGR-SSS-F","2026-02-26","2026-03-03","24"
"USS YARD","382851018","Term PDC 1+2 to FPH-USS-07,USS 7-LV","2026-02-26","2026-03-02","16"
"MCP","780820579","Receptacles wire pulls & terms-MCP CTR 07,BUILDOUT","2026-02-26","2026-03-06","48"
"MCP","813845647","EFL / FG Wire Pulls-MCP CTR 09,BUILDOUT","2026-02-26","2026-03-06","48"
"EYD","CX-10713","EYD1-RMU Module 08 Level 3","2026-03-01","2026-03-02","8"
"EYD","CX-10714","EYD1-USS Module 07 Level 3","2026-03-01","2026-03-02","8"
"USS YARD","CN-F-Z02.EYD.S14.USS-16.1129","Pull,Term,Test & Torque Feeder from EY06-XFMR-USS-16 to EY06-SWGR-USS-16","2026-03-01","2026-03-02","8"
"USS YARD","CX-F-Z02.EYD.S14.L2.1556","L2 QC Electrical Install-EY06-XFMR-USS-15","2026-03-01","2026-03-03","16"
"USS YARD","CN-F-Z02.MYD.S10.USS-7.1909","Term & Torque MV Feeder from MY06-SWGR-RMU-USS-CUB-7 to MY06-SWGR-RMU-USS-CUB-9 at MY06-SWGR-RMU-USS-CUB-9","2026-03-01","2026-03-04","24"
"USS YARD","CN-F-Z02.MYD.S10.USS-9.1911","Term & Torque MV Feeder from MY06-SWGR-RMU-USS-CUB-9 to MY06-SWGR-RMU-USS-CUB-11 at MY06-SWGR-RMU-USS-CUB-11","2026-03-01","2026-03-04","24"
"USS YARD","CN-F-Z02.MYD.S10.USS-7.1915","Term & Torque MV Feeder from MY06-SWGR-RMU-USS-CUB-7 to MY06-SWGR-RMU-USS-CUB-9 at MY06-SWGR-RMU-USS-CUB-7","2026-03-01","2026-03-04","24"
"USS YARD","CN-F-Z02.MYD.S10.USS-9.1917","Term & Torque MV Feeder from MY06-SWGR-RMU-USS-CUB-9 to MY06-SWGR-RMU-USS-CUB-11 at MY06-SWGR-RMU-USS-CUB-9","2026-03-01","2026-03-04","24"
"MCP","780841300","Roofing Membrane Install-MCP CTR 07,BUILDOUT","2026-03-01","2026-03-06","40"
"EYD","CX-10718","EYD1-RMU Module 09 Level 3","2026-03-02","2026-03-03","8"
"EYD","CX-10719","EYD1-USS Module 08 Level 3","2026-03-02","2026-03-03","8"
"USS YARD","CN-F-Z02.EYD.S14.USS-17.1132","Pull,Term,Test & Torque Feeder from EY06-XFMR-USS-17 to EY06-SWGR-USS-17","2026-03-02","2026-03-03","8"
"USS YARD","CX-F-Z02.EYD.S14.L2.1559","L2 QC Electrical Install-EY06-XFMR-USS-16","2026-03-02","2026-03-04","16"
"USS YARD","CN-F-Z02.MYD.S24.USS-7.1883","Pull,Term,Test & Torque Feeder from MY06-SWGR-USS-CUB-7 to MCP-07-BDC","2026-03-02","2026-03-09","40"
"MCP","CX-F-Z02.MYD.S24.L2.1927","L2 QC Electrical Install-MCP-07-Chiller","2026-03-02","2026-03-04","16"
"USS YARD","CX-F-Z02.MYD.S24.L2.1935","L2 QC Electrical Install-MY06-XFMR-USS-CUB-11","2026-03-02","2026-03-04","16"
"USS YARD","382860858","Torque PDC 1+2 to FPH-USS-07,USS 7-LV","2026-03-02","2026-03-03","8"
"USS YARD","653856361","Pull PDC 1+2 to FPH-USS-09,USS 9-LV","2026-03-02","2026-03-05","24"
"MYD","CON-8700","MYD2-LV Cable Pull-Term USS H-L to MCPs","2026-03-03","2026-03-24","120"
"EYD","CX-10727","EYD1-RMU Module 10 Level 3","2026-03-03","2026-03-04","8"
"EYD","CX-10728","EYD1-USS Module 09 Level 3","2026-03-03","2026-03-04","8"
"MYD","CON-114655","MYD2-Install PCW Building Risers-MCP-11","2026-03-03","2026-03-04","8"
"USS YARD","CN-F-Z02.EYD.S14.USS-18.1135","Pull,Term,Test & Torque Feeder from EY06-XFMR-USS-18 to EY06-SWGR-USS-18","2026-03-03","2026-03-04","8"
"SSS","CX-F-Z02.EYD.S14.L2.1508","L2 QC Electrical Install-EY06-SWGR-SSS-F","2026-03-03","2026-03-05","16"
"USS YARD","CX-F-Z02.EYD.S14.L2.1562","L2 QC Electrical Install-EY06-XFMR-USS-17","2026-03-03","2026-03-05","16"
"USS YARD","CN-F-Z02.EYD.S14.L2.3419","L2 QC Electrical Install-MY06-USS-CUB-7 (Control)","2026-03-03","2026-03-05","16"
"USS YARD","CN-F-Z02.EYD.S14.L2.3420","L2 QC Electrical Install-MY06-USS-CUB-9 (Control)","2026-03-03","2026-03-05","16"
"USS YARD","CN-F-Z02.EYD.S14.L2.3421","L2 QC Electrical Install-MY06-USS-CUB-11 (Control)","2026-03-03","2026-03-05","16"
"MCP","934879403","Install Conduit & CT Receptacles Conduit-MCP CTR 11,BUILDOUT","2026-03-03","2026-03-11","48"
"USS YARD","382816435","Test PDC 1+2 to FPH-USS-07,USS 7-LV","2026-03-03","2026-03-04","8"
"MCP","813819741","610 Motor Heater Wire Pulls-MCP CTR 09,BUILDOUT","2026-03-03","2026-03-05","16"
"USS YARD","028892568","Feeder Chiller (term,test,torque)-USS-011,USS 11-LV","2026-03-03","2026-03-10","40"
"EYD","CX-10742","EYD1-RMU Module 11 Level 3","2026-03-04","2026-03-05","8"
"EYD","CX-10743","EYD1-USS Module 10 Level 3","2026-03-04","2026-03-05","8"
"EYD","CX-11045","EYD2-Generator 06 L3","2026-03-04","2026-03-10","32"
"USS YARD","CN-F-Z02.EYD.S14.USS-19.1138","Pull,Term,Test & Torque Feeder from EY06-XFMR-USS-19 to EY06-SWGR-USS-19","2026-03-04","2026-03-05","8"
"USS YARD","CX-F-Z02.EYD.S14.L2.1565","L2 QC Electrical Install-EY06-XFMR-USS-18","2026-03-04","2026-03-06","16"
"USS YARD","CX-F-Z02.MYD.S21.L2.1924","L2 QC Electrical Install-MY06-SWGR-RMU-USS-CUB-7","2026-03-04","2026-03-06","16"
"USS YARD","CX-F-Z02.MYD.S21.L2.1929","L2 QC Electrical Install-MY06-SWGR-RMU-USS-CUB-9","2026-03-04","2026-03-06","16"
"USS YARD","CX-F-Z02.MYD.S21.L2.1934","L2 QC Electrical Install-MY06-SWGR-RMU-USS-CUB-11","2026-03-04","2026-03-06","16"
"EYD","CX-10753","EYD1-RMU Module 12 Level 3","2026-03-05","2026-03-06","8"
"EYD","CX-10754","EYD1-USS Module 11 Level 3","2026-03-05","2026-03-06","8"
"USS YARD","CN-F-Z02.EYD.S14.USS-20.1141","Pull,Term,Test & Torque Feeder from EY06-XFMR-USS-20 to EY06-SWGR-USS-20","2026-03-05","2026-03-06","8"
"USS YARD","CX-F-Z02.EYD.S14.L2.1568","L2 QC Electrical Install-EY06-XFMR-USS-19","2026-03-05","2026-03-09","16"
"USS YARD","653859082","Term PDC 1+2 to FPH-USS-09,USS 9-LV","2026-03-05","2026-03-09","16"
"MCP","813822594","Receptacles wire pulls & terms-MCP CTR 09,BUILDOUT","2026-03-05","2026-03-13","48"
"EYD","CX-10760","EYD1-RMU Module 13 Level 3","2026-03-08","2026-03-09","8"
"EYD","CX-10761","EYD1-USS Module 12 Level 3","2026-03-08","2026-03-09","8"
"USS YARD","CN-F-Z02.EYD.S14.USS-21.1144","Pull,Term,Test & Torque Feeder from EY06-XFMR-USS-21 to EY06-SWGR-USS-21","2026-03-08","2026-03-09","8"
"USS YARD","CX-F-Z02.EYD.S14.L2.1571","L2 QC Electrical Install-EY06-XFMR-USS-20","2026-03-08","2026-03-10","16"
"MCP","813883064","Roofing Membrane Install-MCP CTR 09,BUILDOUT","2026-03-08","2026-03-13","40"
"MCP","780870472","EFL / FG Wire Pulls-MCP CTR 07,BUILDOUT","2026-03-08","2026-03-11","24"
"EYD","CX-10770","EYD1-RMU Module 14 Level 3","2026-03-09","2026-03-10","8"
"EYD","CX-10771","EYD1-USS Module 13 Level 3","2026-03-09","2026-03-10","8"
"USS YARD","CN-F-Z02.EYD.S14.USS-22.1147","Pull,Term,Test & Torque Feeder from EY06-XFMR-USS-22 to EY06-SWGR-USS-22","2026-03-09","2026-03-10","8"
"USS YARD","CX-F-Z02.EYD.S14.L2.1574","L2 QC Electrical Install-EY06-XFMR-USS-21","2026-03-09","2026-03-11","16"
"USS YARD","CN-F-Z02.MYD.S24.USS-9.1887","Pull,Term,Test & Torque Feeder from MY06-SWGR-USS-CUB-9 to MCP9-Chiller","2026-03-09","2026-03-16","40"
"USS YARD","CX-F-Z02.MYD.S24.L2.1926","L2 QC Electrical Install-MY06-SWGR-USS-CUB-7","2026-03-09","2026-03-11","16"
"MCP","CX-F-Z02.MYD.S24.L2.1928","L2 QC Electrical Install-MCP-07-BDC","2026-03-09","2026-03-11","16"
"MYD","CN-F-Z02.MYD.S24.MYD.0004","Install Cable Tray at Z2 MYD USS-11","2026-03-09","2026-03-23","80"
"USS YARD","653855898","Torque PDC 1+2 to FPH-USS-09,USS 9-LV","2026-03-09","2026-03-10","8"
"MYD","CX-11042","MYD1-MCP4-Chiller Startup","2026-03-10","2026-03-25","88"
"EYD","CX-10775","EYD1-RMU Module 15 Level 3","2026-03-10","2026-03-11","8"
"EYD","CX-10776","EYD1-USS Module 14 Level 3","2026-03-10","2026-03-11","8"
"EYD","CX-11051","EYD2-Generator 07 L3","2026-03-10","2026-03-16","32"
"USS YARD","CN-F-Z02.EYD.S14.USS-23.1150","Pull,Term,Test & Torque Feeder from EY06-XFMR-USS-23 to EY06-SWGR-USS-23","2026-03-10","2026-03-11","8"
"USS YARD","CX-F-Z02.EYD.S14.L2.1577","L2 QC Electrical Install-EY06-XFMR-USS-22","2026-03-10","2026-03-12","16"
"USS YARD","028858207","BDC for MY-01-USS-011,USS 11-LV","2026-03-10","2026-03-17","40"
"USS YARD","653824278","Test PDC 1+2 to FPH-USS-09,USS 9-LV","2026-03-10","2026-03-11","8"
"EYD","CX-10785","EYD1-RMU Module 16 Level 3","2026-03-11","2026-03-12","8"
"EYD","CX-10786","EYD1-USS Module 15 Level 3","2026-03-11","2026-03-12","8"
"USS YARD","CN-F-Z02.EYD.S14.USS-24.1153","Pull,Term,Test & Torque Feeder from EY06-XFMR-USS-24 to EY06-SWGR-USS-24","2026-03-11","2026-03-12","8"
"USS YARD","CX-F-Z02.EYD.S14.L2.1580","L2 QC Electrical Install-EY06-XFMR-USS-23","2026-03-11","2026-03-13","16"
"MCP","934870244","Install EFL / FG Fixtures-MCP CTR 11,BUILDOUT","2026-03-11","2026-03-18","40"
"MCP","780839511","Heat Trace wire pulls-MCP CTR 07,BUILDOUT","2026-03-11","2026-03-19","48"
"MCP","934850075","610 Motor Wire Pulls-MCP CTR 11,BUILDOUT","2026-03-11","2026-03-13","16"
"EYD","CX-10791","EYD1-RMU Module 17 Level 3","2026-03-12","2026-03-13","8"
"EYD","CX-10792","EYD1-USS Module 16 Level 3","2026-03-12","2026-03-13","8"
"USS YARD","CN-F-Z02.EYD.S14.USS-25.1156","Pull,Term,Test & Torque Feeder from EY06-XFMR-USS-25 to EY06-SWGR-USS-25","2026-03-12","2026-03-13","8"
"USS YARD","CX-F-Z02.EYD.S14.L2.1583","L2 QC Electrical Install-EY06-XFMR-USS-24","2026-03-12","2026-03-16","16"
"EYD","CX-10806","EYD1-RMU Module 18 Level 3","2026-03-15","2026-03-16","8"
"EYD","CX-10807","EYD1-USS Module 17 Level 3","2026-03-15","2026-03-16","8"
"USS YARD","CN-F-Z02.EYD.S14.USS-26.1159","Pull,Term,Test & Torque Feeder from EY06-XFMR-USS-26 to EY06-SWGR-USS-26","2026-03-15","2026-03-16","8"
"USS YARD","CX-F-Z02.EYD.S14.L2.1586","L2 QC Electrical Install-EY06-XFMR-USS-25","2026-03-15","2026-03-17","16"
"MCP","813815318","EFL / FG Wire Pulls-MCP CTR 09,BUILDOUT","2026-03-15","2026-03-18","24"
"MCP","934885570","EFL / FG Wire Pulls-MCP CTR 11,BUILDOUT","2026-03-15","2026-03-23","48"
"EYD","CX-10818","EYD1-RMU Module 19 Level 3","2026-03-16","2026-03-17","8"
"EYD","CX-10819","EYD1-USS Module 18 Level 3","2026-03-16","2026-03-17","8"
"EYD","CX-11055","EYD2-Generator 08 L3","2026-03-16","2026-03-20","32"
"USS YARD","CX-F-Z02.EYD.S14.L2.1589","L2 QC Electrical Install-EY06-XFMR-USS-26","2026-03-16","2026-03-18","16"
"USS YARD","CN-F-Z02.MYD.S24.USS-9.1888","Pull,Term,Test & Torque Feeder from MY06-SWGR-USS-CUB-9 to MCP9-BDC","2026-03-16","2026-03-23","40"
"MCP","CX-F-Z02.MYD.S24.L2.1932","L2 QC Electrical Install-MCP9-Chiller","2026-03-16","2026-03-18","16"
"USS YARD","CN-F-Z02.DCH.S18.TB.163","Pull,Term,Test & Torque Feeder from EY06-SWGR-USS-1 to TAPBOX-40TOP","2026-03-16","2026-03-18","16"
"USS YARD","CN-F-Z02.DCH.S18.TB.167","Pull,Term,Test & Torque Feeder from EY06-SWGR-USS-1 to TAPBOX-41TOP","2026-03-16","2026-03-18","16"
"EYD","CX-10832","EYD1-RMU Module 20 Level 3","2026-03-17","2026-03-18","8"
"EYD","CX-10833","EYD1-USS Module 19 Level 3","2026-03-17","2026-03-18","8"
"USS YARD","028861180","Pull PDC 1+2 to FPH-USS-011,USS 11-LV","2026-03-17","2026-03-20","24"
"EYD","CX-10837","EYD1-RMU Module 21 Level 3","2026-03-18","2026-03-19","8"
"EYD","CX-10838","EYD1-USS Module 20 Level 3","2026-03-18","2026-03-19","8"
"USS YARD","CX-F-Z02.EYD.S14.L2.1515","L2 QC Electrical Install-EY06-SWGR-USS-1","2026-03-18","2026-03-20","16"
"USS YARD","CN-F-Z02.DCH.S18.TB.2176","Pull,Term,Test & Torque Feeder from EY06-SWGR-USS-2 to TAPBOX-43TOP","2026-03-18","2026-03-20","16"
"USS YARD","CN-F-Z02.DCH.S18.TB.2177","Pull,Term,Test & Torque Feeder from EY06-SWGR-USS-2 to TAPBOX-42TOP","2026-03-18","2026-03-20","16"
"USS YARD","CN-F-Z02.DCH.S18.TB.2178","Pull,Term,Test & Torque Feeder from EY06-SWGR-USS-2 to TAPBOX-39TOP","2026-03-18","2026-03-20","16"
"MCP","934854135","610 Motor Heater Wire Pulls-MCP CTR 11,BUILDOUT","2026-03-18","2026-03-20","16"
"MCP","813899890","Heat Trace wire pulls-MCP CTR 09,BUILDOUT","2026-03-18","2026-03-26","48"
"MYD","CX-11048","MYD1-MCP2 L4","2026-03-19","2026-03-26","40"
"EYD","CX-10846","EYD1-RMU Module 22 Level 3","2026-03-19","2026-03-20","8"
"EYD","CX-10847","EYD1-USS Module 21 Level 3","2026-03-19","2026-03-20","8"
"MCP","780820946","610 Motor & Heater Terms-MCP CTR 07,BUILDOUT","2026-03-19","2026-03-24","24"
"MCP","780816762","Basin Heater Wire Pulls/Terms-MCP CTR 07,BUILDOUT","2026-03-19","2026-03-24","24"
"EYD","CX-10854","EYD1-RMU Module 23 Level 3","2026-03-22","2026-03-23","8"
"EYD","CX-10855","EYD1-RMU Module 24 Level 3","2026-03-22","2026-03-23","8"
"EYD","CX-10856","EYD1-RMU Module 25 Level 3","2026-03-22","2026-03-23","8"
"EYD","CX-10857","EYD1-RMU Module 26 Level 3","2026-03-22","2026-03-23","8"
"EYD","CX-10858","EYD1-USS Module 22 Level 3","2026-03-22","2026-03-23","8"
"EYD","CX-11058","EYD2-Generator 09 L3","2026-03-22","2026-03-26","32"
"USS YARD","CX-F-Z02.EYD.S14.L2.1518","L2 QC Electrical Install-EY06-SWGR-USS-2","2026-03-22","2026-03-24","16"
"USS YARD","CN-F-Z02.DCH.S18.TB.159","Pull,Term,Test & Torque Feeder from EY06-SWGR-USS-3 to TAPBOX-40BOT","2026-03-22","2026-03-24","16"
"USS YARD","CN-F-Z02.DCH.S18.TB.171","Pull,Term,Test & Torque Feeder from EY06-SWGR-USS-3 to TAPBOX-42BOT","2026-03-22","2026-03-24","16"
"USS YARD","CN-F-Z02.DCH.S18.TB.175","Pull,Term,Test & Torque Feeder from EY06-SWGR-USS-3 to TAPBOX-44TOP","2026-03-22","2026-03-24","16"
"MCP","934843446","Receptacles wire pulls & terms-MCP CTR 11,BUILDOUT","2026-03-22","2026-03-30","48"
"USS YARD","028826624","Term PDC 1+2 to FPH-USS-011,USS 11-LV","2026-03-22","2026-03-24","16"
"EYD","CX-10862","EYD1-USS Module 23 Level 3","2026-03-23","2026-03-24","8"
"USS YARD","CN-F-Z02.MYD.S24.USS-11.1892","Pull,Term,Test & Torque Feeder from MY06-SWGR-USS-CUB-11 to MCP11-Chiller","2026-03-23","2026-03-30","40"
"USS YARD","CX-F-Z02.MYD.S24.L2.1931","L2 QC Electrical Install-MY06-SWGR-USS-CUB-9","2026-03-23","2026-03-25","16"
"MCP","CX-F-Z02.MYD.S24.L2.1933","L2 QC Electrical Install-MCP9-BDC","2026-03-23","2026-03-25","16"
"MCP","934808983","Roofing Membrane Install-MCP CTR 11,BUILDOUT","2026-03-23","2026-03-30","40"
"MYD","CX-11003","MYD2-RMU11 L3","2026-03-24","2026-04-01","48"
"EYD","CX-10866","EYD1-USS Module 24 Level 3","2026-03-24","2026-03-25","8"
"USS YARD","CX-10999","USS-CUB-07 L2 Yellow Tag","2026-03-24","2026-03-25","8"
"USS YARD","CX-F-Z02.EYD.S14.L2.1521","L2 QC Electrical Install-EY06-SWGR-USS-3","2026-03-24","2026-03-26","16"
"USS YARD","CN-F-Z02.DCH.S18.TB.2179","Pull,Term,Test & Torque Feeder from EY06-SWGR-USS-4 to TAPBOX-41BOT","2026-03-24","2026-03-26","16"
"USS YARD","CN-F-Z02.DCH.S18.TB.2180","Pull,Term,Test & Torque Feeder from EY06-SWGR-USS-4 to TAPBOX-43BOT","2026-03-24","2026-03-26","16"
"USS YARD","CN-F-Z02.DCH.S18.TB.2181","Pull,Term,Test & Torque Feeder from EY06-SWGR-USS-4 to TAPBOX-44BOT","2026-03-24","2026-03-26","16"
"USS YARD","028812461","Torque PDC 1+2 to FPH-USS-011,USS 11-LV","2026-03-24","2026-03-25","8"
"MCP","780870681","Cormaci Caulk Floor Joints-MCP CTR 07,BUILDOUT","2026-03-24","2026-03-30","32"
"MYD","CX-11054","MYD1-MCP6-Chiller Startup","2026-03-25","2026-04-08","80"
"MYD","CX-11014","MYD2-USS-CUB-7 L3","2026-03-25","2026-04-01","40"
"EYD","CX-10870","EYD1-USS Module 25 Level 3","2026-03-25","2026-03-26","8"
"MYD","CX-11030","MYD2-MCP-07-BDC & Rest of Startup","2026-03-25","2026-04-13","104"
"MYD","CX-10286","MYD2-MCP09-L2 Yellow Tag","2026-03-25","2026-04-01","40"
"MYD","CX-11264","MYD2-Cut Over USS-CUB-7 L3","2026-03-25","2026-03-27","16"
"USS YARD","028885512","Test PDC 1+2 to FPH-USS-011,USS 11-LV","2026-03-25","2026-03-26","8"
"EYD","CX-10874","EYD1-USS Module 26 Level 3","2026-03-26","2026-03-27","8"
"EYD","CX-11060","EYD2-Generator 10 L3","2026-03-26","2026-04-01","32"
"USS YARD","CX-F-Z02.EYD.S14.L2.1524","L2 QC Electrical Install-EY06-SWGR-USS-4","2026-03-26","2026-03-30","16"
"USS YARD","CN-F-Z02.DCH.S18.TB.179","Pull,Term,Test & Torque Feeder from EY06-SWGR-USS-5 to TAPBOX-45BOT","2026-03-26","2026-03-30","16"
"USS YARD","CN-F-Z02.DCH.S18.TB.187","Pull,Term,Test & Torque Feeder from EY06-SWGR-USS-5 to TAPBOX-46TOP","2026-03-26","2026-03-30","16"
"USS YARD","CN-F-Z02.DCH.S18.TB.191","Pull,Term,Test & Torque Feeder from EY06-SWGR-USS-5 to TAPBOX-47TOP","2026-03-26","2026-03-30","16"
"MCP","813851238","610 Motor & Heater Terms-MCP CTR 09,BUILDOUT","2026-03-26","2026-03-31","24"
"MCP","813841853","Basin Heater Wire Pulls/Terms-MCP CTR 09,BUILDOUT","2026-03-26","2026-03-31","24"
"EYD","CX-11063","EYD2-SSS-G Module Level 3","2026-03-30","2026-04-03","32"
"USS YARD","CX-F-Z02.EYD.S14.L2.1527","L2 QC Electrical Install-EY06-SWGR-USS-5","2026-03-30","2026-04-01","16"
"USS YARD","CN-F-Z02.DCH.S18.TB.2182","Pull,Term,Test & Torque Feeder from EY06-SWGR-USS-6 to TAPBOX-49TOP","2026-03-30","2026-04-01","16"
"USS YARD","CN-F-Z02.DCH.S18.TB.2183","Pull,Term,Test & Torque Feeder from EY06-SWGR-USS-6 to TAPBOX-48TOP","2026-03-30","2026-04-01","16"
"USS YARD","CN-F-Z02.DCH.S18.TB.2184","Pull,Term,Test & Torque Feeder from EY06-SWGR-USS-6 to TAPBOX-45TOP","2026-03-30","2026-04-01","16"
"USS YARD","CN-F-Z02.MYD.S24.USS-11.1893","Pull,Term,Test & Torque Feeder from MY06-SWGR-USS-CUB-11 to MCP11-BDC","2026-03-30","2026-04-06","40"
"MCP","CX-F-Z02.MYD.S24.L2.1937","L2 QC Electrical Install-MCP11-Chiller","2026-03-30","2026-04-01","16"
"MCP","934836439","EFL / FG Wire Pulls-MCP CTR 11,BUILDOUT","2026-03-30","2026-04-02","24"
"MCP","813804389","Cormaci Caulk Floor Joints-MCP CTR 09,BUILDOUT","2026-03-31","2026-04-06","32"
"MYD","CX-11027","MYD2-USS-CUB-9 L3","2026-04-01","2026-04-08","40"
"MYD","CX-11015","MYD2-RMU9 L3","2026-04-01","2026-04-08","40"
"EYD","CX-11064","EYD2-Generator 11 L3","2026-04-01","2026-04-07","32"
"MYD","CX-11031","MYD2-MCP-07-Cooling Tower Startup","2026-04-01","2026-04-08","40"
"MYD","CX-11032","MYD2-MCP-07-Chiller Startup","2026-04-01","2026-04-15","80"
"USS YARD","CX-F-Z02.EYD.S14.L2.1530","L2 QC Electrical Install-EY06-SWGR-USS-6","2026-04-01","2026-04-03","16"
"USS YARD","CN-F-Z02.DCH.S18.TB.183","Pull,Term,Test & Torque Feeder from EY06-SWGR-USS-7 to TAPBOX-46BOT","2026-04-01","2026-04-03","16"
"USS YARD","CN-F-Z02.DCH.S18.TB.195","Pull,Term,Test & Torque Feeder from EY06-SWGR-USS-7 to TAPBOX-48BOT","2026-04-01","2026-04-03","16"
"USS YARD","CN-F-Z02.DCH.S18.TB.199","Pull,Term,Test & Torque Feeder from EY06-SWGR-USS-7 to TAPBOX-50TOP","2026-04-01","2026-04-03","16"
"MCP","934866426","Heat Trace wire pulls-MCP CTR 11,BUILDOUT","2026-04-02","2026-04-10","48"
"MYD","CX-11059","MYD1-MCP4 L4","2026-04-05","2026-04-10","40"
"EYD","CX-11067","EYD2-RMU Module 01 Level 3","2026-04-05","2026-04-06","8"
"USS YARD","CX-F-Z02.EYD.S14.L2.1533","L2 QC Electrical Install-EY06-SWGR-USS-7","2026-04-05","2026-04-07","16"
"USS YARD","CN-F-Z02.DCH.S18.TB.2185","Pull,Term,Test & Torque Feeder from EY06-SWGR-USS-8 to TAPBOX-47BOT","2026-04-05","2026-04-07","16"
"USS YARD","CN-F-Z02.DCH.S18.TB.2186","Pull,Term,Test & Torque Feeder from EY06-SWGR-USS-8 to TAPBOX-49BOT","2026-04-05","2026-04-07","16"
"USS YARD","CN-F-Z02.DCH.S18.TB.2187","Pull,Term,Test & Torque Feeder from EY06-SWGR-USS-8 to TAPBOX-50BOT","2026-04-05","2026-04-07","16"
"EYD","CX-11068","EYD2-RMU Module 02 Level 3","2026-04-06","2026-04-07","8"
"EYD","CX-11069","EYD2-USS Module 01 Level 3","2026-04-06","2026-04-07","8"
"DCH","CX-11071","DCH2-Row 42 Top L3","2026-04-06","2026-04-07","8"
"USS YARD","CX-F-Z02.MYD.S24.L2.1936","L2 QC Electrical Install-MY06-SWGR-USS-CUB-11","2026-04-06","2026-04-08","16"
"MCP","CX-F-Z02.MYD.S24.L2.1938","L2 QC Electrical Install-MCP11-BDC","2026-04-06","2026-04-08","16"
"EYD","CX-11073","EYD2-RMU Module 03 Level 3","2026-04-07","2026-04-08","8"
"EYD","CX-11074","EYD2-USS Module 02 Level 3","2026-04-07","2026-04-08","8"
"EYD","CX-11070","EYD2-Generator 12 L3","2026-04-07","2026-04-13","32"
"DCH","CX-11075","DCH2-Row 41 Top L3","2026-04-07","2026-04-08","8"
"DCH","CX-11076","DCH2-Row 40 Top L3","2026-04-07","2026-04-08","8"
"DCH","CX-11077","DCH2-Row 39 Bottom L3","2026-04-07","2026-04-08","8"
"USS YARD","CX-F-Z02.EYD.S14.L2.1536","L2 QC Electrical Install-EY06-SWGR-USS-8","2026-04-07","2026-04-09","16"
"USS YARD","CN-F-Z02.DCH.S18.TB.203","Pull,Term,Test & Torque Feeder from EY06-SWGR-USS-9 to TAPBOX-51BOT","2026-04-07","2026-04-09","16"
"USS YARD","CN-F-Z02.DCH.S18.TB.211","Pull,Term,Test & Torque Feeder from EY06-SWGR-USS-9 to TAPBOX-52TOP","2026-04-07","2026-04-09","16"
"USS YARD","CN-F-Z02.DCH.S18.TB.215","Pull,Term,Test & Torque Feeder from EY06-SWGR-USS-9 to TAPBOX-53TOP","2026-04-07","2026-04-09","16"
"MYD","CX-11028","MYD2-RMU7 L3","2026-04-08","2026-04-15","40"
"EYD","CX-11078","EYD2-RMU Module 04 Level 3","2026-04-08","2026-04-09","8"
"EYD","CX-11079","EYD2-USS Module 03 Level 3","2026-04-08","2026-04-09","8"
"DCH","CX-11080","DCH2-Row 39 Top L3","2026-04-08","2026-04-09","8"
"MYD","CX-11044","MYD2-MCP11-L2 Yellow Tag","2026-04-08","2026-04-15","40"
"MYD","CX-11259","MYD2-Cut Over USS-CUB-9 L3","2026-04-08","2026-04-10","16"
"EYD","CX-11081","EYD2-RMU Module 05 Level 3","2026-04-09","2026-04-10","8"
"EYD","CX-11082","EYD2-USS Module 04 Level 3","2026-04-09","2026-04-10","8"
"DCH","CX-11083","DCH2-Row 44 Top L3","2026-04-09","2026-04-10","8"
"DCH","CX-11084","DCH2-Row 42 Bottom L3","2026-04-09","2026-04-10","8"
"DCH","CX-11085","DCH2-Row 40 Bottom L3","2026-04-09","2026-04-10","8"
"USS YARD","CX-F-Z02.EYD.S14.L2.1539","L2 QC Electrical Install-EY06-SWGR-USS-9","2026-04-09","2026-04-13","16"
"USS YARD","CN-F-Z02.DCH.S18.TB.2188","Pull,Term,Test & Torque Feeder from EY06-SWGR-USS-10 to TAPBOX-55TOP","2026-04-09","2026-04-13","16"
"USS YARD","CN-F-Z02.DCH.S18.TB.2189","Pull,Term,Test & Torque Feeder from EY06-SWGR-USS-10 to TAPBOX-54TOP","2026-04-09","2026-04-13","16"
"USS YARD","CN-F-Z02.DCH.S18.TB.2190","Pull,Term,Test & Torque Feeder from EY06-SWGR-USS-10 to TAPBOX-51TOP","2026-04-09","2026-04-13","16"
"EYD","CX-11086","EYD2-RMU Module 06 Level 3","2026-04-12","2026-04-13","8"
"EYD","CX-11087","EYD2-USS Module 05 Level 3","2026-04-12","2026-04-13","8"
"MYD","CX-11053","MYD2-MCP9-Cooling Tower Startup","2026-04-12","2026-04-17","40"
"DCH","CX-11089","DCH2-Row 44 Bottom L3","2026-04-12","2026-04-13","8"
"DCH","CX-11090","DCH2-Row 43 Bottom L3","2026-04-12","2026-04-13","8"
"DCH","CX-11091","DCH2-Row 41 Bottom L3","2026-04-12","2026-04-13","8"
"DCH","CX-11092","DCH2-L3 Aisle 20","2026-04-12","2026-04-13","8"
"MCP","934853544","Basin Heater Wire Pulls/Terms-MCP CTR 11,BUILDOUT","2026-04-12","2026-04-15","24"
"MCP","934863416","610 Motor & Heater Terms-MCP CTR 11,BUILDOUT","2026-04-12","2026-04-15","24"
"EYD","CX-11093","EYD2-RMU Module 07 Level 3","2026-04-13","2026-04-14","8"
"EYD","CX-11094","EYD2-USS Module 06 Level 3","2026-04-13","2026-04-14","8"
"EYD","CX-11088","EYD2-Generator 13 L3","2026-04-13","2026-04-17","32"
"EYD","CX-11109","EYD2-SSS-H Module Level 3","2026-04-13","2026-04-17","32"
"MYD","CX-11050","MYD2-MCP9-BDC & Rest of Startup","2026-04-13","2026-04-30","104"
"DCH","CX-11095","DCH2-Row 47 Top L3","2026-04-13","2026-04-14","8"
"DCH","CX-11096","DCH2-Row 46 Top L3","2026-04-13","2026-04-14","8"
"DCH","CX-11097","DCH2-Row 45 Bottom L3","2026-04-13","2026-04-14","8"
"DCH","CX-11098","DCH2-Aisle 21 L3","2026-04-13","2026-04-14","8"
"DCH","CX-11099","DCH2-Aisle 22 L3","2026-04-13","2026-04-14","8"
"USS YARD","CX-F-Z02.EYD.S14.L2.1542","L2 QC Electrical Install-EY06-SWGR-USS-10","2026-04-13","2026-04-15","16"
"USS YARD","CN-F-Z02.DCH.S18.TB.207","Pull,Term,Test & Torque Feeder from EY06-SWGR-USS-11 to TAPBOX-52BOT","2026-04-13","2026-04-15","16"
"USS YARD","CN-F-Z02.DCH.S18.TB.219","Pull,Term,Test & Torque Feeder from EY06-SWGR-USS-11 to TAPBOX-54BOT","2026-04-13","2026-04-15","16"
"USS YARD","CN-F-Z02.DCH.S18.TB.223","Pull,Term,Test & Torque Feeder from EY06-SWGR-USS-11 to TAPBOX-56TOP","2026-04-13","2026-04-15","16"
"EYD","CX-11102","EYD2-RMU Module 08 Level 3","2026-04-14","2026-04-15","8"
"EYD","CX-11103","EYD2-USS Module 07 Level 3","2026-04-14","2026-04-15","8"
"DCH","CX-11104","DCH2-Row 49 Top L3","2026-04-14","2026-04-15","8"
"DCH","CX-11105","DCH2-Row 48 Top L3","2026-04-14","2026-04-15","8"
"DCH","CX-11106","DCH2-Row 45 Top L3","2026-04-14","2026-04-15","8"
"MYD","CX-11043","MYD2-USS-CUB-11 L3","2026-04-15","2026-04-23","48"
"EYD","CX-11107","EYD2-RMU Module 09 Level 3","2026-04-15","2026-04-16","8"
"EYD","CX-11108","EYD2-USS Module 08 Level 3","2026-04-15","2026-04-16","8"
"MYD","CX-11046","MYD2-MCP9-Chiller Startup","2026-04-15","2026-04-29","80"
"DCH","CX-11110","DCH2-Row 50 Top L3","2026-04-15","2026-04-16","8"
"DCH","CX-11111","DCH2-Row 48 Bottom L3","2026-04-15","2026-04-16","8"
"DCH","CX-11112","DCH2-Row 46 Bottom L3","2026-04-15","2026-04-16","8"
"USS YARD","CX-F-Z02.EYD.S14.L2.1545","L2 QC Electrical Install-EY06-SWGR-USS-11","2026-04-15","2026-04-17","16"
"USS YARD","CN-F-Z02.DCH.S18.TB.2191","Pull,Term,Test & Torque Feeder from EY06-SWGR-USS-12 to TAPBOX-53BOT","2026-04-15","2026-04-17","16"
"USS YARD","CN-F-Z02.DCH.S18.TB.2192","Pull,Term,Test & Torque Feeder from EY06-SWGR-USS-12 to TAPBOX-55BOT","2026-04-15","2026-04-17","16"
"USS YARD","CN-F-Z02.DCH.S18.TB.2193","Pull,Term,Test & Torque Feeder from EY06-SWGR-USS-12 to TAPBOX-56BOT","2026-04-15","2026-04-17","16"
"MCP","934805030","Cormaci Caulk Floor Joints-MCP CTR 11,BUILDOUT","2026-04-15","2026-04-21","32"
"EYD","CX-11113","EYD2-RMU Module 10 Level 3","2026-04-16","2026-04-17","8"
"EYD","CX-11114","EYD2-USS Module 09 Level 3","2026-04-16","2026-04-17","8"
"DCH","CX-11116","DCH2-Row 50 Bottom L3","2026-04-16","2026-04-17","8"
"DCH","CX-11117","DCH2-Row 49 Bottom L3","2026-04-16","2026-04-17","8"
"DCH","CX-11118","DCH2-Row 47 Bottom L3","2026-04-16","2026-04-17","8"
"DCH","CX-11119","DCH2-Aisle 23 L3","2026-04-16","2026-04-17","8"
"EYD","CX-11120","EYD2-RMU Module 11 Level 3","2026-04-19","2026-04-20","8"
"EYD","CX-11121","EYD2-USS Module 10 Level 3","2026-04-19","2026-04-20","8"
"EYD","CX-11115","EYD2-Generator 14 L3","2026-04-19","2026-04-23","32"
"DCH","CX-11123","DCH2-Row 53 Top L3","2026-04-19","2026-04-20","8"
"DCH","CX-11124","DCH2-Row 52 Top L3","2026-04-19","2026-04-20","8"
"DCH","CX-11125","DCH2-Row 51 Bottom L3","2026-04-19","2026-04-20","8"
"DCH","CX-11126","DCH2-Aisle 24 L3","2026-04-19","2026-04-20","8"
"DCH","CX-11127","DCH2-Aisle 25 L3","2026-04-19","2026-04-20","8"
"USS YARD","CX-F-Z02.EYD.S14.L2.1548","L2 QC Electrical Install-EY06-SWGR-USS-12","2026-04-19","2026-04-21","16"
"USS YARD","CN-F-Z02.DCH.S18.TB.227","Pull,Term,Test & Torque Feeder from EY06-SWGR-USS-13 to TAPBOX-57BOT","2026-04-19","2026-04-21","16"
"USS YARD","CN-F-Z02.DCH.S18.TB.235","Pull,Term,Test & Torque Feeder from EY06-SWGR-USS-13 to TAPBOX-58TOP","2026-04-19","2026-04-21","16"
"USS YARD","CN-F-Z02.DCH.S18.TB.239","Pull,Term,Test & Torque Feeder from EY06-SWGR-USS-13 to TAPBOX-59TOP","2026-04-19","2026-04-21","16"
"MYD","CX-11072","MYD1-MCP6 L4","2026-04-20","2026-04-27","40"
"EYD","CX-11128","EYD2-RMU Module 12 Level 3","2026-04-20","2026-04-21","8"
"EYD","CX-11129","EYD2-USS Module 11 Level 3","2026-04-20","2026-04-21","8"
"DCH","CX-11130","DCH2-Row 55 Top L3","2026-04-20","2026-04-21","8"
"DCH","CX-11131","DCH2-Row 54 Top L3","2026-04-20","2026-04-21","8"
"DCH","CX-11132","DCH2-Row 51 Top L3","2026-04-20","2026-04-21","8"
"EYD","CX-11133","EYD2-RMU Module 13 Level 3","2026-04-21","2026-04-22","8"
"EYD","CX-11134","EYD2-USS Module 12 Level 3","2026-04-21","2026-04-22","8"
"DCH","CX-11136","DCH2-Row 56 Top L3","2026-04-21","2026-04-22","8"
"DCH","CX-11137","DCH2-Row 54 Bottom L3","2026-04-21","2026-04-22","8"
"DCH","CX-11138","DCH2-Row 52 Bottom L3","2026-04-21","2026-04-22","8"
"USS YARD","CX-F-Z02.EYD.S14.L2.1551","L2 QC Electrical Install-EY06-SWGR-USS-13","2026-04-21","2026-04-23","16"
"USS YARD","CN-F-Z02.DCH.S18.TB.2194","Pull,Term,Test & Torque Feeder from EY06-SWGR-USS-14 to TAPBOX-61TOP","2026-04-21","2026-04-23","16"
"USS YARD","CN-F-Z02.DCH.S18.TB.2195","Pull,Term,Test & Torque Feeder from EY06-SWGR-USS-14 to TAPBOX-60TOP","2026-04-21","2026-04-23","16"
"USS YARD","CN-F-Z02.DCH.S18.TB.2196","Pull,Term,Test & Torque Feeder from EY06-SWGR-USS-14 to TAPBOX-57TOP","2026-04-21","2026-04-23","16"
"EYD","CX-11140","EYD2-RMU Module 14 Level 3","2026-04-22","2026-04-23","8"
"EYD","CX-11141","EYD2-USS Module 13 Level 3","2026-04-22","2026-04-23","8"
"DCH","CX-11143","DCH2-Row 56 Bottom L3","2026-04-22","2026-04-23","8"
"DCH","CX-11144","DCH2-Row 55 Bottom L3","2026-04-22","2026-04-23","8"
"DCH","CX-11145","DCH2-Row 53 Bottom L3","2026-04-22","2026-04-23","8"
"DCH","CX-11146","DCH2-Aisle 26 L3","2026-04-22","2026-04-23","8"
"EYD","CX-11148","EYD2-RMU Module 15 Level 3","2026-04-23","2026-04-24","8"
"EYD","CX-11149","EYD2-USS Module 14 Level 3","2026-04-23","2026-04-24","8"
"EYD","CX-11142","EYD2-Generator 15 L3","2026-04-23","2026-04-29","32"
"MYD","CX-11061","MYD2-MCP11-BDC & Rest of Startup","2026-04-23","2026-05-13","112"
"DCH","CX-11150","DCH2-Row 59 Top L3","2026-04-23","2026-04-24","8"
"DCH","CX-11151","DCH2-Row 58 Top L3","2026-04-23","2026-04-24","8"
"DCH","CX-11152","DCH2-Row 57 Bottom L3","2026-04-23","2026-04-24","8"
"DCH","CX-11153","DCH2-Aisle 27 L3","2026-04-23","2026-04-24","8"
"DCH","CX-11154","DCH2-Aisle 28 L3","2026-04-23","2026-04-24","8"
"USS YARD","CX-F-Z02.EYD.S14.L2.1554","L2 QC Electrical Install-EY06-SWGR-USS-14","2026-04-23","2026-04-27","16"
"USS YARD","CN-F-Z02.DCH.S18.TB.231","Pull,Term,Test & Torque Feeder from EY06-SWGR-USS-15 to TAPBOX-58BOT","2026-04-23","2026-04-27","16"
"USS YARD","CN-F-Z02.DCH.S18.TB.243","Pull,Term,Test & Torque Feeder from EY06-SWGR-USS-15 to TAPBOX-60BOT","2026-04-23","2026-04-27","16"
"USS YARD","CN-F-Z02.DCH.S18.TB.247","Pull,Term,Test & Torque Feeder from EY06-SWGR-USS-15 to TAPBOX-62TOP","2026-04-23","2026-04-27","16"
"MYD","CX-11254","MYD2-Cut Over USS-CUB-11 L3","2026-04-23","2026-04-27","16"
"EYD","CX-11156","EYD2-RMU Module 16 Level 3","2026-04-26","2026-04-27","8"
"EYD","CX-11157","EYD2-USS Module 15 Level 3","2026-04-26","2026-04-27","8"
"DCH","CX-11158","DCH2-Row 60 Top L3","2026-04-26","2026-04-27","8"
"DCH","CX-11159","DCH2-Row 57 Top L3","2026-04-26","2026-04-27","8"
"DCH","CX-11160","DCH2-Row 61 Top L3","2026-04-26","2026-04-27","8"
"EYD","CX-11161","EYD2-RMU Module 17 Level 3","2026-04-27","2026-04-28","8"
"EYD","CX-11162","EYD2-USS Module 16 Level 3","2026-04-27","2026-04-28","8"
"MYD","CX-11066","MYD2-MCP11-Cooling Tower Startup","2026-04-27","2026-05-04","40"
"DCH","CX-11163","DCH2-Row 62 Top L3","2026-04-27","2026-04-28","8"
"DCH","CX-11164","DCH2-Row 60 Bottom L3","2026-04-27","2026-04-28","8"
"DCH","CX-11165","DCH2-Row 58 Bottom L3","2026-04-27","2026-04-28","8"
"USS YARD","CX-F-Z02.EYD.S14.L2.1557","L2 QC Electrical Install-EY06-SWGR-USS-15","2026-04-27","2026-04-29","16"
"USS YARD","CN-F-Z02.DCH.S18.TB.2197","Pull,Term,Test & Torque Feeder from EY06-SWGR-USS-16 to TAPBOX-59BOT","2026-04-27","2026-04-29","16"
"USS YARD","CN-F-Z02.DCH.S18.TB.2198","Pull,Term,Test & Torque Feeder from EY06-SWGR-USS-16 to TAPBOX-61BOT","2026-04-27","2026-04-29","16"
"USS YARD","CN-F-Z02.DCH.S18.TB.2199","Pull,Term,Test & Torque Feeder from EY06-SWGR-USS-16 to TAPBOX-62BOT","2026-04-27","2026-04-29","16"
"EYD","CX-11166","EYD2-RMU Module 18 Level 3","2026-04-28","2026-04-29","8"
"EYD","CX-11167","EYD2-USS Module 17 Level 3","2026-04-28","2026-04-29","8"
"DCH","CX-11169","DCH2-Row 62 Bottom L3","2026-04-28","2026-04-29","8"
"DCH","CX-11170","DCH2-Row 61 Bottom L3","2026-04-28","2026-04-29","8"
"DCH","CX-11171","DCH2-Row 59 Bottom L3","2026-04-28","2026-04-29","8"
"DCH","CX-11172","DCH2-Aisle 29 L3","2026-04-28","2026-04-29","8"
"MYD","CX-11100","MYD2-MCP-07 L4","2026-04-29","2026-05-08","56"
"EYD","CX-11173","EYD2-RMU Module 19 Level 3","2026-04-29","2026-04-30","8"
"EYD","CX-11174","EYD2-USS Module 18 Level 3","2026-04-29","2026-04-30","8"
"EYD","CX-11168","EYD2-Generator 16 L3","2026-04-29","2026-05-05","32"
"MYD","CX-11057","MYD2-MCP11-Chiller Startup","2026-04-29","2026-05-13","80"
"DCH","CX-11175","DCH2-Row 65 Top L3","2026-04-29","2026-04-30","8"
"DCH","CX-11176","DCH2-Row 64 Top L3","2026-04-29","2026-04-30","8"
"DCH","CX-11177","DCH2-Row 63 Bottom L3","2026-04-29","2026-04-30","8"
"DCH","CX-11178","DCH2-Aisle 31 L3","2026-04-29","2026-04-30","8"
"DCH","CX-11179","DCH2-Aisle 30 L3","2026-04-29","2026-04-30","8"
"USS YARD","CX-F-Z02.EYD.S14.L2.1560","L2 QC Electrical Install-EY06-SWGR-USS-16","2026-04-29","2026-05-01","16"
"USS YARD","CN-F-Z02.DCH.S18.TB.251","Pull,Term,Test & Torque Feeder from EY06-SWGR-USS-17 to TAPBOX-63BOT","2026-04-29","2026-05-01","16"
"USS YARD","CN-F-Z02.DCH.S18.TB.259","Pull,Term,Test & Torque Feeder from EY06-SWGR-USS-17 to TAPBOX-64TOP","2026-04-29","2026-05-01","16"
"USS YARD","CN-F-Z02.DCH.S18.TB.263","Pull,Term,Test & Torque Feeder from EY06-SWGR-USS-17 to TAPBOX-65TOP","2026-04-29","2026-05-01","16"
"EYD","CX-11180","EYD2-RMU Module 20 Level 3","2026-04-30","2026-05-01","8"
"EYD","CX-11181","EYD2-USS Module 19 Level 3","2026-04-30","2026-05-01","8"
"DCH","CX-11182","DCH2-Row 67 Top L3","2026-04-30","2026-05-01","8"
"DCH","CX-11183","DCH2-Row 66 Top L3","2026-04-30","2026-05-01","8"
"DCH","CX-11184","DCH2-Row 63 Top L3","2026-04-30","2026-05-01","8"
"EYD","CX-11185","EYD2-RMU Module 21 Level 3","2026-05-03","2026-05-04","8"
"EYD","CX-11186","EYD2-USS Module 20 Level 3","2026-05-03","2026-05-04","8"
"DCH","CX-11187","DCH2-Row 68 Top L3","2026-05-03","2026-05-04","8"
"DCH","CX-11188","DCH2-Row 66 Bottom L3","2026-05-03","2026-05-04","8"
"DCH","CX-11189","DCH2-Row 64 Bottom L3","2026-05-03","2026-05-04","8"
"USS YARD","CX-F-Z02.EYD.S14.L2.1563","L2 QC Electrical Install-EY06-SWGR-USS-17","2026-05-03","2026-05-05","16"
"USS YARD","CN-F-Z02.DCH.S18.TB.2200","Pull,Term,Test & Torque Feeder from EY06-SWGR-USS-18 to TAPBOX-67TOP","2026-05-03","2026-05-05","16"
"USS YARD","CN-F-Z02.DCH.S18.TB.2201","Pull,Term,Test & Torque Feeder from EY06-SWGR-USS-18 to TAPBOX-66TOP","2026-05-03","2026-05-05","16"
"USS YARD","CN-F-Z02.DCH.S18.TB.2202","Pull,Term,Test & Torque Feeder from EY06-SWGR-USS-18 to TAPBOX-63TOP","2026-05-03","2026-05-05","16"
"EYD","CX-11190","EYD2-RMU Module 22 Level 3","2026-05-04","2026-05-05","8"
"EYD","CX-11191","EYD2-USS Module 21 Level 3","2026-05-04","2026-05-05","8"
"DCH","CX-11193","DCH2-Row 68 Bottom L3","2026-05-04","2026-05-05","8"
"DCH","CX-11194","DCH2-Row 67 Bottom L3","2026-05-04","2026-05-05","8"
"DCH","CX-11195","DCH2-Row 65 Bottom L3","2026-05-04","2026-05-05","8"
"DCH","CX-11196","DCH2-Aisle 32 L3","2026-05-04","2026-05-05","8"
"EYD","CX-11198","EYD2-RMU Module 23 Level 3","2026-05-05","2026-05-06","8"
"EYD","CX-11199","EYD2-USS Module 22 Level 3","2026-05-05","2026-05-06","8"
"EYD","CX-11192","EYD2-Generator 17 L3","2026-05-05","2026-05-11","32"
"DCH","CX-11200","DCH2-Row 71 Top L3","2026-05-05","2026-05-06","8"
"DCH","CX-11201","DCH2-Row 70 Top L3","2026-05-05","2026-05-06","8"
"DCH","CX-11202","DCH2-Row 69 Bottom L3","2026-05-05","2026-05-06","8"
"DCH","CX-11203","DCH2-Aisle 33 L3","2026-05-05","2026-05-06","8"
"DCH","CX-11204","DCH2-Aisle 34 L3","2026-05-05","2026-05-06","8"
"USS YARD","CX-F-Z02.EYD.S14.L2.1566","L2 QC Electrical Install-EY06-SWGR-USS-18","2026-05-05","2026-05-07","16"
"USS YARD","CN-F-Z02.DCH.S18.TB.255","Pull,Term,Test & Torque Feeder from EY06-SWGR-USS-19 to TAPBOX-64BOT","2026-05-05","2026-05-07","16"
"USS YARD","CN-F-Z02.DCH.S18.TB.267","Pull,Term,Test & Torque Feeder from EY06-SWGR-USS-19 to TAPBOX-66BOT","2026-05-05","2026-05-07","16"
"USS YARD","CN-F-Z02.DCH.S18.TB.271","Pull,Term,Test & Torque Feeder from EY06-SWGR-USS-19 to TAPBOX-68TOP","2026-05-05","2026-05-07","16"
"EYD","CX-11205","EYD2-RMU Module 24 Level 3","2026-05-06","2026-05-07","8"
"EYD","CX-11206","EYD2-USS Module 23 Level 3","2026-05-06","2026-05-07","8"
"DCH","CX-11207","DCH2-Row 73 Top L3","2026-05-06","2026-05-07","8"
"DCH","CX-11208","DCH2-Row 72 Top L3","2026-05-06","2026-05-07","8"
"DCH","CX-11209","DCH2-Row 69 Top L3","2026-05-06","2026-05-07","8"
"GPS","CN-F-Z02.EYD.S14.PRN.074","Splice & Test PRN Fiber at EY06-GPS","2026-05-06","2026-06-02","144"
"EYD","CX-11210","EYD2-RMU Module 25 Level 3","2026-05-07","2026-05-08","8"
"EYD","CX-11211","EYD2-USS Module 24 Level 3","2026-05-07","2026-05-08","8"
"DCH","CX-11212","DCH2-Row 74 Top L3","2026-05-07","2026-05-08","8"
"DCH","CX-11213","DCH2-Row 72 Bottom L3","2026-05-07","2026-05-08","8"
"DCH","CX-11214","DCH2-Row 70 Bottom L3","2026-05-07","2026-05-08","8"
"USS YARD","CX-F-Z02.EYD.S14.L2.1569","L2 QC Electrical Install-EY06-SWGR-USS-19","2026-05-07","2026-05-11","16"
"USS YARD","CN-F-Z02.DCH.S18.TB.2203","Pull,Term,Test & Torque Feeder from EY06-SWGR-USS-20 to TAPBOX-65BOT","2026-05-07","2026-05-11","16"
"USS YARD","CN-F-Z02.DCH.S18.TB.2204","Pull,Term,Test & Torque Feeder from EY06-SWGR-USS-20 to TAPBOX-67BOT","2026-05-07","2026-05-11","16"
"USS YARD","CN-F-Z02.DCH.S18.TB.2205","Pull,Term,Test & Torque Feeder from EY06-SWGR-USS-20 to TAPBOX-68BOT","2026-05-07","2026-05-11","16"
"EYD","CX-11215","EYD2-RMU Module 26 Level 3","2026-05-10","2026-05-11","8"
"EYD","CX-11216","EYD2-USS Module 25 Level 3","2026-05-10","2026-05-11","8"
"DCH","CX-11217","DCH2-Row 74 Bottom L3","2026-05-10","2026-05-11","8"
"DCH","CX-11218","DCH2-Row 73 Bottom L3","2026-05-10","2026-05-11","8"
"DCH","CX-11219","DCH2-Row 71 Bottom L3","2026-05-10","2026-05-11","8"
"DCH","CX-11220","DCH2-Aisle 35 L3","2026-05-10","2026-05-11","8"
"EYD","CX-11221","EYD2-USS Module 26 Level 3","2026-05-11","2026-05-12","8"
"DCH","CX-11222","DCH2-Row 76 Top L3","2026-05-11","2026-05-12","8"
"DCH","CX-11223","DCH2-Row 75 Bottom L3","2026-05-11","2026-05-12","8"
"DCH","CX-11224","DCH2-Aisle 36 L3","2026-05-11","2026-05-12","8"
"DCH","CX-11225","DCH2-Aisle 37 L3","2026-05-11","2026-05-12","8"
"USS YARD","CX-F-Z02.EYD.S14.L2.1572","L2 QC Electrical Install-EY06-SWGR-USS-20","2026-05-11","2026-05-13","16"
"USS YARD","CN-F-Z02.DCH.S18.TB.275","Pull,Term,Test & Torque Feeder from EY06-SWGR-USS-21 to TAPBOX-69BOT","2026-05-11","2026-05-13","16"
"USS YARD","CN-F-Z02.DCH.S18.TB.283","Pull,Term,Test & Torque Feeder from EY06-SWGR-USS-21 to TAPBOX-70TOP","2026-05-11","2026-05-13","16"
"USS YARD","CN-F-Z02.DCH.S18.TB.287","Pull,Term,Test & Torque Feeder from EY06-SWGR-USS-21 to TAPBOX-71TOP","2026-05-11","2026-05-13","16"
"DCH","CX-11226","DCH2-Row 75 Top L3","2026-05-12","2026-05-13","8"
"DCH","CX-11227","DCH2-Row 76 Bottom L3","2026-05-12","2026-05-13","8"
"DCH","CX-11228","DCH2-Aisle 38 L3","2026-05-13","2026-05-14","8"
"USS YARD","CX-F-Z02.EYD.S14.L2.1575","L2 QC Electrical Install-EY06-SWGR-USS-21","2026-05-13","2026-05-15","16"
"USS YARD","CN-F-Z02.DCH.S18.TB.2206","Pull,Term,Test & Torque Feeder from EY06-SWGR-USS-22 to TAPBOX-73TOP","2026-05-13","2026-05-15","16"
"USS YARD","CN-F-Z02.DCH.S18.TB.2207","Pull,Term,Test & Torque Feeder from EY06-SWGR-USS-22 to TAPBOX-72TOP","2026-05-13","2026-05-15","16"
"USS YARD","CN-F-Z02.DCH.S18.TB.2208","Pull,Term,Test & Torque Feeder from EY06-SWGR-USS-22 to TAPBOX-69TOP","2026-05-13","2026-05-15","16"
"MYD","CX-11147","MYD2-MCP9 L4","2026-05-14","2026-05-26","56"
"USS YARD","CX-F-Z02.EYD.S14.L2.1578","L2 QC Electrical Install-EY06-SWGR-USS-22","2026-05-17","2026-05-19","16"
"USS YARD","CN-F-Z02.DCH.S18.TB.279","Pull,Term,Test & Torque Feeder from EY06-SWGR-USS-23 to TAPBOX-70BOT","2026-05-17","2026-05-19","16"
"USS YARD","CN-F-Z02.DCH.S18.TB.291","Pull,Term,Test & Torque Feeder from EY06-SWGR-USS-23 to TAPBOX-72BOT","2026-05-17","2026-05-19","16"
"USS YARD","CN-F-Z02.DCH.S18.TB.295","Pull,Term,Test & Torque Feeder from EY06-SWGR-USS-23 to TAPBOX-74TOP","2026-05-17","2026-05-19","16"
"USS YARD","CX-F-Z02.EYD.S14.L2.1581","L2 QC Electrical Install-EY06-SWGR-USS-23","2026-05-19","2026-05-21","16"
"USS YARD","CN-F-Z02.DCH.S18.TB.2209","Pull,Term,Test & Torque Feeder from EY06-SWGR-USS-24 to TAPBOX-71BOT","2026-05-19","2026-05-21","16"
"USS YARD","CN-F-Z02.DCH.S18.TB.2210","Pull,Term,Test & Torque Feeder from EY06-SWGR-USS-24 to TAPBOX-73BOT","2026-05-19","2026-05-21","16"
"USS YARD","CN-F-Z02.DCH.S18.TB.2211","Pull,Term,Test & Torque Feeder from EY06-SWGR-USS-24 to TAPBOX-74BOT","2026-05-19","2026-05-21","16"
"USS YARD","CX-F-Z02.EYD.S14.L2.1584","L2 QC Electrical Install-EY06-SWGR-USS-24","2026-05-21","2026-05-26","16"
"USS YARD","CN-F-Z02.DCH.S18.TB.299","Pull,Term,Test & Torque Feeder from EY06-SWGR-USS-25 to TAPBOX-75BOT","2026-05-21","2026-05-29","40"
"USS YARD","CN-F-Z02.DCH.S18.TB.303","Pull,Term,Test & Torque Feeder from EY06-SWGR-USS-25 to TAPBOX-76TOP","2026-05-21","2026-05-29","40"
"MYD","CX-11197","MYD2-MCP11 L4","2026-05-31","2026-06-09","56"
"USS YARD","CX-F-Z02.EYD.S14.L2.1587","L2 QC Electrical Install-EY06-SWGR-USS-25","2026-05-31","2026-06-02","16"
"USS YARD","CN-F-Z02.DCH.S18.TB.2212","Pull,Term,Test & Torque Feeder from EY06-SWGR-USS-26 to TAPBOX-75TOP","2026-05-31","2026-06-05","40"
"USS YARD","CN-F-Z02.DCH.S18.TB.2213","Pull,Term,Test & Torque Feeder from EY06-SWGR-USS-26 to TAPBOX-76BOT","2026-05-31","2026-06-05","40"
"GPS","CX-F-Z02.EYD.S14.L2.1507","L2 QC Electrical Install-EY06-SWGR-GPS","2026-06-02","2026-06-04","16"
"USS YARD","CX-F-Z02.EYD.S14.L2.1590","L2 QC Electrical Install-EY06-SWGR-USS-26","2026-06-07","2026-06-09","16"
"DCH","CX-11229","DCH2-CUB MAS","2026-06-09","2026-06-17","48"
"DCH","CX-11231","DCH2-L4 Server Test","2026-06-17","2026-06-24","40"
"DCH","CX-11232","DCH2-24 hour alarm free period","2026-06-24","2026-06-25","8"
"DCH","CX-11233","DCH2-Cx L5-IST","2026-06-25","2026-06-29","16"
